# ProyectoABP

How a schedule from MS Project changed from version to version. A marks actual dates.

## Version 1 (saved 2016-12-29)

Note of the change: Project Hito 2

| ID | WBS | Task | Duration | Start | Finish | Predecessors | Complete | Total float | Constraint |
| --- | --- | --- | --- | --- | --- | --- | --- | --- | --- |
| 2 | 1 | **HITO 0** | 22.4d? | 2016-09-12 09:00 A | 2016-10-19 19:00 |  | 64% | 13d |  |
| 3 | 1.1 | **PM** | 22.4d? | 2016-09-12 09:00 | 2016-10-19 19:00 |  |  | 13d |  |
| 4 |  | Rellenar documentos de proyecto | 10.4d? | 2016-09-12 09:00 | 2016-09-28 19:00 |  |  | 13d | start no earlier than 2016-09-12 09:00 |
| 5 |  | Rellenar hoja de presupuesto | 4d? | 2016-09-29 09:00 | 2016-10-05 19:00 | 4 |  | 13d | finish no earlier than 2016-10-05 19:00 |
| 6 |  | Hacer project | 8d? | 2016-10-06 09:00 | 2016-10-19 19:00 | 5 |  | 13d | start no earlier than 2016-10-06 09:00 |
| 7 | 1.2 | **SMBI** | 22.4d? | 2016-09-12 09:00 A | 2016-10-19 19:00 |  | 73% | 13d |  |
| 8 |  | Diseño integral de la arquitectura técnica | 22.4d? | 2016-09-12 09:00 A | 2016-10-19 19:00 |  | 73% | 13d | start no earlier than 2016-09-12 09:00 |
| 9 |  | Especificación de elementos y tecnologías de seguridad y autenticación | 22.4d? | 2016-09-12 09:00 A | 2016-10-19 19:00 |  | 73% | 13d | finish no earlier than 2016-10-19 19:00 |
| 10 |  | Especificación de API Rest y modelo de datos | 22.4d? | 2016-09-12 09:00 A | 2016-10-19 19:00 |  | 73% | 13d | finish no earlier than 2016-10-19 19:00 |
| 11 | 1.3 | **SMA** | 22.4d? | 2016-09-12 09:00 A | 2016-10-19 19:00 |  | 73% | 13d |  |
| 12 |  | Diseño funcional: documentación con la especificación de todas las funcionalidades del sistema | 22.4d? | 2016-09-12 09:00 A | 2016-10-19 19:00 |  | 73% | 13d | start no earlier than 2016-09-12 09:00 |
| 13 |  | Diseño de baja fidelidad de interfaces(mockups): documentación con todas las interfaces diseñadas mediante mockups | 22.4d? | 2016-09-12 09:00 A | 2016-10-19 19:00 |  | 73% | 13d | start no earlier than 2016-09-12 09:00 |
| 14 | 1.4 | **NM** | 22.4d? | 2016-09-12 09:00 A | 2016-10-19 19:00 |  | 73% | 13d |  |
| 15 |  | Diseño funcional y visualización del proyecto: documentación con la especificación de todas las funcionalidades del sistema | 22.4d? | 2016-09-12 09:00 A | 2016-10-19 19:00 |  | 73% | 13d | start no earlier than 2016-09-12 09:00 |
| 16 |  | Especificación y visualización de elementos y tecnologías a utilizar, por ejemplo mediante la definición de una infografía del proyecto | 22.4d? | 2016-09-12 09:00 A | 2016-10-19 19:00 |  | 73% | 13d | start no earlier than 2016-09-12 09:00 |
| 18 | 2 | **HITO 1** | 37d | 2016-10-20 09:00 | 2016-12-22 11:00 | 2 |  | 13d |  |
| 19 | 2.1 | **Iteración 1** | 4.7d | 2016-10-20 09:00 | 2016-10-27 18:00 | 2 |  | 10.9d |  |
| 20 | 2.1.1 | **PM** | 1.1d | 2016-10-20 09:00 | 2016-10-21 12:00 |  |  | 14.5d |  |
| 21 | 2.1.1.1 | **Planificación** | 1.1d | 2016-10-20 09:00 | 2016-10-21 12:00 |  |  | 14.5d |  |
| 22 |  | Detallar plan iteraciones del mes de Noviembre | 5h | 2016-10-20 09:00 | 2016-10-20 16:00 |  |  | 14.5d |  |
| 23 |  | Creación Subtareas y precedencias en Project | 6h | 2016-10-20 16:00 | 2016-10-21 12:00 | 22 |  | 14.5d |  |
| 24 | 2.1.2 | **SMBI** | 0.3d | 2016-10-24 16:00 | 2016-10-24 19:00 |  |  | 10.9d |  |
| 25 |  | Diseñar diagrama preliminar del Modelo de BD | 3h | 2016-10-24 16:00 | 2016-10-24 19:00 |  |  | 10.9d | finish no earlier than 2016-10-24 19:00 |
| 26 | 2.1.3 | **PD** | 2.3d | 2016-10-25 09:00 | 2016-10-27 18:00 |  |  | 10.9d |  |
| 27 |  | Diseño logo | 8h | 2016-10-25 09:00 | 2016-10-25 19:00 | 25 |  | 10.9d |  |
| 28 |  | Crear video de logo | 15h | 2016-10-26 09:00 | 2016-10-27 18:00 | 27 |  | 10.9d |  |
| 29 | 2.1.4 | **Otras tareas** | 0.4d | 2016-10-25 09:00 | 2016-10-25 13:00 |  |  | 12.8d |  |
| 30 |  | Corregir diagramas Caso de uso | 4h | 2016-10-25 09:00 | 2016-10-25 13:00 | 25 |  | 12.8d |  |
| 31 | 2.2 | **Iteración 2** | 7.75d | 2016-11-03 09:00 | 2016-11-16 16:30 | 19 |  | 1.05d |  |
| 32 | 2.2.1 | **PM** | 6.75d | 2016-11-03 09:00 | 2016-11-15 12:30 |  |  | 2.05d |  |
| 33 |  | Ordenar tareas por iteraciones | 5h | 2016-11-03 09:00 | 2016-11-03 16:00 |  |  | 7.7d | start no earlier than 2016-11-03 09:00 |
| 34 | 2.2.1.2 | **Seguimiento** | 0.35d | 2016-11-15 09:00 | 2016-11-15 12:30 |  |  | 1.2d |  |
| 35 |  | Registrar de tiempos y % de realización de tareas en Project | 1h | 2016-11-15 09:00 | 2016-11-15 10:00 |  |  | 2.2d | start no earlier than 2016-11-15 09:00 |
| 36 |  | Comparar la planificación prevista y real en Project hito 1. | 1h | 2016-11-15 10:00 | 2016-11-15 11:00 | 35 |  | 2.2d | start no earlier than 2016-11-15 09:00 |
| 37 |  | Confeccionar Informes de iteración e informe resumen de Hito 1 | 3.5h | 2016-11-15 09:00 | 2016-11-15 12:30 |  |  | 1.2d | start no earlier than 2016-11-15 09:00 |
| 38 | 2.2.2 | **SDM** | 2.95d | 2016-11-11 09:00 | 2016-11-16 16:30 |  |  | 1.05d |  |
| 39 |  | Actualizar Lean Canvas | 2h | 2016-11-14 09:00 | 2016-11-14 11:00 | 46 |  | 3d | start no earlier than 2016-11-14 09:00 |
| 40 |  | Actualizar Presupuesto SDM y ELE | 2.5h | 2016-11-16 12:00 | 2016-11-16 16:30 | 48 |  | 1.05d | start no earlier than 2016-11-15 09:00 |
| 41 | 2.2.2.3 | **Hacer Documento de Especificacion** | 2.25d | 2016-11-11 09:00 | 2016-11-15 17:30 |  |  | 1.75d |  |
| 42 | 2.2.2.3.1 | **Definir objetivo SDM** | 2.25d | 2016-11-11 09:00 | 2016-11-15 17:30 |  |  | 1.75d |  |
| 43 |  | Explicar CMS en nuestro proyecto | 2h | 2016-11-14 17:00 | 2016-11-14 19:00 | 33 |  | 2d | finish no earlier than 2016-11-14 19:00 |
| 44 |  | Explicar Difusion y Posicionamiento Web de nuestro proyecto | 3h | 2016-11-14 17:00 | 2016-11-15 10:00 |  |  | 2.3d | start no earlier than 2016-11-14 17:00 |
| 45 |  | Explicar transformación de formatos en el proyecto | 4h | 2016-11-15 09:00 | 2016-11-15 13:00 | 43 |  | 2d | start no earlier than 2016-11-14 17:00 |
| 46 |  | Definir API's de terceros y propios a usar en el proyecto | 7h | 2016-11-11 09:00 | 2016-11-11 18:00 |  |  | 3.1d | start no earlier than 2016-11-11 09:00 |
| 47 |  | Explicar uso de OAuth2.0(Delegar autorizacion) | 3h | 2016-11-15 12:30 | 2016-11-15 17:30 | 37 |  | 1.2d | start no earlier than 2016-11-14 17:00 |
| 48 |  | Hacer PowerPoint | 3h | 2016-11-16 09:00 | 2016-11-16 12:00 | 47 |  | 1.05d | start no earlier than 2016-11-16 09:00 |
| 49 | 2.2.3 | **SMA** | 1.2d | 2016-11-08 09:00 | 2016-11-09 13:00 |  |  | 5.2d |  |
| 50 |  | Hacer nuevos Mockups | 12h | 2016-11-08 09:00 | 2016-11-09 13:00 |  |  | 5.2d | start no earlier than 2016-11-08 09:00 |
| 51 | 2.2.4 | **NM** | 0.35d | 2016-11-07 09:00 | 2016-11-07 12:30 |  |  | 6.85d |  |
| 52 |  | Definir metricas | 3.5h | 2016-11-07 09:00 | 2016-11-07 12:30 |  |  | 6.85d | start no earlier than 2016-11-07 09:00 |
| 53 |  | Especificar elementos y tecnologías a utilizar | 3.5h | 2016-11-07 09:00 | 2016-11-07 12:30 |  |  | 6.85d | start no earlier than 2016-11-07 09:00 |
| 54 | 2.3 | **Iteración 3** | 8.8d | 2016-11-17 09:00 | 2016-11-30 19:00 | 31 |  | 0d |  |
| 55 | 2.3.1 | **PM** | 8d | 2016-11-18 09:00 | 2016-11-30 19:00 |  |  | 0d |  |
| 56 | 2.3.1.1 | **Documento de Planificación** | 6.3d | 2016-11-18 09:00 | 2016-11-28 18:00 |  |  | 1.7d |  |
| 57 |  | Hacer aparatado de Propósito | 2h | 2016-11-18 09:00 | 2016-11-18 11:00 |  |  | 7.4d | start no earlier than 2016-11-18 09:00 |
| 58 |  | Hacer aparatado de Análisis de riesgos | 4h | 2016-11-18 11:00 | 2016-11-18 17:00 | 57 |  | 7.4d | start no earlier than 2016-11-18 09:00 |
| 59 |  | Revisar y añadir Análisis de riesgos | 4h | 2016-11-28 09:00 | 2016-11-28 13:00 |  |  | 1.7d | start no earlier than 2016-11-28 09:00 |
| 60 |  | Hacer aparatado de Estimación de costes | 3h | 2016-11-18 09:00 | 2016-11-18 12:00 |  |  | 7.7d | start no earlier than 2016-11-18 09:00 |
| 61 |  | Hacer aparatado de Agenda del proyecto | 3h | 2016-11-18 16:00 | 2016-11-18 19:00 |  |  | 7.2d | start no earlier than 2016-11-18 16:00 |
| 62 |  | Revisar y modificar Agenda del proyecto | 3h | 2016-11-28 15:00 | 2016-11-28 18:00 | 59 |  | 1.7d |  |
| 63 |  | Hacer aparatado de Mecanismos de seguimiento y control | 2.5h | 2016-11-18 16:00 | 2016-11-18 18:30 |  |  | 6.85d | start no earlier than 2016-11-18 16:00 |
| 64 | 2.3.1.2 | **Seguimiento** | 1.6d | 2016-11-29 09:00 | 2016-11-30 19:00 |  |  | 0d |  |
| 65 |  | Registrar de tiempos y % de realización de tareas en Project | 1h | 2016-11-29 09:00 | 2016-11-29 10:00 |  |  | 1.5d | start no earlier than 2016-11-29 09:00 |
| 66 |  | Comparar la planificación prevista y real en Project hito 1. | 1h | 2016-11-30 18:00 | 2016-11-30 19:00 |  |  | 0d | finish no earlier than 2016-11-30 19:00 |
| 67 |  | Confeccionar Informes de iteración e informe resumen de Hito 1 | 2.5h | 2016-11-30 16:30 | 2016-11-30 19:00 |  |  | 0d | finish no earlier than 2016-11-30 19:00 |
| 68 | 2.3.2 | **SMBI** | 8.8d | 2016-11-17 09:00 | 2016-11-30 19:00 |  |  | 0d |  |
| 69 | 2.3.2.1 | **Infraestructura** | 2.4d | 2016-11-17 09:00 | 2016-11-19 19:00 |  |  | 0.2d |  |
| 70 |  | Instalar los elementos de backend y seguridad | 8h | 2016-11-17 09:00 | 2016-11-17 19:00 |  |  | 0.8d | start no earlier than 2016-11-17 09:00 |
| 71 |  | Configurar de los elementos de backend y seguridad | 10h | 2016-11-18 17:00 | 2016-11-19 19:00 | 70 |  | 0.2d | finish no earlier than 2016-11-19 19:00 |
| 72 | 2.3.2.2 | **Investigación** | 6.2d | 2016-11-21 11:00 | 2016-11-30 19:00 |  |  | 0d |  |

| ID | WBS | Task | Duration | Start | Finish | Predecessors | Total float | Constraint |
| --- | --- | --- | --- | --- | --- | --- | --- | --- |
| 73 |  | Investigar sobre las tecnologías a usar y lenguaje de programación del backend | 62h | 2016-11-21 11:00 | 2016-11-30 19:00 | 71 | 0d | finish no earlier than 2016-11-30 19:00 |
| 74 | 2.3.3 | **SMA** | 0.4d | 2016-11-28 15:00 | 2016-11-28 19:00 |  | 1.6d |  |
| 75 | 2.3.3.1 | **Diagrama de flujo de interfaces** | 0.4d | 2016-11-28 15:00 | 2016-11-28 19:00 |  | 1.6d |  |
| 76 |  | Definir interfaces y navegacion entre ellas | 4h | 2016-11-28 15:00 | 2016-11-28 19:00 | 63 | 1.6d | finish no earlier than 2016-11-28 19:00 |
| 77 | 2.3.4 | **NM** | 0.4d | 2016-11-21 09:00 | 2016-11-21 13:00 |  | 5.7d |  |
| 78 | 2.3.4.1 | **Definición** | 0.4d | 2016-11-21 09:00 | 2016-11-21 13:00 |  | 5.7d |  |
| 79 |  | Definir indicadores principales del proyecto | 4h | 2016-11-21 09:00 | 2016-11-21 13:00 | 70 | 5.7d | start no earlier than 2016-11-21 09:00 |
| 80 | 2.3.5 | **ELE** | 0.3d | 2016-11-21 15:00 | 2016-11-21 18:00 |  | 5.7d |  |
| 81 | 2.3.5.1 | **Tarea 1** | 0.3d | 2016-11-21 15:00 | 2016-11-21 18:00 |  | 5.7d |  |
| 82 |  | Realizar MOOC y Lean Canvas | 3h | 2016-11-21 15:00 | 2016-11-21 18:00 | 79 | 5.7d | start no earlier than 2016-11-17 09:00 |
| 83 | 2.4 | **Iteracion 4** | 7.4d | 2016-12-01 09:00 | 2016-12-14 11:00 | 54 | 0d |  |
| 84 | 2.4.1 | **PM** | 1d | 2016-12-13 09:00 | 2016-12-14 11:00 |  | 109.2d |  |
| 85 | 2.4.1.1 | **Seguimiento** | 0.6d | 2016-12-13 09:00 | 2016-12-13 17:00 |  | 109.2d |  |
| 86 |  | Registrar de tiempos y % de realización de tareas en Project | 2h | 2016-12-13 09:00 | 2016-12-13 11:00 |  | 109.2d | start no earlier than 2016-12-13 09:00 |
| 87 |  | Comparar la planificación prevista y real en Project hito 1. | 2h | 2016-12-13 11:00 | 2016-12-13 13:00 | 86 | 109.2d | start no earlier than 2016-12-01 09:00 |
| 88 |  | Confeccionar Informes de iteración e informe resumen de Hito 1 | 2h | 2016-12-13 15:00 | 2016-12-13 17:00 | 87 | 109.2d | start no earlier than 2016-12-01 09:00 |
| 89 | 2.4.1.2 | **Ejercicio Propuesto** | 0.4d | 2016-12-13 17:00 | 2016-12-14 11:00 |  | 109.2d |  |
| 90 |  | Aplicar el modelo EVA en Project | 4h | 2016-12-13 17:00 | 2016-12-14 11:00 | 88 | 109.2d |  |
| 91 | 2.4.2 | **SMBI** | 3.6d | 2016-12-06 15:00 | 2016-12-12 19:00 |  | 110.2d |  |
| 92 | 2.4.2.1 | **Investigación** | 1.2d | 2016-12-06 15:00 | 2016-12-07 19:00 |  | 110.2d |  |
| 93 |  | Investigar sobre las tecnologías a usar y lenguaje de programación del backend | 12h | 2016-12-06 15:00 | 2016-12-07 19:00 |  | 110.2d | finish no earlier than 2016-12-07 19:00 |
| 94 | 2.4.2.2 | **Configuración de los elemenos de backend** | 1.4d | 2016-12-08 09:00 | 2016-12-09 17:00 | 92 | 110.2d |  |
| 95 |  | Diseñar BBDD - Primer diseño | 3h | 2016-12-08 09:00 | 2016-12-08 12:00 |  | 111.3d | start no earlier than 2016-12-01 09:00 |
| 96 |  | Diseñar BBDD - Segundo diseño | 3h | 2016-12-08 09:00 | 2016-12-08 12:00 |  | 111.3d | start no earlier than 2016-12-05 09:00 |
| 97 |  | Diseñar BBDD - Definitivo | 6h | 2016-12-08 09:00 | 2016-12-08 17:00 |  | 111d | start no earlier than 2016-12-06 09:00 |
| 98 |  | Gestionar la transaccionalidad de la BD con lenguaje Java | 14h | 2016-12-08 09:00 | 2016-12-09 17:00 | 93 | 110.2d | start no earlier than 2016-12-02 09:00 |
| 99 | 2.4.2.3 | **Integracion modelos MySQL en JAVA** | 1d | 2016-12-09 17:00 | 2016-12-12 19:00 | 94 | 110.2d |  |
| 100 |  | Investigar e Integrar tablas asignadas | 10h | 2016-12-09 17:00 | 2016-12-12 19:00 | 98 | 110.2d |  |
| 101 |  | Integrar tablas asignadas | 5h | 2016-12-09 17:00 | 2016-12-12 12:00 |  | 110.7d |  |
| 102 |  | Integrar tablas asignadas | 5h | 2016-12-09 17:00 | 2016-12-12 12:00 | 95 | 110.7d |  |
| 103 |  | Integrar tablas asignadas | 5h | 2016-12-09 17:00 | 2016-12-12 12:00 | 96 | 110.7d |  |
| 104 |  | Integrar tablas asignadas | 5h | 2016-12-09 17:00 | 2016-12-12 12:00 | 97 | 110.7d |  |
| 105 | 2.4.3 | **SMA** | 0.4d | 2016-12-02 09:00 | 2016-12-02 13:00 |  | 115.4d |  |
| 106 | 2.4.3.1 | **Documentación** | 0.4d | 2016-12-02 09:00 | 2016-12-02 13:00 |  | 115.4d |  |
| 107 |  | Explicar el mapa de navegación entre interfaces | 4h | 2016-12-02 09:00 | 2016-12-02 13:00 |  | 115.4d | start no earlier than 2016-12-02 09:00 |
| 108 | 2.4.4 | **NM** | 0.3d | 2016-12-02 09:00 | 2016-12-02 12:00 |  | 115.5d |  |
| 109 | 2.4.4.1 | **Contextualización** | 0.3d | 2016-12-02 09:00 | 2016-12-02 12:00 |  | 115.5d |  |
| 110 |  | Contextualizar modelo de datos | 3h | 2016-12-02 09:00 | 2016-12-02 12:00 |  | 115.5d | start no earlier than 2016-12-02 09:00 |
| 111 | 2.4.5 | **TAG** | 1.9d | 2016-12-01 09:00 | 2016-12-05 12:00 |  | 0d |  |
| 112 | 2.4.5.1 | **Visualización** | 0.8d? | 2016-12-01 09:00 | 2016-12-01 19:00 |  |  |  |
| 113 |  | Hacer un visualizador OpenGL 4.X simple, con datos por programa. Shader básico. | 3h | 2016-12-05 09:00 | 2016-12-05 12:00 | 110 | 115.7d | start no earlier than 2016-12-05 09:00 |
| 114 | 2.5 | **Iteracion 5** | 4.8d | 2016-12-14 11:00 | 2016-12-22 11:00 | 83 | 105.4d |  |
| 115 | 2.5.1 | **PM** | 1d | 2016-12-21 09:00 | 2016-12-22 11:00 |  | 105.4d |  |
| 116 | 2.5.1.1 | **Seguimiento** | 1d | 2016-12-21 09:00 | 2016-12-22 11:00 |  | 105.4d |  |
| 117 |  | Registrar de tiempos y % de realización de tareas en Project | 4h | 2016-12-21 09:00 | 2016-12-21 13:00 |  | 105.4d | start no earlier than 2016-12-21 09:00 |
| 118 |  | Comparar la planificación prevista y real en Project hito 1. | 4h | 2016-12-21 15:00 | 2016-12-21 19:00 | 117 | 105.4d | start no earlier than 2016-12-20 09:00 |
| 119 |  | Confeccionar Informes de iteración e informe resumen de Hito 1 | 2h | 2016-12-22 09:00 | 2016-12-22 11:00 | 118 | 105.4d | start no earlier than 2016-12-21 09:00 |
| 120 | 2.5.2 | **SMBI** | 3.9d | 2016-12-14 11:00 | 2016-12-21 10:00 |  | 106.3d |  |
| 121 | 2.5.2.1 | **Pruebas** | 0.3d | 2016-12-14 11:00 | 2016-12-14 16:00 |  | 109.9d |  |
| 122 |  | Hacer pruebas unitarias | 3h | 2016-12-14 11:00 | 2016-12-14 16:00 |  | 109.9d |  |
| 123 | 2.5.2.2 | **Desarrollo** | 1.7d | 2016-12-19 09:00 | 2016-12-21 10:00 |  | 106.3d |  |
| 124 |  | Implementación API RESTFULL | 6h | 2016-12-19 09:00 | 2016-12-19 17:00 |  | 107.3d | start no earlier than 2016-12-19 09:00 |
| 125 |  | Hacer documentacion | 1h | 2016-12-21 09:00 | 2016-12-21 10:00 | 124 | 106.3d | start no earlier than 2016-12-21 09:00 |
| 126 | 3 | **HITO 2** | 20.8d | 2016-12-26 09:00 | 2017-01-30 19:00 |  |  |  |
| 127 | 3.1 | **Iteración 1** | 9d? | 2016-12-26 09:00 | 2017-01-10 11:00 |  | 22.2d |  |
| 128 | 3.1.1 | **PM** | 8.15d? | 2016-12-26 09:00 | 2017-01-09 10:30 |  | 23.05d |  |
| 129 | 3.1.1.1 | **Especificación** | 0.2d | 2016-12-26 09:00 | 2016-12-26 11:00 |  | 28.75d |  |
| 130 |  | Revisar especificación proyecto. | 2h | 2016-12-26 09:00 | 2016-12-26 11:00 |  | 28.75d |  |
| 131 | 3.1.1.2 | **Estimación** | 0.3d | 2016-12-27 09:00 | 2016-12-27 12:00 | 129 | 28.15d |  |
| 132 |  | Reestimar proyecto | 3h | 2016-12-27 09:00 | 2016-12-27 12:00 | 130 | 28.15d | start no earlier than 2016-12-27 09:00 |
| 133 | 3.1.1.3 | **Planificación** | 0.65d | 2016-12-27 12:00 | 2016-12-28 10:30 | 131 | 28.15d |  |
| 134 | 3.1.1.3.1 | **Detallar plan iteraciones del mes de Enero** | 0.65d | 2016-12-27 12:00 | 2016-12-28 10:30 |  | 28.15d |  |
| 135 |  | Creación Subtareas y precedencias en Project | 3.5h | 2016-12-27 12:00 | 2016-12-27 17:30 | 132 | 28.15d | start no earlier than 2016-12-27 09:00 |
| 136 |  | Asignar recursos a las tareas en Project | 3h | 2016-12-27 17:30 | 2016-12-28 10:30 | 135 | 28.15d | start no earlier than 2016-12-27 09:00 |
| 137 | 3.1.1.4 | **Elaborar la presentación del Hito 1** | 0.15d? | 2017-01-09 09:00 | 2017-01-09 10:30 |  | 23.05d |  |
| 138 |  | Hacer PowerPoint | 1.5h? | 2017-01-09 09:00 | 2017-01-09 10:30 |  | 23.05d | start no earlier than 2017-01-09 09:00 |
| 139 | 3.1.2 | **ELE** | 2d? | 2016-12-26 09:00 | 2016-12-28 13:00 |  | 29.2d |  |
| 140 | 3.1.2.1 | **Tarea 2** | 2d? | 2016-12-26 09:00 | 2016-12-28 13:00 |  | 29.2d |  |
| 141 |  | Hacer guión | 1d? | 2016-12-26 09:00 | 2016-12-27 11:00 |  | 30.2d |  |
| 142 |  | Hacer guión gráfico | 1d? | 2016-12-27 11:00 | 2016-12-28 13:00 |  | 29.2d |  |

| ID | WBS | Task | Duration | Start | Finish | Predecessors | Total float | Constraint |
| --- | --- | --- | --- | --- | --- | --- | --- | --- |
| 143 | 3.1.3 | **SMBI** | 9d? | 2016-12-26 09:00 | 2017-01-10 11:00 |  | 22.2d |  |
| 144 | 3.1.3.1 | **Cambio tecnología** | 4d? | 2016-12-26 09:00 | 2016-12-30 19:00 |  | 22.4d |  |
| 145 |  | Migrar lenguaje de desarrollo a PHP | 4d? | 2016-12-26 09:00 | 2016-12-30 19:00 |  | 22.4d | finish no earlier than 2016-12-30 19:00 |
| 146 | 3.1.3.2 | **Pruebas** | 5d? | 2017-01-02 09:00 | 2017-01-10 11:00 |  | 22.2d |  |
| 147 |  | Hacer pruebas de integración | 2d? | 2017-01-02 09:00 | 2017-01-04 13:00 | 145 | 22.4d |  |
| 148 |  | Hacer pruebas funcionales | 2d | 2017-01-05 17:00 | 2017-01-10 11:00 | 147 | 22.2d |  |
| 149 | 3.1.3.3 | **Validación** | 1d? | 2017-01-04 15:00 | 2017-01-05 17:00 |  | 24.2d |  |
| 150 |  | Validar el funcionamiento del backend (Pruebas API Rest Full) | 1d? | 2017-01-04 15:00 | 2017-01-05 17:00 |  | 24.2d |  |
| 151 | 3.1.4 | **SDM** | 8d? | 2016-12-26 09:00 | 2017-01-06 19:00 |  | 23.2d |  |
| 152 | 3.1.4.1 | **Memoria ABP** | 8d? | 2016-12-26 09:00 | 2017-01-06 19:00 |  | 23.2d |  |
| 153 | 3.1.4.1.1 | **Descripcion de objetivos SDM en ABP** | 8d? | 2016-12-26 09:00 | 2017-01-06 19:00 |  | 23.2d |  |
| 154 |  | Explicar uso de CMS | 3h? | 2016-12-29 09:00 | 2016-12-29 12:00 | 136 | 27.5d | start no earlier than 2016-12-29 09:00 |
| 155 |  | Explicar uso de posicionamiento y difusion | 1d? | 2016-12-26 09:00 | 2016-12-27 11:00 |  | 30.2d |  |
| 156 |  | Usar transformacion de formatos | 1d? | 2016-12-29 12:00 | 2016-12-30 16:00 | 154 | 27.5d |  |
| 157 |  | Explicar el consumo de API's | 1d? | 2017-01-05 17:00 | 2017-01-06 19:00 |  | 23.2d |  |
| 158 |  | Explicar la autorizacion Oauth 2.0 | 1d? | 2016-12-28 15:00 | 2016-12-29 17:00 |  | 28.2d |  |
| 159 | 3.1.5 | **SMA** | 2.3d? | 2017-01-02 09:00 | 2017-01-04 18:00 |  | 24.9d |  |
| 160 |  | Guía de estilos: documento detallando la imagen corporativa del servicio (colores, estilos, esencia para la experiencia de usuario, consideraciones de usabilidad y accesibilidad) | 2d? | 2017-01-02 09:00 | 2017-01-04 13:00 |  | 24.9d | start no earlier than 2017-01-02 09:00 |
| 161 |  | Documento de SEO: definición de aspectos SEO como son palabras clave, estilos de textos, posiciones de texto, como se va a potenciar esto (landing, blog, etc…), URL amigables | 3h? | 2017-01-04 15:00 | 2017-01-04 18:00 | 160 | 24.9d |  |
| 162 | 3.2 | **Iteración 2** | 10d? | 2017-01-10 11:00 | 2017-01-26 17:00 | 127 | 17d |  |
| 163 | 3.2.1 | **SDM** | 0.15d? | 2017-01-13 17:30 | 2017-01-13 19:00 |  | 24d |  |
| 164 | 3.2.1.1 | **Presentación** | 0.15d? | 2017-01-13 17:30 | 2017-01-13 19:00 |  | 24d |  |
| 165 |  | Hacer powerpoint para presentacion | 1.5h? | 2017-01-13 17:30 | 2017-01-13 19:00 |  | 24d | finish no earlier than 2017-01-13 19:00 |
| 166 | 3.2.2 | **PM** | 0.6d? | 2017-01-26 09:00 | 2017-01-26 17:00 |  | 17d |  |
| 167 | 3.2.2.1 | **Seguimiento** | 0.6d? | 2017-01-26 09:00 | 2017-01-26 17:00 |  | 17d |  |
| 168 |  | Registrar de tiempos y % de realización de tareas en Project | 2h? | 2017-01-26 09:00 | 2017-01-26 11:00 |  | 17d | start no earlier than 2017-01-26 09:00 |
| 169 |  | Comparar la planificación prevista y real en Project hito 2 | 2h? | 2017-01-26 11:00 | 2017-01-26 13:00 | 168 | 17d | start no earlier than 2017-01-26 09:00 |
| 170 |  | Confeccionar Informes de iteración e informe resumen de Hito 2 | 2h? | 2017-01-26 15:00 | 2017-01-26 17:00 | 169 | 17d | start no earlier than 2017-01-26 09:00 |
| 171 | 3.2.3 | **SMBI** | 2d? | 2017-01-10 11:00 | 2017-01-12 17:00 |  | 25d |  |
| 172 | 3.2.3.1 | **Pruebas** | 2d? | 2017-01-10 11:00 | 2017-01-12 17:00 |  | 25d |  |
| 173 |  | Hacer pruebas de regresión | 1d? | 2017-01-10 11:00 | 2017-01-11 13:00 | 148 | 25d |  |
| 174 |  | Hacer pruebas de carga y rendimiento | 1d? | 2017-01-11 15:00 | 2017-01-12 17:00 | 173 | 25d |  |
| 175 | 3.2.4 | **TAG** | 4.8d? | 2017-01-10 11:00 | 2017-01-18 11:00 |  | 22.2d |  |
| 176 | 3.2.4.1 | **Gestión de recursos** | 2.4d? | 2017-01-10 11:00 | 2017-01-13 11:00 |  | 22.2d |  |
| 177 |  | Parser de objetos en multiples formatos, salida en modo texto | 24h? | 2017-01-10 11:00 | 2017-01-13 11:00 |  | 22.2d | finish no earlier than 2017-01-11 19:00 |
| 178 | 3.2.4.2 | **Visualización** | 2.4d? | 2017-01-13 11:00 | 2017-01-18 11:00 | 176 | 22.2d |  |
| 179 |  | Visualizador OpenGL 4.X simple, con datos por programa. Shader básico. | 24h? | 2017-01-13 11:00 | 2017-01-18 11:00 | 177 | 22.2d | finish no earlier than 2017-01-11 19:00 |
| 180 | 3.2.5 | **PD** | 0.5d? | 2017-01-17 12:00 | 2017-01-17 19:00 |  | 22.4d |  |
| 181 |  | Cartel del proyecto | 5h? | 2017-01-17 12:00 | 2017-01-17 19:00 |  | 22.4d | finish no earlier than 2017-01-17 19:00 |
| 182 | 3.2.6 | **NM** | 3.7d? | 2017-01-12 09:00 | 2017-01-18 16:00 |  | 21.9d |  |
| 183 |  | Incorporación de open data, API's, y otras fuentes heterogéneas | 3h? | 2017-01-18 11:00 | 2017-01-18 16:00 |  | 21.9d |  |
| 184 |  | Modelo para la integración de datos | 2.5h? | 2017-01-12 09:00 | 2017-01-12 11:30 |  | 25.35d |  |
| 185 | 3.2.7 | **SMA** | 1.4d? | 2017-01-10 11:00 | 2017-01-11 19:00 |  | 25.6d |  |
| 186 |  | Integración Front-Back: documento de relación entre back-end y front-end | 1d? | 2017-01-10 11:00 | 2017-01-11 13:00 |  | 25.6d |  |
| 187 |  | Arquitectura tecnológica: documento sobre toma de decisión, versiones, codificación, internacionalización (varias lenguas), instalación sobre servidor de frameworks... | 4h? | 2017-01-11 15:00 | 2017-01-11 19:00 | 186 | 25.6d |  |
| 188 | 4 | **HITO 3** | 37.6d? | 2017-01-31 09:00 | 2017-04-05 19:00 | 126 | 15.2d |  |
| 189 | 4.1 | **PM** | 37.6d | 2017-01-31 09:00 | 2017-04-05 19:00 |  | 15.2d |  |
| 190 | 4.1.1 | **Planificación** | 37.6d | 2017-01-31 09:00 | 2017-04-05 19:00 |  | 15.2d |  |
| 191 | 4.1.1.1 | **Detallar plan iteraciones del mes de Febrero-Marzo** | 37.6d | 2017-01-31 09:00 | 2017-04-05 19:00 |  | 15.2d |  |
| 192 |  | Creación Subtareas y precedencias en Project | 37.6d | 2017-01-31 09:00 | 2017-04-05 19:00 |  | 15.2d |  |
| 193 |  | Asignar recursos a las tareas en Project. | 37.6d | 2017-01-31 09:00 | 2017-04-05 19:00 |  | 15.2d |  |
| 194 | 4.1.2 | **Seguimiento** | 37.6d | 2017-01-31 09:00 | 2017-04-05 19:00 |  | 15.2d |  |
| 195 |  | Registrar de tiempos y % de realización de tareas en Project | 37.6d | 2017-01-31 09:00 | 2017-04-05 19:00 |  | 15.2d |  |
| 196 |  | Comparar la planificación prevista y real en Project hito 3 | 37.6d | 2017-01-31 09:00 | 2017-04-05 19:00 |  | 15.2d |  |
| 197 |  | Confeccionar Informes de iteración e informe resumen de Hito 3 | 37.6d | 2017-01-31 09:00 | 2017-04-05 19:00 |  | 15.2d |  |
| 198 | 4.1.3 | **Presentación** | 37.6d | 2017-01-31 09:00 | 2017-04-05 19:00 |  | 15.2d |  |
| 199 |  | Elaborar la presentación del Hito 3 | 37.6d | 2017-01-31 09:00 | 2017-04-05 19:00 |  | 15.2d |  |
| 200 |  | Exponer la presentación del Hito 3 | 37.6d | 2017-01-31 09:00 | 2017-04-05 19:00 |  | 15.2d |  |
| 201 | 4.2 | **TAG** | 37.6d | 2017-01-31 09:00 | 2017-04-05 19:00 |  | 15.2d |  |
| 202 | 4.2.1 | **Árbol de la escena** | 37.6d | 2017-01-31 09:00 | 2017-04-05 19:00 |  | 15.2d |  |
| 203 |  | Tipos de datos para nodos (completo) y entidades (sólo clase padre; clases hijas sin contenido) | 37.6d | 2017-01-31 09:00 | 2017-04-05 19:00 |  | 15.2d |  |
| 204 |  | Construcción del árbol | 37.6d | 2017-01-31 09:00 | 2017-04-05 19:00 |  | 15.2d |  |
| 205 |  | Recorrido del arbol | 37.6d | 2017-01-31 09:00 | 2017-04-05 19:00 |  | 15.2d |  |
| 206 |  | Salida en modo texto | 37.6d | 2017-01-31 09:00 | 2017-04-05 19:00 |  | 15.2d |  |
| 207 |  | Tipos de datos para entidades de tipo transformacion | 37.6d | 2017-01-31 09:00 | 2017-04-05 19:00 |  | 15.2d |  |
| 208 |  | Tipos de datos para entidades de tipo cámara y luz (cámaras y luces de dos tipos). Salida en modo texto | 37.6d | 2017-01-31 09:00 | 2017-04-05 19:00 |  | 15.2d |  |
| 209 |  | Tipos de datos para entidades de tipo malla. Salida en modo texto | 37.6d | 2017-01-31 09:00 | 2017-04-05 19:00 |  | 15.2d |  |
| 210 |  | Tipos de datos para entidades de tipo animación (cuadro a cuadro). Salida en modo texto | 37.6d | 2017-01-31 09:00 | 2017-04-05 19:00 |  | 15.2d |  |
| 211 | 4.2.2 | **Gestor de recursos** | 37.6d | 2017-01-31 09:00 | 2017-04-05 19:00 |  | 15.2d |  |
| 212 |  | Carga de modelos en formato múltiple en las entidades de tipo malla | 37.6d | 2017-01-31 09:00 | 2017-04-05 19:00 |  | 15.2d |  |

| ID | WBS | Task | Duration | Start | Finish | Predecessors | Total float | Constraint |
| --- | --- | --- | --- | --- | --- | --- | --- | --- |
| 213 |  | Carga de varios ficheros para animación. Salida en modo texto | 37.6d | 2017-01-31 09:00 | 2017-04-05 19:00 |  | 15.2d |  |
| 214 | 4.2.3 | **Visualización** | 37.6d | 2017-01-31 09:00 | 2017-04-05 19:00 |  | 15.2d |  |
| 215 |  | Visualizador OpenGL 4.X de las entidades tipo malla. Shader básico. Integración con el motor. Sin materiales, texturas, cámara ni luces | 37.6d | 2017-01-31 09:00 | 2017-04-05 19:00 |  | 15.2d |  |
| 216 |  | Visualizador OpenGL 4.X de las entidades tipo malla. Shader básico. Con cámaras y luces de varios tipos. Visualización con registro de cámaras y luces. | 37.6d | 2017-01-31 09:00 | 2017-04-05 19:00 |  | 15.2d |  |
| 217 | 4.2.4 | **Gestor de recursos** | 37.6d | 2017-01-31 09:00 | 2017-04-05 19:00 |  | 15.2d |  |
| 218 |  | Carga de materiales y texturas. Salida en modo texto | 37.6d | 2017-01-31 09:00 | 2017-04-05 19:00 |  | 15.2d |  |
| 219 | 4.2.5 | **Visualización** | 37.6d | 2017-01-31 09:00 | 2017-04-05 19:00 |  | 15.2d |  |
| 220 |  | Visualizador OpenGL 4.X de las entidades tipo malla. Shader básico. Añadiendo materiales y texturas. | 37.6d | 2017-01-31 09:00 | 2017-04-05 19:00 |  | 15.2d |  |
| 221 | 4.2.6 | **Fachada** | 37.6d | 2017-01-31 09:00 | 2017-04-05 19:00 |  | 15.2d |  |
| 222 |  | Creación de una fachada entre el motor y la aplicación | 37.6d | 2017-01-31 09:00 | 2017-04-05 19:00 |  | 15.2d |  |
| 223 | 4.2.7 | **Visualización** | 37.6d | 2017-01-31 09:00 | 2017-04-05 19:00 |  | 15.2d |  |
| 224 |  | Visualizador OpenGL 4.X con tres shaders avanzados | 37.6d | 2017-01-31 09:00 | 2017-04-05 19:00 |  | 15.2d |  |
| 225 | 4.3 | **SMA** | 37.6d | 2017-01-31 09:00 | 2017-04-05 19:00 |  | 15.2d |  |
| 226 | 4.3.1 | **Implementación front-end más documentación** | 37.6d | 2017-01-31 09:00 | 2017-04-05 19:00 |  | 15.2d |  |
| 227 |  | De código (documentación sobre estructura de código y particularidades especiales como por ejemplo algoritmos de optimización, mejoras, etc) | 37.6d | 2017-01-31 09:00 | 2017-04-05 19:00 |  | 15.2d |  |
| 228 |  | Implementación de las funcionalidades en front-end (relación de las interfaces y funcionalidades que se están implementando y en que momento están implementadas) | 37.6d | 2017-01-31 09:00 | 2017-04-05 19:00 |  | 15.2d |  |
| 229 |  | Informe | 37.6d | 2017-01-31 09:00 | 2017-04-05 19:00 |  | 15.2d |  |
| 230 | 4.4 | **NM** | 37.6d | 2017-01-31 09:00 | 2017-04-05 19:00 |  | 15.2d |  |
| 231 |  | Despliegue de la infraestructura del proyecto | 37.6d | 2017-01-31 09:00 | 2017-04-05 19:00 |  | 15.2d |  |
| 232 |  | Definición de cuadros de mando e implementación | 37.6d | 2017-01-31 09:00 | 2017-04-05 19:00 |  | 15.2d |  |
| 233 |  | Definición de KPI's implementación | 37.6d | 2017-01-31 09:00 | 2017-04-05 19:00 |  | 15.2d |  |
| 234 |  | Valoración de los cuadros de mando y KPI's definidos e incorporación de nuevos elementos según datos | 37.6d | 2017-01-31 09:00 | 2017-04-05 19:00 |  | 15.2d |  |
| 235 |  | Informe | 37.6d | 2017-01-31 09:00 | 2017-04-05 19:00 |  | 15.2d |  |
| 236 | 4.5 | **PD** | 37.6d | 2017-01-31 09:00 | 2017-04-05 19:00 |  | 15.2d |  |
| 237 |  | Trailer del proyecto | 37.6d | 2017-01-31 09:00 | 2017-04-05 19:00 |  | 15.2d |  |
| 238 | 4.6 | **ELE** | 1d? | 2017-01-31 09:00 | 2017-02-01 11:00 |  | 51.8d |  |
| 239 | 4.6.1 | **Tarea 3** | 1d? | 2017-01-31 09:00 | 2017-02-01 11:00 |  | 51.8d |  |
| 240 |  | Definir tecnologias | 1d? | 2017-01-31 09:00 | 2017-02-01 11:00 |  | 51.8d |  |
| 241 | 4.6.2 | **Tarea 4** | 1d? | 2017-01-31 09:00 | 2017-02-01 11:00 |  | 51.8d |  |
| 242 |  | Crear video | 1d? | 2017-01-31 09:00 | 2017-02-01 11:00 |  | 51.8d |  |
| 243 | 5 | **HITO 4** | 44.8d? | 2017-04-06 09:00 | 2017-06-22 19:00 | 188 | 0d |  |
| 244 | 5.1 | **PM** | 29.6d | 2017-04-06 09:00 | 2017-05-26 19:00 |  | 15.2d |  |
| 245 | 5.1.1 | **Planificación** | 29.6d | 2017-04-06 09:00 | 2017-05-26 19:00 |  | 15.2d |  |
| 246 | 5.1.1.1 | **Detallar plan iteraciones del mes de Abril-Mayo** | 29.6d | 2017-04-06 09:00 | 2017-05-26 19:00 |  | 15.2d |  |
| 247 |  | Creación Subtareas y precedencias en Project | 29.6d | 2017-04-06 09:00 | 2017-05-26 19:00 |  | 15.2d |  |
| 248 |  | Asignar recursos a las tareas en Project | 29.6d | 2017-04-06 09:00 | 2017-05-26 19:00 |  | 15.2d |  |
| 249 | 5.1.2 | **Seguimiento** | 29.6d | 2017-04-06 09:00 | 2017-05-26 19:00 |  | 15.2d |  |
| 250 |  | Registrar de tiempos y % de realización de tareas en Project | 29.6d | 2017-04-06 09:00 | 2017-05-26 19:00 |  | 15.2d |  |
| 251 |  | Comparar la planificación prevista y real en Project hito 4 | 29.6d | 2017-04-06 09:00 | 2017-05-26 19:00 |  | 15.2d |  |
| 252 |  | Confeccionar Informes de iteración e informe resumen de Hito 4 | 29.6d | 2017-04-06 09:00 | 2017-05-26 19:00 |  | 15.2d |  |
| 253 | 5.1.3 | **Presentación** | 29.6d | 2017-04-06 09:00 | 2017-05-26 19:00 |  | 15.2d |  |
| 254 |  | Elaborar la presentación del Hito 4 | 29.6d | 2017-04-06 09:00 | 2017-05-26 19:00 |  | 15.2d |  |
| 255 |  | Exponer la presentación del Hito 4 | 29.6d | 2017-04-06 09:00 | 2017-05-26 19:00 |  | 15.2d |  |
| 256 | 5.2 | **TAG** | 29.6d | 2017-04-06 09:00 | 2017-05-26 19:00 |  | 15.2d |  |
| 257 | 5.2.1 | **IGC** | 29.6d | 2017-04-06 09:00 | 2017-05-26 19:00 |  | 15.2d |  |
| 258 | 5.2.1.1 | **Aplicación** | 29.6d | 2017-04-06 09:00 | 2017-05-26 19:00 |  | 15.2d |  |
| 259 |  | Cargador de modelos | 29.6d | 2017-04-06 09:00 | 2017-05-26 19:00 |  | 15.2d |  |
| 260 |  | Movimiento del modelo, de las luces y de la cámara | 29.6d | 2017-04-06 09:00 | 2017-05-26 19:00 |  | 15.2d |  |
| 261 |  | Cambio de modelo, materiales y texturas | 29.6d | 2017-04-06 09:00 | 2017-05-26 19:00 |  | 15.2d |  |
| 262 |  | Animaciones | 29.6d | 2017-04-06 09:00 | 2017-05-26 19:00 |  | 15.2d |  |
| 263 |  | Integración con el motor | 29.6d | 2017-04-06 09:00 | 2017-05-26 19:00 |  | 15.2d |  |
| 264 |  | Optimizaciones del motor | 29.6d | 2017-04-06 09:00 | 2017-05-26 19:00 |  | 15.2d |  |
| 265 |  | Efectos visuales | 29.6d | 2017-04-06 09:00 | 2017-05-26 19:00 |  | 15.2d |  |
| 266 | 5.3 | **SMA** | 29.6d | 2017-04-06 09:00 | 2017-05-26 19:00 |  | 15.2d |  |
| 267 |  | Documento de pruebas donde se documenta las pruebas de las funcionalidades principales (por lo menos las interfaces principales) | 29.6d | 2017-04-06 09:00 | 2017-05-26 19:00 |  | 15.2d |  |
| 268 |  | Pruebas de la aplicación demostrando que no hay errores (falta de librerías, archivos que no se descargan, errores javascript) | 29.6d | 2017-04-06 09:00 | 2017-05-26 19:00 |  | 15.2d |  |
| 269 |  | Pruebas de seguridad de front end | 29.6d | 2017-04-06 09:00 | 2017-05-26 19:00 |  | 15.2d |  |
| 270 |  | Pruebas de rendimiento (velocidad de carga, que todo carga y no hay errores) | 29.6d | 2017-04-06 09:00 | 2017-05-26 19:00 |  | 15.2d |  |
| 271 |  | Validar las funcionalidades (comprobar que realmente han sido implementadas), las funcionalidades han quedado recogidas en las interfaces implementadas | 29.6d | 2017-04-06 09:00 | 2017-05-26 19:00 |  | 15.2d |  |
| 272 |  | Informe | 29.6d | 2017-04-06 09:00 | 2017-05-26 19:00 |  | 15.2d |  |
| 273 | 5.4 | **NM** | 29.6d | 2017-04-06 09:00 | 2017-05-26 19:00 |  | 15.2d |  |
| 274 |  | Validación del funcionamiento | 29.6d | 2017-04-06 09:00 | 2017-05-26 19:00 |  | 15.2d |  |
| 275 |  | Informe | 29.6d | 2017-04-06 09:00 | 2017-05-26 19:00 |  | 15.2d |  |
| 276 | 5.5 | **PD** | 44.8d? | 2017-04-06 09:00 | 2017-06-22 19:00 |  | 0d |  |
| 277 |  | Making of del proyecto | 29.6d | 2017-04-06 09:00 | 2017-05-26 19:00 |  | 15.2d |  |
| 278 |  | Creditos | 29.6d? | 2017-05-03 09:00 | 2017-06-22 19:00 |  | 0d | finish no earlier than 2017-06-22 19:00 |
| 279 | 5.6 | **ELE** | 1d? | 2017-04-06 09:00 | 2017-04-07 11:00 |  | 43.8d |  |
| 280 | 5.6.1 | **Tarea 5** | 1d? | 2017-04-06 09:00 | 2017-04-07 11:00 |  | 43.8d |  |
| 281 |  | Grabar audio | 1d? | 2017-04-06 09:00 | 2017-04-07 11:00 |  | 43.8d |  |
| 282 | 5.6.2 | **Tarea 6** | 1d? | 2017-04-06 09:00 | 2017-04-07 11:00 |  | 43.8d |  |

| ID | Task | Duration | Start | Finish | Total float |
| --- | --- | --- | --- | --- | --- |
| 283 | Hacer montaje | 1d? | 2017-04-06 09:00 | 2017-04-07 11:00 | 43.8d |

## Version 2 (saved 2017-01-30)

Note of the change: project Hito 2

Last finish 2017-06-22 → 2017-05-26 (-27d).

Added:

| ID | Task | Duration | Start | Finish | Predecessors | Constraint | Resources |
| --- | --- | --- | --- | --- | --- | --- | --- |
| 142 | **NM** | 0.4d | 2016-12-26 09:00 | 2016-12-26 13:00 |  |  |  |
| 147 | **Apartado 1** | 0.2d | 2017-01-09 10:30 | 2017-01-09 12:30 |  |  |  |
| 148 | Describir proyecto | 2h | 2017-01-09 10:30 | 2017-01-09 12:30 |  | start no earlier than 2017-01-09 10:30 | Nahiara |
| 149 | **Apartado 2** | 0.2d | 2017-01-09 12:30 | 2017-01-09 16:30 | 147 |  |  |
| 150 | Explicar diseño de aplicación | 2h | 2017-01-09 12:30 | 2017-01-09 16:30 |  | start no earlier than 2017-01-09 09:00 | Jorge |
| 151 | **Apartado 3** | 0.3d | 2017-01-09 16:30 | 2017-01-10 09:30 | 149 |  |  |
| 152 | Explicar marco tecnológico | 3h | 2017-01-09 16:30 | 2017-01-10 09:30 |  | start no earlier than 2017-01-09 09:00 | Manuel |
| 159 | **Apartado 5** | 0.15d | 2017-01-12 09:00 | 2017-01-12 10:30 | 153 |  |  |
| 160 | Explicar objetivos cumplidos | 1.5h | 2017-01-12 09:00 | 2017-01-12 10:30 | 156 | start no earlier than 2017-01-12 09:00 | Nahiara |
| 161 | **Conclusión** | 0.1d | 2017-01-12 10:30 | 2017-01-12 11:30 | 159 |  |  |
| 162 | Escribir conclusion de la memoria | 1h | 2017-01-12 10:30 | 2017-01-12 11:30 | 155 |  | Jorge |
| 163 | **Apartado 7** | 0.1d | 2017-01-12 11:30 | 2017-01-12 12:30 | 161 |  |  |
| 164 | Explicar Reparto del trabajo | 1h | 2017-01-12 11:30 | 2017-01-12 12:30 | 160 |  | Nahiara |

Removed: 139 ELE; 163 SDM; 172 Pruebas; 180 PD

Changed:

| ID | Task | Start | Finish | Duration | Total float | Predecessors | Other |
| --- | --- | --- | --- | --- | --- | --- | --- |
| 126 | **HITO 2** |  |  | 20.8d → 21.6d |  |  |  |
| 127 | **Iteración 1** |  | 2017-01-10 11:00 → 2017-01-09 10:30 (-1d) | 9d? → 8.15d? | 22.2d → 0d |  |  |
| 139 | **SMBI** |  | 2017-01-10 11:00 → 2016-12-30 19:00 (-11d) | 9d? → 4d? | 22.2d → 0d |  |  |
| 140 | **Cambio tecnología** |  |  | 4d? → 4d | 22.4d → none |  |  |
| 141 | Migrar lenguaje de desarrollo a PHP | 2016-12-26 09:00 → 2016-12-30 12:00 (+4d) |  | 4d? → 5h | 22.4d → 84.8d |  |  |
| 143 | Modelo para la integración de datos | 2017-01-12 09:00 → 2016-12-26 09:00 (-17d) | 2017-01-12 11:30 → 2016-12-26 13:00 (-17d) | 2.5h? → 4h | 25.35d → 15.6d |  | resources Jorge → Ricardo |
| 144 | **Iteración 2** | 2017-01-10 11:00 → 2017-01-09 10:30 (-1d) | 2017-01-26 17:00 → 2017-01-30 19:00 (+4d) | 10d? → 13.45d? | 17d → 7.85d |  |  |
| 145 | **SDM** | 2016-12-26 09:00 → 2017-01-09 10:30 (+14d) | 2017-01-06 19:00 → 2017-01-16 10:30 (+10d) | 8d? → 4d | 23.2d → 8.95d |  |  |
| 146 | **Memoria ABP** | 2016-12-26 09:00 → 2017-01-09 10:30 (+14d) | 2017-01-06 19:00 → 2017-01-12 12:30 (+6d) | 8d? → 2.6d | 23.2d → 10.35d |  |  |
| 153 | **Descripcion de objetivos SDM en ABP** | 2016-12-26 09:00 → 2017-01-10 09:30 (+15d) | 2017-01-06 19:00 → 2017-01-11 10:00 (+5d) | 8d? → 0.85d | 23.2d → 11.05d | none → 151 |  |
| 154 | Explicar uso de CMS | 2016-12-29 09:00 → 2017-01-10 09:30 (+12d) | 2016-12-29 12:00 → 2017-01-10 11:30 (+12d) | 3h? → 2h | 27.5d → 11.3d | 136 → 148 | constraint start no earlier than 2016-12-29 09:00 → start no earlier than 2017-01-09 09:00 |
| 155 | Explicar uso de posicionamiento y difusion | 2016-12-26 09:00 → 2017-01-10 09:30 (+15d) | 2016-12-27 11:00 → 2017-01-10 16:30 (+14d) | 1d? → 5h | 30.2d → 11.4d | none → 150 | constraint none → start no earlier than 2017-01-09 09:00 |
| 156 | Usar transformacion de formatos | 2016-12-29 12:00 → 2017-01-10 11:30 (+12d) | 2016-12-30 16:00 → 2017-01-10 17:30 (+11d) | 1d? → 4h | 27.5d → 11.3d |  | constraint none → start no earlier than 2017-01-09 09:00 |
| 157 | Explicar el consumo de API's | 2017-01-05 17:00 → 2017-01-10 09:30 (+5d) | 2017-01-06 19:00 → 2017-01-10 11:30 (+4d) | 1d? → 2h | 23.2d → 11.6d | none → 152 | constraint none → start no earlier than 2017-01-09 09:00 |
| 158 | Explicar la autorizacion Oauth 2.0 | 2016-12-28 15:00 → 2017-01-11 09:00 (+14d) | 2016-12-29 17:00 → 2017-01-11 10:00 (+13d) | 1d? → 1h | 28.2d → 11.05d | none → 157 | constraint none → start no earlier than 2017-01-11 09:00 |
| 165 | **Presentación** | 2017-01-13 17:30 → 2017-01-16 09:00 (+3d) | 2017-01-13 19:00 → 2017-01-16 10:30 (+3d) | 0.15d? → 0.15d | 24d → 8.95d |  |  |
| 166 | Hacer powerpoint para presentacion | 2017-01-13 17:30 → 2017-01-16 09:00 (+3d) | 2017-01-13 19:00 → 2017-01-16 10:30 (+3d) | 1.5h? → 1.5h | 24d → 8.95d |  | constraint finish no earlier than 2017-01-13 19:00 → start no earlier than 2017-01-16 09:00; resources none → Nahiara; Ricardo |
| 167 | **SMA** | 2017-01-02 09:00 → 2017-01-16 10:30 (+14d) | 2017-01-04 18:00 → 2017-01-16 17:30 (+12d) | 2.3d? → 0.5d | 24.9d → 8.95d | none → 145 |  |
| 168 | Documento de SEO: definición de aspectos SEO como son palabras clave, estilos de textos, posiciones de texto, como se va a potenciar esto (landing, blog, etc…), URL amigables | 2017-01-04 15:00 → 2017-01-16 10:30 (+12d) | 2017-01-04 18:00 → 2017-01-16 17:30 (+12d) | 3h? → 5h | 24.9d → 8.95d | 192 → none |  |
| 169 | **PM** | 2017-01-26 09:00 → 2017-01-28 09:00 (+2d) | 2017-01-26 17:00 → 2017-01-30 11:00 (+4d) | 0.6d? → 1d | 17d → 0.6d |  |  |
| 170 | **Seguimiento** | 2017-01-26 09:00 → 2017-01-28 09:00 (+2d) | 2017-01-26 17:00 → 2017-01-30 11:00 (+4d) | 0.6d? → 1d | 17d → 0.6d |  |  |
| 171 | Registrar de tiempos y % de realización de tareas en Project | 2017-01-26 09:00 → 2017-01-28 09:00 (+2d) | 2017-01-26 11:00 → 2017-01-28 16:00 (+2d) | 2h? → 5h | 17d → 0.6d |  | constraint start no earlier than 2017-01-26 09:00 → start no earlier than 2017-01-28 09:00 |
| 172 | Comparar la planificación prevista y real en Project hito 2 | 2017-01-26 11:00 → 2017-01-28 16:00 (+2d) | 2017-01-26 13:00 → 2017-01-28 19:00 (+2d) | 2h? → 3h | 17d → 0.6d |  | constraint start no earlier than 2017-01-26 09:00 → start no earlier than 2017-01-28 09:00 |
| 173 | Confeccionar Informes de iteración e informe resumen de Hito 2 | 2017-01-26 15:00 → 2017-01-30 09:00 (+4d) | 2017-01-26 17:00 → 2017-01-30 11:00 (+4d) | 2h? → 2h | 17d → 0.6d |  | constraint start no earlier than 2017-01-26 09:00 → start no earlier than 2017-01-28 09:00 |
| 174 | **SMBI** | 2017-01-10 11:00 → 2017-01-09 10:30 (-1d) | 2017-01-12 17:00 → 2017-01-09 10:30 (-3d) | 2d? → 0d | 25d → 13.45d |  |  |
| 175 | **Pruebas** | 2017-01-02 09:00 → 2017-01-09 10:30 (+7d) | 2017-01-10 11:00 → 2017-02-01 11:00 (+22d) | 5d? → 14.45d? | 22.2d → -1d |  |  |
| 176 | Hacer pruebas de integración | 2017-01-02 09:00 → 2017-01-09 10:30 (+7d) | 2017-01-04 13:00 → 2017-01-11 16:30 (+7d) |  | 22.4d → 7.45d |  |  |
| 177 | Hacer pruebas funcionales | 2017-01-05 17:00 → 2017-01-11 16:30 (+6d) | 2017-01-10 11:00 → 2017-01-16 10:30 (+6d) |  | 22.2d → 7.45d |  |  |
| 178 | Hacer pruebas de regresión | 2017-01-10 11:00 → 2017-01-28 17:00 (+18d) | 2017-01-11 13:00 → 2017-01-30 19:00 (+19d) |  | 25d → -1d |  | constraint none → finish no earlier than 2017-01-30 19:00 |
| 179 | Hacer pruebas de carga y rendimiento | 2017-01-11 15:00 → 2017-01-31 09:00 (+20d) | 2017-01-12 17:00 → 2017-02-01 11:00 (+20d) |  | 25d → -1d |  | constraint none → finish no earlier than 2017-01-30 19:00 |
| 180 | **Validación** | 2017-01-04 15:00 → 2017-01-28 17:00 (+24d) | 2017-01-05 17:00 → 2017-01-30 19:00 (+25d) |  | 24.2d → 0d |  |  |
| 181 | Validar el funcionamiento del backend (Pruebas API Rest Full) | 2017-01-04 15:00 → 2017-01-28 17:00 (+24d) | 2017-01-05 17:00 → 2017-01-30 19:00 (+25d) |  | 24.2d → 0d |  | constraint none → finish no earlier than 2017-01-30 19:00 |
| 182 | **TAG** | 2017-01-10 11:00 → 2017-01-30 09:00 (+20d) | 2017-01-18 11:00 → 2017-01-30 19:00 (+12d) | 4.8d? → 0.8d | 22.2d → 0d |  |  |
| 183 | **Gestión de recursos** | 2017-01-10 11:00 → 2017-01-30 09:00 (+20d) | 2017-01-13 11:00 → 2017-01-30 19:00 (+17d) | 2.4d? → 0.8d | 22.2d → 0d |  |  |
| 184 | Parser de objetos en multiples formatos, salida en modo texto | 2017-01-10 11:00 → 2017-01-30 09:00 (+20d) | 2017-01-13 11:00 → 2017-01-30 19:00 (+17d) | 24h? → 8h | 22.2d → 0d |  | constraint finish no earlier than 2017-01-11 19:00 → finish no earlier than 2017-01-30 19:00; resources Ricardo → Antonio |
| 185 | **Visualización** | 2017-01-13 11:00 → 2017-01-25 09:00 (+12d) | 2017-01-18 11:00 → 2017-01-30 19:00 (+12d) | 2.4d? → 4d? | 22.2d → 0d | 183 → none |  |
| 186 | Visualizador OpenGL 4.X simple, con datos por programa. Shader básico. | 2017-01-13 11:00 → 2017-01-25 09:00 (+12d) | 2017-01-18 11:00 → 2017-01-30 19:00 (+12d) | 24h? → 40h? | 22.2d → 0d | 184 → none | constraint finish no earlier than 2017-01-11 19:00 → finish no earlier than 2017-01-30 19:00; resources Ricardo → Antonio |
| 187 | **NM** | 2017-01-12 09:00 → 2017-01-19 09:00 (+7d) | 2017-01-18 16:00 → 2017-01-19 11:30 (+1d) | 3.7d? → 0.25d | 21.9d → 6.95d |  |  |
| 188 | Incorporación de open data, API's, y otras fuentes heterogéneas | 2017-01-18 11:00 → 2017-01-19 09:00 (+1d) | 2017-01-18 16:00 → 2017-01-19 11:30 (+1d) | 3h? → 2.5h | 21.9d → 6.95d |  | constraint none → start no earlier than 2017-01-19 09:00 |
| 189 | **SMA** | 2017-01-10 11:00 → 2017-01-23 09:00 (+13d) | 2017-01-11 19:00 → 2017-01-30 19:00 (+19d) | 1.4d? → 5.6d | 25.6d → none |  |  |
| 190 | Integración Front-Back: documento de relación entre back-end y front-end | 2017-01-10 11:00 → 2017-01-25 09:00 (+15d) | 2017-01-11 13:00 → 2017-01-27 19:00 (+16d) | 1d? → 2.4d | 25.6d → 68.8d |  | constraint none → finish no earlier than 2017-01-27 19:00; resources Jorge; Nahiara → Ricardo |
| 191 | Arquitectura tecnológica: documento sobre toma de decisión, versiones, codificación, internacionalización (varias lenguas), instalación sobre servidor de frameworks... | 2017-01-11 15:00 → 2017-01-27 09:00 (+16d) | 2017-01-11 19:00 → 2017-01-27 11:00 (+16d) | 4h? → 2h | 25.6d → 69.4d | 190 → none | constraint none → start no earlier than 2017-01-27 09:00; resources Jorge; Nahiara → Nahiara; Antonio |
| 192 | Guía de estilos: documento detallando la imagen corporativa del servicio (colores, estilos, esencia para la experiencia de usuario, consideraciones de usabilidad y accesibilidad) | 2017-01-02 09:00 → 2017-01-28 09:00 (+26d) | 2017-01-04 13:00 → 2017-01-30 19:00 (+26d) | 2d? → 1.6d? | 24.9d → 67.2d |  | constraint start no earlier than 2017-01-02 09:00 → finish no earlier than 2017-01-30 19:00; resources Jorge; Nahiara → Jorge |
| 241 | **PD** |  |  | 37.6d → 37.6d? | 15.2d → 0d |  |  |
| 242 | Cartel del proyecto | 2017-01-17 12:00 → 2017-01-31 09:00 (+14d) | 2017-01-17 19:00 → 2017-01-31 16:00 (+14d) |  | 22.4d → 37.1d |  |  |
| 244 | **ELE** |  | 2017-02-01 11:00 → 2017-02-02 13:00 (+1d) | 1d? → 2d? | 51.8d → 35.6d |  |  |
| 245 | **Tarea 2** | 2016-12-26 09:00 → 2017-01-31 09:00 (+36d) | 2016-12-28 13:00 → 2017-02-02 13:00 (+36d) |  | 29.2d → 35.6d |  |  |
| 246 | Hacer guión | 2016-12-26 09:00 → 2017-01-31 09:00 (+36d) | 2016-12-27 11:00 → 2017-02-01 11:00 (+36d) |  | 30.2d → 36.6d |  |  |
| 247 | Hacer guión gráfico | 2016-12-27 11:00 → 2017-02-01 11:00 (+36d) | 2016-12-28 13:00 → 2017-02-02 13:00 (+36d) |  | 29.2d → 35.6d |  |  |
| 252 | **HITO 4** |  | 2017-06-22 19:00 → 2017-05-26 19:00 (-27d) | 44.8d? → 29.6d? |  |  |  |
| 285 | **PD** |  | 2017-06-22 19:00 → 2017-05-26 19:00 (-27d) | 44.8d? → 29.6d? |  |  |  |
| 287 | Creditos |  | 2017-06-22 19:00 → 2017-05-26 19:00 (-27d) | 29.6d? → 14.4d? |  |  | constraint finish no earlier than 2017-06-22 19:00 → finish no earlier than 2017-05-26 19:00 |

## Version 3 (saved 2017-01-31)

Note of the change: Merge branch 'master' of https://github.com/ABPMultimediaUA/SchoolApp

Last finish stays 2017-05-26.

Added:

| ID | Task | Duration | Start | Finish | Predecessors | Constraint | Resources |
| --- | --- | --- | --- | --- | --- | --- | --- |
| 142 | Aprender uso nueva tecnología | 10h | 2017-01-02 09:00 | 2017-01-03 11:00 |  | start no earlier than 2017-01-02 09:00 | Antonio; Manuel |
| 195 | **Iteracion 1** | 8d | 2017-01-31 09:00 | 2017-02-12 19:00 |  |  |  |
| 208 | **PD** | 0.5d? | 2017-02-01 09:00 | 2017-02-01 16:00 |  |  |  |
| 210 | **ELE** | 2d? | 2017-01-31 09:00 | 2017-02-02 13:00 |  |  |  |
| 214 | **SMA** | 1d? | 2017-01-31 09:00 | 2017-02-01 11:00 |  |  |  |
| 215 | Guia de estilos | 1d? | 2017-01-31 09:00 | 2017-02-01 11:00 |  |  |  |
| 218 | **Iteración 2** | 1d? | 2017-02-13 09:00 | 2017-02-14 11:00 | 195 |  |  |
| 219 | **NM** | 1d? | 2017-02-13 09:00 | 2017-02-14 11:00 |  |  |  |
| 221 | **ELE** | 1d? | 2017-02-13 09:00 | 2017-02-14 11:00 |  |  |  |
| 224 | **TAG** | 1d? | 2017-02-13 09:00 | 2017-02-14 11:00 |  |  |  |
| 234 | **Iteracion 3** | 1d? | 2017-02-14 11:00 | 2017-02-15 13:00 | 218 |  |  |
| 235 | **SMA** | 1d? | 2017-01-30 19:00 | 2017-02-01 11:00 |  |  |  |
| 238 | **NM** | 1d? | 2017-02-14 11:00 | 2017-02-15 13:00 |  |  |  |
| 240 | **TAG** | 1d | 2017-01-31 09:00 | 2017-02-01 11:00 |  |  |  |
| 247 | **Iteracion 4** | 1d? | 2017-02-15 15:00 | 2017-02-16 17:00 | 234 |  |  |
| 250 | **NM** | 1d? | 2017-02-15 15:00 | 2017-02-16 17:00 |  |  |  |
| 252 | **TAG** | 1d | 2017-01-31 09:00 | 2017-02-01 11:00 |  |  |  |
| 257 | **Iteracion 5** | 1d? | 2017-02-16 17:00 | 2017-02-17 19:00 | 247 |  |  |
| 258 | **SMA** | 1d? | 2017-02-16 17:00 | 2017-02-17 19:00 |  |  |  |
| 260 | **NM** | 1d? | 2017-02-16 17:00 | 2017-02-17 19:00 |  |  |  |

Changed:

| ID | Task | Start | Finish | Duration | Total float | Predecessors | Other |
| --- | --- | --- | --- | --- | --- | --- | --- |
| 139 | **SMBI** | 2016-12-26 09:00 → 2016-12-30 12:00 (+4d) | 2016-12-30 19:00 → 2017-01-03 11:00 (+4d) | 4d? → 1.5d | 0d → 9.5d |  |  |
| 140 | **Cambio tecnología** | 2016-12-26 09:00 → 2016-12-30 12:00 (+4d) | 2016-12-30 19:00 → 2017-01-03 11:00 (+4d) | 4d → 1.5d | none → 9.5d |  |  |
| 145 | **Iteración 2** |  |  | 13.45d? → 13.45d | 7.85d → -4d |  |  |
| 147 | **Memoria ABP** |  | 2017-01-12 12:30 → 2017-01-12 16:00 | 2.6d → 2.75d | 10.35d → 6.2d |  |  |
| 152 | **Apartado 3** | 2017-01-09 16:30 → 2017-01-11 09:30 (+2d) | 2017-01-10 09:30 → 2017-01-11 12:30 (+1d) |  | 11.3d → 6.2d |  |  |
| 153 | Explicar marco tecnológico | 2017-01-09 16:30 → 2017-01-11 09:30 (+2d) | 2017-01-10 09:30 → 2017-01-11 12:30 (+1d) |  | 11.3d → 6.2d |  |  |
| 154 | **Descripcion de objetivos SDM en ABP** | 2017-01-10 09:30 → 2017-01-11 12:30 (+1d) | 2017-01-11 10:00 → 2017-01-12 10:30 (+1d) | 0.85d → 0.6d | 11.05d → 6.2d |  |  |
| 155 | Explicar uso de CMS | 2017-01-10 09:30 → 2017-01-11 12:30 (+1d) | 2017-01-10 11:30 → 2017-01-11 16:30 (+1d) |  | 11.3d → 6.2d |  |  |
| 156 | Explicar uso de posicionamiento y difusion | 2017-01-10 09:30 → 2017-01-11 12:30 (+1d) | 2017-01-10 16:30 → 2017-01-12 09:30 (+2d) |  | 11.4d → 6.3d |  |  |
| 157 | Usar transformacion de formatos | 2017-01-10 11:30 → 2017-01-11 16:30 (+1d) | 2017-01-10 17:30 → 2017-01-12 10:30 (+2d) |  | 11.3d → 6.2d |  |  |
| 158 | Explicar el consumo de API's | 2017-01-10 09:30 → 2017-01-11 12:30 (+1d) | 2017-01-10 11:30 → 2017-01-11 16:30 (+1d) |  | 11.6d → 6.5d |  |  |
| 159 | Explicar la autorizacion Oauth 2.0 | 2017-01-11 09:00 → 2017-01-11 16:30 | 2017-01-11 10:00 → 2017-01-11 17:30 |  | 11.05d → 6.5d |  |  |
| 160 | **Apartado 5** | 2017-01-12 09:00 → 2017-01-12 10:30 | 2017-01-12 10:30 → 2017-01-12 12:00 |  | 10.35d → 6.2d |  |  |
| 161 | Explicar objetivos cumplidos | 2017-01-12 09:00 → 2017-01-12 10:30 | 2017-01-12 10:30 → 2017-01-12 12:00 |  | 10.35d → 6.2d |  |  |
| 162 | **Conclusión** | 2017-01-12 10:30 → 2017-01-12 12:00 | 2017-01-12 11:30 → 2017-01-12 13:00 |  | 10.35d → 6.2d |  |  |
| 163 | Escribir conclusion de la memoria | 2017-01-12 10:30 → 2017-01-12 12:00 | 2017-01-12 11:30 → 2017-01-12 13:00 |  | 10.35d → 6.2d |  |  |
| 164 | **Apartado 7** | 2017-01-12 11:30 → 2017-01-12 15:00 | 2017-01-12 12:30 → 2017-01-12 16:00 |  | 10.35d → 6.2d |  |  |
| 165 | Explicar Reparto del trabajo | 2017-01-12 11:30 → 2017-01-12 15:00 | 2017-01-12 12:30 → 2017-01-12 16:00 |  | 10.35d → 6.2d |  |  |
| 170 | **PM** |  | 2017-01-30 11:00 → 2017-01-28 19:00 (-2d) | 1d → 0.8d | 0.6d → -3.2d |  |  |
| 171 | **Seguimiento** |  | 2017-01-30 11:00 → 2017-01-28 19:00 (-2d) | 1d → 0.8d | 0.6d → -3.2d |  |  |
| 175 | **SMBI** |  | 2017-01-09 10:30 → 2017-01-30 19:00 (+21d) | 0d → 13.45d | 13.45d → -4d |  |  |
| 176 | **Pruebas** |  | 2017-02-01 11:00 → 2017-01-13 16:00 (-19d) | 14.45d? → 3.55d | -1d → 5.9d |  |  |
| 177 | Hacer pruebas de integración |  | 2017-01-11 16:30 → 2017-01-11 09:30 | 2d? → 15h | 7.45d → 6.35d | 141 → none | constraint none → start no earlier than 2017-01-09 09:00; resources Antonio; Manuel → Manuel |
| 178 | Hacer pruebas funcionales |  | 2017-01-16 10:30 → 2017-01-12 18:30 (-4d) | 2d → 10h | 7.45d → 5.95d |  | resources Antonio; Manuel → Manuel |
| 179 | Hacer pruebas de regresión | 2017-01-28 17:00 → 2017-01-13 09:00 (-15d) | 2017-01-30 19:00 → 2017-01-13 16:00 (-17d) | 1d? → 5h | -1d → 5.9d |  | constraint finish no earlier than 2017-01-30 19:00 → start no earlier than 2017-01-13 09:00; resources Antonio; Manuel → Manuel |
| 180 | Hacer pruebas de carga y rendimiento | 2017-01-31 09:00 → 2017-01-28 17:00 (-3d) | 2017-02-01 11:00 → 2017-01-30 19:00 (-2d) |  | -1d → -4d | 179 → none |  |
| 181 | **Validación** |  |  | 1d? → 1d | 0d → -4d |  |  |
| 182 | Validar el funcionamiento del backend (Pruebas API Rest Full) |  |  | 1d? → 10h | 0d → -4d |  | resources Antonio; Manuel → Manuel |
| 190 | **SMA** | 2017-01-23 09:00 → 2017-01-25 09:00 (+2d) |  | 5.6d → 4d | none → -4d |  |  |
| 193 | Guía de estilos: documento detallando la imagen corporativa del servicio (colores, estilos, esencia para la experiencia de usuario, consideraciones de usabilidad y accesibilidad) | 2017-01-28 09:00 → 2017-01-30 17:00 (+2d) |  | 1.6d? → 2h | 67.2d → -4d |  |  |
| 194 | **HITO 3** | 2017-01-31 09:00 → 2017-01-30 19:00 (-1d) | 2017-04-05 19:00 → 2017-02-17 19:00 (-47d) | 37.6d? → 11.2d? | 0d → -4d |  |  |
| 196 | **PM** |  | 2017-04-05 19:00 → 2017-01-31 09:00 (-64d) | 37.6d → 0d | 0d → -3d |  |  |
| 197 | **Planificación** |  | 2017-04-05 19:00 → 2017-01-31 09:00 (-64d) | 37.6d → 0d | 0d → none |  |  |
| 198 | **Detallar plan iteraciones del mes de Febrero-Marzo** |  | 2017-04-05 19:00 → 2017-01-31 09:00 (-64d) | 37.6d → 0d | 0d → none |  |  |
| 199 | Creación Subtareas y precedencias en Project |  | 2017-04-05 19:00 → 2017-01-31 09:00 (-64d) | 37.6d → 0d | 0d → -3d |  |  |
| 200 | Asignar recursos a las tareas en Project. |  | 2017-04-05 19:00 → 2017-01-31 09:00 (-64d) | 37.6d → 0d | 0d → -3d |  |  |
| 201 | **Seguimiento** |  | 2017-04-05 19:00 → 2017-01-31 09:00 (-64d) | 37.6d → 0d | 0d → none |  |  |
| 202 | Registrar de tiempos y % de realización de tareas en Project |  | 2017-04-05 19:00 → 2017-01-31 09:00 (-64d) | 37.6d → 0d | 0d → -3d |  |  |
| 203 | Comparar la planificación prevista y real en Project hito 3 |  | 2017-04-05 19:00 → 2017-01-31 09:00 (-64d) | 37.6d → 0d | 0d → -3d |  |  |
| 204 | Confeccionar Informes de iteración e informe resumen de Hito 3 |  | 2017-04-05 19:00 → 2017-01-31 09:00 (-64d) | 37.6d → 0d | 0d → -3d |  |  |
| 205 | **Presentación** |  | 2017-04-05 19:00 → 2017-01-31 09:00 (-64d) | 37.6d → 0d | 0d → none |  |  |
| 206 | Elaborar la presentación del Hito 3 |  | 2017-04-05 19:00 → 2017-01-31 09:00 (-64d) | 37.6d → 0d | 0d → -3d |  |  |
| 207 | Exponer la presentación del Hito 3 |  | 2017-04-05 19:00 → 2017-01-31 09:00 (-64d) | 37.6d → 0d | 0d → -3d |  |  |
| 209 | Cartel del proyecto | 2017-01-31 09:00 → 2017-02-01 09:00 (+1d) | 2017-01-31 16:00 → 2017-02-01 16:00 (+1d) |  | 37.1d → 65.9d |  | constraint finish no earlier than 2017-01-17 19:00 → start no earlier than 2017-02-01 09:00 |
| 216 | **NM** |  | 2017-04-05 19:00 → 2017-02-01 11:00 (-63d) | 37.6d → 1d? | 0d → none |  |  |
| 217 | Despliegue de la infraestructura del proyecto |  | 2017-04-05 19:00 → 2017-02-01 11:00 (-63d) | 37.6d → 1d? | 0d → -4d |  |  |
| 220 | Definición de cuadros de mando e implementación | 2017-01-31 09:00 → 2017-02-13 09:00 (+13d) | 2017-04-05 19:00 → 2017-02-14 11:00 (-50d) | 37.6d → 1d? | 0d → -10.2d |  |  |
| 222 | **Tarea 3** | 2017-01-31 09:00 → 2017-02-13 09:00 (+13d) | 2017-02-01 11:00 → 2017-02-14 11:00 (+13d) |  | 36.6d → -10.2d |  |  |
| 223 | Definir tecnologias | 2017-01-31 09:00 → 2017-02-13 09:00 (+13d) | 2017-02-01 11:00 → 2017-02-14 11:00 (+13d) |  | 36.6d → -10.2d |  |  |
| 225 | **Árbol de la escena** | 2017-01-31 09:00 → 2017-02-13 09:00 (+13d) | 2017-04-05 19:00 → 2017-02-14 11:00 (-50d) | 37.6d → 1d? | 0d → -10.2d |  |  |
| 226 | Tipos de datos para nodos (completo) y entidades (sólo clase padre; clases hijas sin contenido) | 2017-01-31 09:00 → 2017-02-13 09:00 (+13d) | 2017-04-05 19:00 → 2017-02-14 11:00 (-50d) | 37.6d → 1d? | 0d → -10.2d |  |  |
| 227 | Construcción del árbol | 2017-01-31 09:00 → 2017-02-13 09:00 (+13d) | 2017-04-05 19:00 → 2017-02-14 11:00 (-50d) | 37.6d → 1d? | 0d → -10.2d |  |  |
| 228 | Recorrido del arbol | 2017-01-31 09:00 → 2017-02-13 09:00 (+13d) | 2017-04-05 19:00 → 2017-02-14 11:00 (-50d) | 37.6d → 1d? | 0d → -10.2d |  |  |
| 229 | Salida en modo texto | 2017-01-31 09:00 → 2017-02-13 09:00 (+13d) | 2017-04-05 19:00 → 2017-02-14 11:00 (-50d) | 37.6d → 1d? | 0d → -10.2d |  |  |
| 230 | Tipos de datos para entidades de tipo transformacion | 2017-01-31 09:00 → 2017-02-13 09:00 (+13d) | 2017-04-05 19:00 → 2017-02-14 11:00 (-50d) | 37.6d → 1d? | 0d → -10.2d |  |  |
| 231 | Tipos de datos para entidades de tipo cámara y luz (cámaras y luces de dos tipos). Salida en modo texto | 2017-01-31 09:00 → 2017-02-13 09:00 (+13d) | 2017-04-05 19:00 → 2017-02-14 11:00 (-50d) | 37.6d → 1d? | 0d → -10.2d |  |  |
| 232 | Tipos de datos para entidades de tipo malla. Salida en modo texto | 2017-01-31 09:00 → 2017-02-13 09:00 (+13d) | 2017-04-05 19:00 → 2017-02-14 11:00 (-50d) | 37.6d → 1d? | 0d → -10.2d |  |  |
| 233 | Tipos de datos para entidades de tipo animación (cuadro a cuadro). Salida en modo texto | 2017-01-31 09:00 → 2017-02-13 09:00 (+13d) | 2017-04-05 19:00 → 2017-02-14 11:00 (-50d) | 37.6d → 1d? | 0d → -10.2d |  |  |
| 236 | **Implementación front-end más documentación** | 2017-01-31 09:00 → 2017-01-30 19:00 (-1d) | 2017-04-05 19:00 → 2017-02-01 11:00 (-63d) | 37.6d → 1d? | 0d → none |  |  |
| 237 | De código (documentación sobre estructura de código y particularidades especiales como por ejemplo algoritmos de optimización, mejoras, etc) |  | 2017-04-05 19:00 → 2017-02-01 11:00 (-63d) | 37.6d → 1d? | 0d → -2d |  |  |
| 239 | Definición de KPI's implementación | 2017-01-31 09:00 → 2017-02-14 11:00 (+14d) | 2017-04-05 19:00 → 2017-02-15 13:00 (-49d) | 37.6d → 1d? | 0d → -10.2d |  |  |
| 241 | **Gestor de recursos** |  | 2017-04-05 19:00 → 2017-02-01 11:00 (-63d) | 37.6d → 1d? | 0d → none |  |  |
| 242 | Carga de modelos en formato múltiple en las entidades de tipo malla |  | 2017-04-05 19:00 → 2017-02-01 11:00 (-63d) | 37.6d → 1d? | 0d → -2d |  |  |
| 243 | Carga de varios ficheros para animación. Salida en modo texto |  | 2017-04-05 19:00 → 2017-02-01 11:00 (-63d) | 37.6d → 1d? | 0d → -2d |  |  |
| 244 | **Visualización** |  | 2017-04-05 19:00 → 2017-02-01 11:00 (-63d) | 37.6d → 1d? | 0d → none |  |  |
| 245 | Visualizador OpenGL 4.X de las entidades tipo malla. Shader básico. Integración con el motor. Sin materiales, texturas, cámara ni luces |  | 2017-04-05 19:00 → 2017-02-01 11:00 (-63d) | 37.6d → 1d? | 0d → -2d |  |  |
| 246 | Visualizador OpenGL 4.X de las entidades tipo malla. Shader básico. Con cámaras y luces de varios tipos. Visualización con registro de cámaras y luces. |  | 2017-04-05 19:00 → 2017-02-01 11:00 (-63d) | 37.6d → 1d? | 0d → -2d |  |  |
| 248 | **SMA** | 2017-01-31 09:00 → 2017-01-30 19:00 (-1d) | 2017-04-05 19:00 → 2017-02-01 11:00 (-63d) | 37.6d → 1d? | 0d → none |  |  |
| 249 | Implementación de las funcionalidades en front-end (relación de las interfaces y funcionalidades que se están implementando y en que momento están implementadas) |  | 2017-04-05 19:00 → 2017-02-01 11:00 (-63d) | 37.6d → 1d? | 0d → -1d |  |  |
| 251 | Valoración de los cuadros de mando y KPI's definidos e incorporación de nuevos elementos según datos | 2017-01-31 09:00 → 2017-02-15 15:00 (+15d) | 2017-04-05 19:00 → 2017-02-16 17:00 (-48d) | 37.6d → 1d? | 0d → -10.2d |  |  |

| ID | Task | Start | Finish | Duration | Total float |
| --- | --- | --- | --- | --- | --- |
| 253 | **Gestor de recursos** |  | 2017-04-05 19:00 → 2017-02-01 11:00 (-63d) | 37.6d → 1d? | 0d → none |
| 254 | Carga de materiales y texturas. Salida en modo texto |  | 2017-04-05 19:00 → 2017-02-01 11:00 (-63d) | 37.6d → 1d? | 0d → -1d |
| 255 | **Visualización** |  | 2017-04-05 19:00 → 2017-02-01 11:00 (-63d) | 37.6d → 1d? | 0d → none |
| 256 | Visualizador OpenGL 4.X de las entidades tipo malla. Shader básico. Añadiendo materiales y texturas. |  | 2017-04-05 19:00 → 2017-02-01 11:00 (-63d) | 37.6d → 1d? | 0d → -1d |
| 259 | Informe | 2017-01-31 09:00 → 2017-02-16 17:00 (+16d) | 2017-04-05 19:00 → 2017-02-17 19:00 (-47d) | 37.6d → 1d? | 0d → 26.4d |
| 261 | Informe | 2017-01-31 09:00 → 2017-02-16 17:00 (+16d) | 2017-04-05 19:00 → 2017-02-17 19:00 (-47d) | 37.6d → 1d? | 0d → 26.4d |
| 262 | **PD** |  | 2017-04-05 19:00 → 2017-02-01 11:00 (-63d) | 37.6d? → 1d? | 0d → none |
| 263 | Trailer del proyecto |  | 2017-04-05 19:00 → 2017-02-01 11:00 (-63d) | 37.6d → 1d? | 0d → 36.6d |
| 264 | **ELE** |  | 2017-02-02 13:00 → 2017-02-01 11:00 (-1d) | 2d? → 1d? | 35.6d → none |
| 267 | **TAG** |  | 2017-04-05 19:00 → 2017-02-01 11:00 (-63d) | 37.6d → 1d | 0d → none |
| 268 | **Fachada** |  | 2017-04-05 19:00 → 2017-02-01 11:00 (-63d) | 37.6d → 1d? | 0d → none |
| 269 | Creación de una fachada entre el motor y la aplicación |  | 2017-04-05 19:00 → 2017-02-01 11:00 (-63d) | 37.6d → 1d? | 0d → 36.6d |
| 270 | **Visualización** |  | 2017-04-05 19:00 → 2017-02-01 11:00 (-63d) | 37.6d → 1d? | 0d → none |
| 271 | Visualizador OpenGL 4.X con tres shaders avanzados |  | 2017-04-05 19:00 → 2017-02-01 11:00 (-63d) | 37.6d → 1d? | 0d → 36.6d |
| 272 | **HITO 4** | 2017-04-06 09:00 → 2017-02-20 09:00 (-45d) |  | 29.6d? → 56d? |  |
| 273 | **PM** | 2017-04-06 09:00 → 2017-02-20 09:00 (-45d) | 2017-05-26 19:00 → 2017-04-11 19:00 (-45d) |  | 0d → 26.4d |
| 274 | **Planificación** | 2017-04-06 09:00 → 2017-02-20 09:00 (-45d) | 2017-05-26 19:00 → 2017-04-11 19:00 (-45d) |  | 0d → 26.4d |
| 275 | **Detallar plan iteraciones del mes de Abril-Mayo** | 2017-04-06 09:00 → 2017-02-20 09:00 (-45d) | 2017-05-26 19:00 → 2017-04-11 19:00 (-45d) |  | 0d → 26.4d |
| 276 | Creación Subtareas y precedencias en Project | 2017-04-06 09:00 → 2017-02-20 09:00 (-45d) | 2017-05-26 19:00 → 2017-04-11 19:00 (-45d) |  | 0d → 26.4d |
| 277 | Asignar recursos a las tareas en Project | 2017-04-06 09:00 → 2017-02-20 09:00 (-45d) | 2017-05-26 19:00 → 2017-04-11 19:00 (-45d) |  | 0d → 26.4d |
| 278 | **Seguimiento** | 2017-04-06 09:00 → 2017-02-20 09:00 (-45d) | 2017-05-26 19:00 → 2017-04-11 19:00 (-45d) |  | 0d → 26.4d |
| 279 | Registrar de tiempos y % de realización de tareas en Project | 2017-04-06 09:00 → 2017-02-20 09:00 (-45d) | 2017-05-26 19:00 → 2017-04-11 19:00 (-45d) |  | 0d → 26.4d |
| 280 | Comparar la planificación prevista y real en Project hito 4 | 2017-04-06 09:00 → 2017-02-20 09:00 (-45d) | 2017-05-26 19:00 → 2017-04-11 19:00 (-45d) |  | 0d → 26.4d |
| 281 | Confeccionar Informes de iteración e informe resumen de Hito 4 | 2017-04-06 09:00 → 2017-02-20 09:00 (-45d) | 2017-05-26 19:00 → 2017-04-11 19:00 (-45d) |  | 0d → 26.4d |
| 282 | **Presentación** | 2017-04-06 09:00 → 2017-02-20 09:00 (-45d) | 2017-05-26 19:00 → 2017-04-11 19:00 (-45d) |  | 0d → 26.4d |
| 283 | Elaborar la presentación del Hito 4 | 2017-04-06 09:00 → 2017-02-20 09:00 (-45d) | 2017-05-26 19:00 → 2017-04-11 19:00 (-45d) |  | 0d → 26.4d |
| 284 | Exponer la presentación del Hito 4 | 2017-04-06 09:00 → 2017-02-20 09:00 (-45d) | 2017-05-26 19:00 → 2017-04-11 19:00 (-45d) |  | 0d → 26.4d |
| 285 | **TAG** | 2017-04-06 09:00 → 2017-02-20 09:00 (-45d) | 2017-05-26 19:00 → 2017-04-11 19:00 (-45d) |  | 0d → 26.4d |
| 286 | **IGC** | 2017-04-06 09:00 → 2017-02-20 09:00 (-45d) | 2017-05-26 19:00 → 2017-04-11 19:00 (-45d) |  | 0d → 26.4d |
| 287 | **Aplicación** | 2017-04-06 09:00 → 2017-02-20 09:00 (-45d) | 2017-05-26 19:00 → 2017-04-11 19:00 (-45d) |  | 0d → 26.4d |
| 288 | Cargador de modelos | 2017-04-06 09:00 → 2017-02-20 09:00 (-45d) | 2017-05-26 19:00 → 2017-04-11 19:00 (-45d) |  | 0d → 26.4d |
| 289 | Movimiento del modelo, de las luces y de la cámara | 2017-04-06 09:00 → 2017-02-20 09:00 (-45d) | 2017-05-26 19:00 → 2017-04-11 19:00 (-45d) |  | 0d → 26.4d |
| 290 | Cambio de modelo, materiales y texturas | 2017-04-06 09:00 → 2017-02-20 09:00 (-45d) | 2017-05-26 19:00 → 2017-04-11 19:00 (-45d) |  | 0d → 26.4d |
| 291 | Animaciones | 2017-04-06 09:00 → 2017-02-20 09:00 (-45d) | 2017-05-26 19:00 → 2017-04-11 19:00 (-45d) |  | 0d → 26.4d |
| 292 | Integración con el motor | 2017-04-06 09:00 → 2017-02-20 09:00 (-45d) | 2017-05-26 19:00 → 2017-04-11 19:00 (-45d) |  | 0d → 26.4d |
| 293 | Optimizaciones del motor | 2017-04-06 09:00 → 2017-02-20 09:00 (-45d) | 2017-05-26 19:00 → 2017-04-11 19:00 (-45d) |  | 0d → 26.4d |
| 294 | Efectos visuales | 2017-04-06 09:00 → 2017-02-20 09:00 (-45d) | 2017-05-26 19:00 → 2017-04-11 19:00 (-45d) |  | 0d → 26.4d |
| 295 | **SMA** | 2017-04-06 09:00 → 2017-02-20 09:00 (-45d) | 2017-05-26 19:00 → 2017-04-11 19:00 (-45d) |  | 0d → 26.4d |
| 296 | Documento de pruebas donde se documenta las pruebas de las funcionalidades principales (por lo menos las interfaces principales) | 2017-04-06 09:00 → 2017-02-20 09:00 (-45d) | 2017-05-26 19:00 → 2017-04-11 19:00 (-45d) |  | 0d → 26.4d |
| 297 | Pruebas de la aplicación demostrando que no hay errores (falta de librerías, archivos que no se descargan, errores javascript) | 2017-04-06 09:00 → 2017-02-20 09:00 (-45d) | 2017-05-26 19:00 → 2017-04-11 19:00 (-45d) |  | 0d → 26.4d |
| 298 | Pruebas de seguridad de front end | 2017-04-06 09:00 → 2017-02-20 09:00 (-45d) | 2017-05-26 19:00 → 2017-04-11 19:00 (-45d) |  | 0d → 26.4d |
| 299 | Pruebas de rendimiento (velocidad de carga, que todo carga y no hay errores) | 2017-04-06 09:00 → 2017-02-20 09:00 (-45d) | 2017-05-26 19:00 → 2017-04-11 19:00 (-45d) |  | 0d → 26.4d |
| 300 | Validar las funcionalidades (comprobar que realmente han sido implementadas), las funcionalidades han quedado recogidas en las interfaces implementadas | 2017-04-06 09:00 → 2017-02-20 09:00 (-45d) | 2017-05-26 19:00 → 2017-04-11 19:00 (-45d) |  | 0d → 26.4d |
| 301 | Informe | 2017-04-06 09:00 → 2017-02-20 09:00 (-45d) | 2017-05-26 19:00 → 2017-04-11 19:00 (-45d) |  | 0d → 26.4d |
| 302 | **NM** | 2017-04-06 09:00 → 2017-02-20 09:00 (-45d) | 2017-05-26 19:00 → 2017-04-11 19:00 (-45d) |  | 0d → 26.4d |
| 303 | Validación del funcionamiento | 2017-04-06 09:00 → 2017-02-20 09:00 (-45d) | 2017-05-26 19:00 → 2017-04-11 19:00 (-45d) |  | 0d → 26.4d |
| 304 | Informe | 2017-04-06 09:00 → 2017-02-20 09:00 (-45d) | 2017-05-26 19:00 → 2017-04-11 19:00 (-45d) |  | 0d → 26.4d |
| 305 | **PD** | 2017-04-06 09:00 → 2017-02-20 09:00 (-45d) |  | 29.6d? → 56d? |  |
| 306 | Making of del proyecto | 2017-04-06 09:00 → 2017-02-20 09:00 (-45d) | 2017-05-26 19:00 → 2017-04-11 19:00 (-45d) |  | 0d → 26.4d |
| 308 | **ELE** | 2017-04-06 09:00 → 2017-02-20 09:00 (-45d) | 2017-04-07 11:00 → 2017-02-21 11:00 (-45d) |  | 28.6d → 55d |
| 309 | **Tarea 5** | 2017-04-06 09:00 → 2017-02-20 09:00 (-45d) | 2017-04-07 11:00 → 2017-02-21 11:00 (-45d) |  | 28.6d → 55d |
| 310 | Grabar audio | 2017-04-06 09:00 → 2017-02-20 09:00 (-45d) | 2017-04-07 11:00 → 2017-02-21 11:00 (-45d) |  | 28.6d → 55d |
| 311 | **Tarea 6** | 2017-04-06 09:00 → 2017-02-20 09:00 (-45d) | 2017-04-07 11:00 → 2017-02-21 11:00 (-45d) |  | 28.6d → 55d |
| 312 | Hacer montaje | 2017-04-06 09:00 → 2017-02-20 09:00 (-45d) | 2017-04-07 11:00 → 2017-02-21 11:00 (-45d) |  | 28.6d → 55d |
