# ProyectoABP

How a schedule from MS Project changed from version to version. A marks actual dates.

## Version 1 (saved 2017-01-31)

Note of the change: Nuevo Project para hito 3

| ID | WBS | Task | Duration | Start | Finish | Predecessors | Complete | Total float | Constraint |
| --- | --- | --- | --- | --- | --- | --- | --- | --- | --- |
| 2 | 1 | **HITO 0** | 22.4d? | 2016-09-12 09:00 A | 2016-10-19 19:00 |  | 64% | 13d |  |
| 3 | 1.1 | **PM** | 22.4d? | 2016-09-12 09:00 | 2016-10-19 19:00 |  |  | 13d |  |
| 4 |  | Rellenar documentos de proyecto | 10.4d? | 2016-09-12 09:00 | 2016-09-28 19:00 |  |  | 13d | start no earlier than 2016-09-12 09:00 |
| 5 |  | Rellenar hoja de presupuesto | 4d? | 2016-09-29 09:00 | 2016-10-05 19:00 | 4 |  | 13d | finish no earlier than 2016-10-05 19:00 |
| 6 |  | Hacer project | 8d? | 2016-10-06 09:00 | 2016-10-19 19:00 | 5 |  | 13d | start no earlier than 2016-10-06 09:00 |
| 7 | 1.2 | **SMBI** | 22.4d? | 2016-09-12 09:00 A | 2016-10-19 19:00 |  | 73% | 13d |  |
| 8 |  | Diseño integral de la arquitectura técnica | 22.4d? | 2016-09-12 09:00 A | 2016-10-19 19:00 |  | 73% | 13d | start no earlier than 2016-09-12 09:00 |
| 9 |  | Especificación de elementos y tecnologías de seguridad y autenticación | 22.4d? | 2016-09-12 09:00 A | 2016-10-19 19:00 |  | 73% | 13d | finish no earlier than 2016-10-19 19:00 |
| 10 |  | Especificación de API Rest y modelo de datos | 22.4d? | 2016-09-12 09:00 A | 2016-10-19 19:00 |  | 73% | 13d | finish no earlier than 2016-10-19 19:00 |
| 11 | 1.3 | **SMA** | 22.4d? | 2016-09-12 09:00 A | 2016-10-19 19:00 |  | 73% | 13d |  |
| 12 |  | Diseño funcional: documentación con la especificación de todas las funcionalidades del sistema | 22.4d? | 2016-09-12 09:00 A | 2016-10-19 19:00 |  | 73% | 13d | start no earlier than 2016-09-12 09:00 |
| 13 |  | Diseño de baja fidelidad de interfaces(mockups): documentación con todas las interfaces diseñadas mediante mockups | 22.4d? | 2016-09-12 09:00 A | 2016-10-19 19:00 |  | 73% | 13d | start no earlier than 2016-09-12 09:00 |
| 14 | 1.4 | **NM** | 22.4d? | 2016-09-12 09:00 A | 2016-10-19 19:00 |  | 73% | 13d |  |
| 15 |  | Diseño funcional y visualización del proyecto: documentación con la especificación de todas las funcionalidades del sistema | 22.4d? | 2016-09-12 09:00 A | 2016-10-19 19:00 |  | 73% | 13d | start no earlier than 2016-09-12 09:00 |
| 16 |  | Especificación y visualización de elementos y tecnologías a utilizar, por ejemplo mediante la definición de una infografía del proyecto | 22.4d? | 2016-09-12 09:00 A | 2016-10-19 19:00 |  | 73% | 13d | start no earlier than 2016-09-12 09:00 |
| 18 | 2 | **HITO 1** | 37d | 2016-10-20 09:00 | 2016-12-22 11:00 | 2 |  | 13d |  |
| 19 | 2.1 | **Iteración 1** | 4.7d | 2016-10-20 09:00 | 2016-10-27 18:00 | 2 |  | 10.9d |  |
| 20 | 2.1.1 | **PM** | 1.1d | 2016-10-20 09:00 | 2016-10-21 12:00 |  |  | 14.5d |  |
| 21 | 2.1.1.1 | **Planificación** | 1.1d | 2016-10-20 09:00 | 2016-10-21 12:00 |  |  | 14.5d |  |
| 22 |  | Detallar plan iteraciones del mes de Noviembre | 5h | 2016-10-20 09:00 | 2016-10-20 16:00 |  |  | 14.5d |  |
| 23 |  | Creación Subtareas y precedencias en Project | 6h | 2016-10-20 16:00 | 2016-10-21 12:00 | 22 |  | 14.5d |  |
| 24 | 2.1.2 | **SMBI** | 0.3d | 2016-10-24 16:00 | 2016-10-24 19:00 |  |  | 10.9d |  |
| 25 |  | Diseñar diagrama preliminar del Modelo de BD | 3h | 2016-10-24 16:00 | 2016-10-24 19:00 |  |  | 10.9d | finish no earlier than 2016-10-24 19:00 |
| 26 | 2.1.3 | **PD** | 2.3d | 2016-10-25 09:00 | 2016-10-27 18:00 |  |  | 10.9d |  |
| 27 |  | Diseño logo | 8h | 2016-10-25 09:00 | 2016-10-25 19:00 | 25 |  | 10.9d |  |
| 28 |  | Crear video de logo | 15h | 2016-10-26 09:00 | 2016-10-27 18:00 | 27 |  | 10.9d |  |
| 29 | 2.1.4 | **Otras tareas** | 0.4d | 2016-10-25 09:00 | 2016-10-25 13:00 |  |  | 12.8d |  |
| 30 |  | Corregir diagramas Caso de uso | 4h | 2016-10-25 09:00 | 2016-10-25 13:00 | 25 |  | 12.8d |  |
| 31 | 2.2 | **Iteración 2** | 7.75d | 2016-11-03 09:00 | 2016-11-16 16:30 | 19 |  | 1.05d |  |
| 32 | 2.2.1 | **PM** | 6.75d | 2016-11-03 09:00 | 2016-11-15 12:30 |  |  | 2.05d |  |
| 33 |  | Ordenar tareas por iteraciones | 5h | 2016-11-03 09:00 | 2016-11-03 16:00 |  |  | 7.7d | start no earlier than 2016-11-03 09:00 |
| 34 | 2.2.1.2 | **Seguimiento** | 0.35d | 2016-11-15 09:00 | 2016-11-15 12:30 |  |  | 1.2d |  |
| 35 |  | Registrar de tiempos y % de realización de tareas en Project | 1h | 2016-11-15 09:00 | 2016-11-15 10:00 |  |  | 2.2d | start no earlier than 2016-11-15 09:00 |
| 36 |  | Comparar la planificación prevista y real en Project hito 1. | 1h | 2016-11-15 10:00 | 2016-11-15 11:00 | 35 |  | 2.2d | start no earlier than 2016-11-15 09:00 |
| 37 |  | Confeccionar Informes de iteración e informe resumen de Hito 1 | 3.5h | 2016-11-15 09:00 | 2016-11-15 12:30 |  |  | 1.2d | start no earlier than 2016-11-15 09:00 |
| 38 | 2.2.2 | **SDM** | 2.95d | 2016-11-11 09:00 | 2016-11-16 16:30 |  |  | 1.05d |  |
| 39 |  | Actualizar Lean Canvas | 2h | 2016-11-14 09:00 | 2016-11-14 11:00 | 46 |  | 3d | start no earlier than 2016-11-14 09:00 |
| 40 |  | Actualizar Presupuesto SDM y ELE | 2.5h | 2016-11-16 12:00 | 2016-11-16 16:30 | 48 |  | 1.05d | start no earlier than 2016-11-15 09:00 |
| 41 | 2.2.2.3 | **Hacer Documento de Especificacion** | 2.25d | 2016-11-11 09:00 | 2016-11-15 17:30 |  |  | 1.75d |  |
| 42 | 2.2.2.3.1 | **Definir objetivo SDM** | 2.25d | 2016-11-11 09:00 | 2016-11-15 17:30 |  |  | 1.75d |  |
| 43 |  | Explicar CMS en nuestro proyecto | 2h | 2016-11-14 17:00 | 2016-11-14 19:00 | 33 |  | 2d | finish no earlier than 2016-11-14 19:00 |
| 44 |  | Explicar Difusion y Posicionamiento Web de nuestro proyecto | 3h | 2016-11-14 17:00 | 2016-11-15 10:00 |  |  | 2.3d | start no earlier than 2016-11-14 17:00 |
| 45 |  | Explicar transformación de formatos en el proyecto | 4h | 2016-11-15 09:00 | 2016-11-15 13:00 | 43 |  | 2d | start no earlier than 2016-11-14 17:00 |
| 46 |  | Definir API's de terceros y propios a usar en el proyecto | 7h | 2016-11-11 09:00 | 2016-11-11 18:00 |  |  | 3.1d | start no earlier than 2016-11-11 09:00 |
| 47 |  | Explicar uso de OAuth2.0(Delegar autorizacion) | 3h | 2016-11-15 12:30 | 2016-11-15 17:30 | 37 |  | 1.2d | start no earlier than 2016-11-14 17:00 |
| 48 |  | Hacer PowerPoint | 3h | 2016-11-16 09:00 | 2016-11-16 12:00 | 47 |  | 1.05d | start no earlier than 2016-11-16 09:00 |
| 49 | 2.2.3 | **SMA** | 1.2d | 2016-11-08 09:00 | 2016-11-09 13:00 |  |  | 5.2d |  |
| 50 |  | Hacer nuevos Mockups | 12h | 2016-11-08 09:00 | 2016-11-09 13:00 |  |  | 5.2d | start no earlier than 2016-11-08 09:00 |
| 51 | 2.2.4 | **NM** | 0.35d | 2016-11-07 09:00 | 2016-11-07 12:30 |  |  | 6.85d |  |
| 52 |  | Definir metricas | 3.5h | 2016-11-07 09:00 | 2016-11-07 12:30 |  |  | 6.85d | start no earlier than 2016-11-07 09:00 |
| 53 |  | Especificar elementos y tecnologías a utilizar | 3.5h | 2016-11-07 09:00 | 2016-11-07 12:30 |  |  | 6.85d | start no earlier than 2016-11-07 09:00 |
| 54 | 2.3 | **Iteración 3** | 8.8d | 2016-11-17 09:00 | 2016-11-30 19:00 | 31 |  | 0d |  |
| 55 | 2.3.1 | **PM** | 8d | 2016-11-18 09:00 | 2016-11-30 19:00 |  |  | 0d |  |
| 56 | 2.3.1.1 | **Documento de Planificación** | 6.3d | 2016-11-18 09:00 | 2016-11-28 18:00 |  |  | 1.7d |  |
| 57 |  | Hacer aparatado de Propósito | 2h | 2016-11-18 09:00 | 2016-11-18 11:00 |  |  | 7.4d | start no earlier than 2016-11-18 09:00 |
| 58 |  | Hacer aparatado de Análisis de riesgos | 4h | 2016-11-18 11:00 | 2016-11-18 17:00 | 57 |  | 7.4d | start no earlier than 2016-11-18 09:00 |
| 59 |  | Revisar y añadir Análisis de riesgos | 4h | 2016-11-28 09:00 | 2016-11-28 13:00 |  |  | 1.7d | start no earlier than 2016-11-28 09:00 |
| 60 |  | Hacer aparatado de Estimación de costes | 3h | 2016-11-18 09:00 | 2016-11-18 12:00 |  |  | 7.7d | start no earlier than 2016-11-18 09:00 |
| 61 |  | Hacer aparatado de Agenda del proyecto | 3h | 2016-11-18 16:00 | 2016-11-18 19:00 |  |  | 7.2d | start no earlier than 2016-11-18 16:00 |
| 62 |  | Revisar y modificar Agenda del proyecto | 3h | 2016-11-28 15:00 | 2016-11-28 18:00 | 59 |  | 1.7d |  |
| 63 |  | Hacer aparatado de Mecanismos de seguimiento y control | 2.5h | 2016-11-18 16:00 | 2016-11-18 18:30 |  |  | 6.85d | start no earlier than 2016-11-18 16:00 |
| 64 | 2.3.1.2 | **Seguimiento** | 1.6d | 2016-11-29 09:00 | 2016-11-30 19:00 |  |  | 0d |  |
| 65 |  | Registrar de tiempos y % de realización de tareas en Project | 1h | 2016-11-29 09:00 | 2016-11-29 10:00 |  |  | 1.5d | start no earlier than 2016-11-29 09:00 |
| 66 |  | Comparar la planificación prevista y real en Project hito 1. | 1h | 2016-11-30 18:00 | 2016-11-30 19:00 |  |  | 0d | finish no earlier than 2016-11-30 19:00 |
| 67 |  | Confeccionar Informes de iteración e informe resumen de Hito 1 | 2.5h | 2016-11-30 16:30 | 2016-11-30 19:00 |  |  | 0d | finish no earlier than 2016-11-30 19:00 |
| 68 | 2.3.2 | **SMBI** | 8.8d | 2016-11-17 09:00 | 2016-11-30 19:00 |  |  | 0d |  |
| 69 | 2.3.2.1 | **Infraestructura** | 2.4d | 2016-11-17 09:00 | 2016-11-19 19:00 |  |  | 0.2d |  |
| 70 |  | Instalar los elementos de backend y seguridad | 8h | 2016-11-17 09:00 | 2016-11-17 19:00 |  |  | 0.8d | start no earlier than 2016-11-17 09:00 |
| 71 |  | Configurar de los elementos de backend y seguridad | 10h | 2016-11-18 17:00 | 2016-11-19 19:00 | 70 |  | 0.2d | finish no earlier than 2016-11-19 19:00 |
| 72 | 2.3.2.2 | **Investigación** | 6.2d | 2016-11-21 11:00 | 2016-11-30 19:00 |  |  | 0d |  |

| ID | WBS | Task | Duration | Start | Finish | Predecessors | Total float | Constraint |
| --- | --- | --- | --- | --- | --- | --- | --- | --- |
| 73 |  | Investigar sobre las tecnologías a usar y lenguaje de programación del backend | 62h | 2016-11-21 11:00 | 2016-11-30 19:00 | 71 | 0d | finish no earlier than 2016-11-30 19:00 |
| 74 | 2.3.3 | **SMA** | 0.4d | 2016-11-28 15:00 | 2016-11-28 19:00 |  | 1.6d |  |
| 75 | 2.3.3.1 | **Diagrama de flujo de interfaces** | 0.4d | 2016-11-28 15:00 | 2016-11-28 19:00 |  | 1.6d |  |
| 76 |  | Definir interfaces y navegacion entre ellas | 4h | 2016-11-28 15:00 | 2016-11-28 19:00 | 63 | 1.6d | finish no earlier than 2016-11-28 19:00 |
| 77 | 2.3.4 | **NM** | 0.4d | 2016-11-21 09:00 | 2016-11-21 13:00 |  | 5.7d |  |
| 78 | 2.3.4.1 | **Definición** | 0.4d | 2016-11-21 09:00 | 2016-11-21 13:00 |  | 5.7d |  |
| 79 |  | Definir indicadores principales del proyecto | 4h | 2016-11-21 09:00 | 2016-11-21 13:00 | 70 | 5.7d | start no earlier than 2016-11-21 09:00 |
| 80 | 2.3.5 | **ELE** | 0.3d | 2016-11-21 15:00 | 2016-11-21 18:00 |  | 5.7d |  |
| 81 | 2.3.5.1 | **Tarea 1** | 0.3d | 2016-11-21 15:00 | 2016-11-21 18:00 |  | 5.7d |  |
| 82 |  | Realizar MOOC y Lean Canvas | 3h | 2016-11-21 15:00 | 2016-11-21 18:00 | 79 | 5.7d | start no earlier than 2016-11-17 09:00 |
| 83 | 2.4 | **Iteracion 4** | 7.4d | 2016-12-01 09:00 | 2016-12-14 11:00 | 54 | 0d |  |
| 84 | 2.4.1 | **PM** | 1d | 2016-12-13 09:00 | 2016-12-14 11:00 |  | 94.8d |  |
| 85 | 2.4.1.1 | **Seguimiento** | 0.6d | 2016-12-13 09:00 | 2016-12-13 17:00 |  | 94.8d |  |
| 86 |  | Registrar de tiempos y % de realización de tareas en Project | 2h | 2016-12-13 09:00 | 2016-12-13 11:00 |  | 94.8d | start no earlier than 2016-12-13 09:00 |
| 87 |  | Comparar la planificación prevista y real en Project hito 1. | 2h | 2016-12-13 11:00 | 2016-12-13 13:00 | 86 | 94.8d | start no earlier than 2016-12-01 09:00 |
| 88 |  | Confeccionar Informes de iteración e informe resumen de Hito 1 | 2h | 2016-12-13 15:00 | 2016-12-13 17:00 | 87 | 94.8d | start no earlier than 2016-12-01 09:00 |
| 89 | 2.4.1.2 | **Ejercicio Propuesto** | 0.4d | 2016-12-13 17:00 | 2016-12-14 11:00 |  | 94.8d |  |
| 90 |  | Aplicar el modelo EVA en Project | 4h | 2016-12-13 17:00 | 2016-12-14 11:00 | 88 | 94.8d |  |
| 91 | 2.4.2 | **SMBI** | 3.6d | 2016-12-06 15:00 | 2016-12-12 19:00 |  | 95.8d |  |
| 92 | 2.4.2.1 | **Investigación** | 1.2d | 2016-12-06 15:00 | 2016-12-07 19:00 |  | 95.8d |  |
| 93 |  | Investigar sobre las tecnologías a usar y lenguaje de programación del backend | 12h | 2016-12-06 15:00 | 2016-12-07 19:00 |  | 95.8d | finish no earlier than 2016-12-07 19:00 |
| 94 | 2.4.2.2 | **Configuración de los elemenos de backend** | 1.4d | 2016-12-08 09:00 | 2016-12-09 17:00 | 92 | 95.8d |  |
| 95 |  | Diseñar BBDD - Primer diseño | 3h | 2016-12-08 09:00 | 2016-12-08 12:00 |  | 96.9d | start no earlier than 2016-12-01 09:00 |
| 96 |  | Diseñar BBDD - Segundo diseño | 3h | 2016-12-08 09:00 | 2016-12-08 12:00 |  | 96.9d | start no earlier than 2016-12-05 09:00 |
| 97 |  | Diseñar BBDD - Definitivo | 6h | 2016-12-08 09:00 | 2016-12-08 17:00 |  | 96.6d | start no earlier than 2016-12-06 09:00 |
| 98 |  | Gestionar la transaccionalidad de la BD con lenguaje Java | 14h | 2016-12-08 09:00 | 2016-12-09 17:00 | 93 | 95.8d | start no earlier than 2016-12-02 09:00 |
| 99 | 2.4.2.3 | **Integracion modelos MySQL en JAVA** | 1d | 2016-12-09 17:00 | 2016-12-12 19:00 | 94 | 95.8d |  |
| 100 |  | Investigar e Integrar tablas asignadas | 10h | 2016-12-09 17:00 | 2016-12-12 19:00 | 98 | 95.8d |  |
| 101 |  | Integrar tablas asignadas | 5h | 2016-12-09 17:00 | 2016-12-12 12:00 |  | 96.3d |  |
| 102 |  | Integrar tablas asignadas | 5h | 2016-12-09 17:00 | 2016-12-12 12:00 | 95 | 96.3d |  |
| 103 |  | Integrar tablas asignadas | 5h | 2016-12-09 17:00 | 2016-12-12 12:00 | 96 | 96.3d |  |
| 104 |  | Integrar tablas asignadas | 5h | 2016-12-09 17:00 | 2016-12-12 12:00 | 97 | 96.3d |  |
| 105 | 2.4.3 | **SMA** | 0.4d | 2016-12-02 09:00 | 2016-12-02 13:00 |  | 101d |  |
| 106 | 2.4.3.1 | **Documentación** | 0.4d | 2016-12-02 09:00 | 2016-12-02 13:00 |  | 101d |  |
| 107 |  | Explicar el mapa de navegación entre interfaces | 4h | 2016-12-02 09:00 | 2016-12-02 13:00 |  | 101d | start no earlier than 2016-12-02 09:00 |
| 108 | 2.4.4 | **NM** | 0.3d | 2016-12-02 09:00 | 2016-12-02 12:00 |  | 101.1d |  |
| 109 | 2.4.4.1 | **Contextualización** | 0.3d | 2016-12-02 09:00 | 2016-12-02 12:00 |  | 101.1d |  |
| 110 |  | Contextualizar modelo de datos | 3h | 2016-12-02 09:00 | 2016-12-02 12:00 |  | 101.1d | start no earlier than 2016-12-02 09:00 |
| 111 | 2.4.5 | **TAG** | 1.9d | 2016-12-01 09:00 | 2016-12-05 12:00 |  | 0d |  |
| 112 | 2.4.5.1 | **Visualización** | 0.8d? | 2016-12-01 09:00 | 2016-12-01 19:00 |  |  |  |
| 113 |  | Hacer un visualizador OpenGL 4.X simple, con datos por programa. Shader básico. | 3h | 2016-12-05 09:00 | 2016-12-05 12:00 | 110 | 101.3d | start no earlier than 2016-12-05 09:00 |
| 114 | 2.5 | **Iteracion 5** | 4.8d | 2016-12-14 11:00 | 2016-12-22 11:00 | 83 | 91d |  |
| 115 | 2.5.1 | **PM** | 1d | 2016-12-21 09:00 | 2016-12-22 11:00 |  | 91d |  |
| 116 | 2.5.1.1 | **Seguimiento** | 1d | 2016-12-21 09:00 | 2016-12-22 11:00 |  | 91d |  |
| 117 |  | Registrar de tiempos y % de realización de tareas en Project | 4h | 2016-12-21 09:00 | 2016-12-21 13:00 |  | 91d | start no earlier than 2016-12-21 09:00 |
| 118 |  | Comparar la planificación prevista y real en Project hito 1. | 4h | 2016-12-21 15:00 | 2016-12-21 19:00 | 117 | 91d | start no earlier than 2016-12-20 09:00 |
| 119 |  | Confeccionar Informes de iteración e informe resumen de Hito 1 | 2h | 2016-12-22 09:00 | 2016-12-22 11:00 | 118 | 91d | start no earlier than 2016-12-21 09:00 |
| 120 | 2.5.2 | **SMBI** | 3.9d | 2016-12-14 11:00 | 2016-12-21 10:00 |  | 91.9d |  |
| 121 | 2.5.2.1 | **Pruebas** | 0.3d | 2016-12-14 11:00 | 2016-12-14 16:00 |  | 95.5d |  |
| 122 |  | Hacer pruebas unitarias | 3h | 2016-12-14 11:00 | 2016-12-14 16:00 |  | 95.5d |  |
| 123 | 2.5.2.2 | **Desarrollo** | 1.7d | 2016-12-19 09:00 | 2016-12-21 10:00 |  | 91.9d |  |
| 124 |  | Implementación API RESTFULL | 6h | 2016-12-19 09:00 | 2016-12-19 17:00 |  | 92.9d | start no earlier than 2016-12-19 09:00 |
| 125 |  | Hacer documentacion | 1h | 2016-12-21 09:00 | 2016-12-21 10:00 | 124 | 91.9d | start no earlier than 2016-12-21 09:00 |
| 126 | 3 | **HITO 2** | 21.6d | 2016-12-26 09:00 | 2017-01-30 19:00 |  |  |  |
| 127 | 3.1 | **Iteración 1** | 8.15d? | 2016-12-26 09:00 | 2017-01-09 10:30 |  | 6.35d |  |
| 128 | 3.1.1 | **PM** | 8.15d? | 2016-12-26 09:00 | 2017-01-09 10:30 |  | 6.35d |  |
| 129 | 3.1.1.1 | **Especificación** | 0.2d | 2016-12-26 09:00 | 2016-12-26 11:00 |  | 13.35d |  |
| 130 |  | Revisar especificación proyecto. | 2h | 2016-12-26 09:00 | 2016-12-26 11:00 |  | 13.35d |  |
| 131 | 3.1.1.2 | **Estimación** | 0.3d | 2016-12-27 09:00 | 2016-12-27 12:00 | 129 | 12.75d |  |
| 132 |  | Reestimar proyecto | 3h | 2016-12-27 09:00 | 2016-12-27 12:00 | 130 | 12.75d | start no earlier than 2016-12-27 09:00 |
| 133 | 3.1.1.3 | **Planificación** | 0.65d | 2016-12-27 12:00 | 2016-12-28 10:30 | 131 | 12.75d |  |
| 134 | 3.1.1.3.1 | **Detallar plan iteraciones del mes de Enero** | 0.65d | 2016-12-27 12:00 | 2016-12-28 10:30 |  | 12.75d |  |
| 135 |  | Creación Subtareas y precedencias en Project | 3.5h | 2016-12-27 12:00 | 2016-12-27 17:30 | 132 | 12.75d | start no earlier than 2016-12-27 09:00 |
| 136 |  | Asignar recursos a las tareas en Project | 3h | 2016-12-27 17:30 | 2016-12-28 10:30 | 135 | 12.75d | start no earlier than 2016-12-27 09:00 |
| 137 | 3.1.1.4 | **Elaborar la presentación del Hito 1** | 0.15d? | 2017-01-09 09:00 | 2017-01-09 10:30 |  | 6.35d |  |
| 138 |  | Hacer PowerPoint | 1.5h? | 2017-01-09 09:00 | 2017-01-09 10:30 |  | 6.35d | start no earlier than 2017-01-09 09:00 |
| 139 | 3.1.2 | **SMBI** | 1.5d | 2016-12-30 12:00 | 2017-01-03 11:00 |  | 9.5d |  |
| 140 | 3.1.2.1 | **Cambio tecnología** | 1.5d | 2016-12-30 12:00 | 2017-01-03 11:00 |  | 9.5d |  |
| 141 |  | Migrar lenguaje de desarrollo a PHP | 5h | 2016-12-30 12:00 | 2016-12-30 19:00 |  | 10.5d | finish no earlier than 2016-12-30 19:00 |
| 142 |  | Aprender uso nueva tecnología | 10h | 2017-01-02 09:00 | 2017-01-03 11:00 |  | 9.5d | start no earlier than 2017-01-02 09:00 |

| ID | WBS | Task | Duration | Start | Finish | Predecessors | Total float | Constraint |
| --- | --- | --- | --- | --- | --- | --- | --- | --- |
| 143 | 3.1.3 | **NM** | 0.4d | 2016-12-26 09:00 | 2016-12-26 13:00 |  | 14.1d |  |
| 144 |  | Modelo para la integración de datos | 4h | 2016-12-26 09:00 | 2016-12-26 13:00 |  | 14.1d |  |
| 145 | 3.2 | **Iteración 2** | 13.45d | 2017-01-09 10:30 | 2017-01-30 19:00 | 127 | -4d |  |
| 146 | 3.2.1 | **SDM** | 4d | 2017-01-09 10:30 | 2017-01-16 10:30 |  | 4.95d |  |
| 147 | 3.2.1.1 | **Memoria ABP** | 2.75d | 2017-01-09 10:30 | 2017-01-12 16:00 |  | 6.2d |  |
| 148 | 3.2.1.1.1 | **Apartado 1** | 0.2d | 2017-01-09 10:30 | 2017-01-09 12:30 |  | 7.3d |  |
| 149 |  | Describir proyecto | 2h | 2017-01-09 10:30 | 2017-01-09 12:30 |  | 7.3d | start no earlier than 2017-01-09 10:30 |
| 150 | 3.2.1.1.2 | **Apartado 2** | 0.2d | 2017-01-09 12:30 | 2017-01-09 16:30 | 148 | 7.3d |  |
| 151 |  | Explicar diseño de aplicación | 2h | 2017-01-09 12:30 | 2017-01-09 16:30 |  | 7.3d | start no earlier than 2017-01-09 09:00 |
| 152 | 3.2.1.1.3 | **Apartado 3** | 0.3d | 2017-01-11 09:30 | 2017-01-11 12:30 | 150 | 6.2d |  |
| 153 |  | Explicar marco tecnológico | 3h | 2017-01-11 09:30 | 2017-01-11 12:30 |  | 6.2d | start no earlier than 2017-01-09 09:00 |
| 154 | 3.2.1.1.4 | **Descripcion de objetivos SDM en ABP** | 0.6d | 2017-01-11 12:30 | 2017-01-12 10:30 | 152 | 6.2d |  |
| 155 |  | Explicar uso de CMS | 2h | 2017-01-11 12:30 | 2017-01-11 16:30 | 149 | 6.2d | start no earlier than 2017-01-09 09:00 |
| 156 |  | Explicar uso de posicionamiento y difusion | 5h | 2017-01-11 12:30 | 2017-01-12 09:30 | 151 | 6.3d | start no earlier than 2017-01-09 09:00 |
| 157 |  | Usar transformacion de formatos | 4h | 2017-01-11 16:30 | 2017-01-12 10:30 | 155 | 6.2d | start no earlier than 2017-01-09 09:00 |
| 158 |  | Explicar el consumo de API's | 2h | 2017-01-11 12:30 | 2017-01-11 16:30 | 153 | 6.5d | start no earlier than 2017-01-09 09:00 |
| 159 |  | Explicar la autorizacion Oauth 2.0 | 1h | 2017-01-11 16:30 | 2017-01-11 17:30 | 158 | 6.5d | start no earlier than 2017-01-11 09:00 |
| 160 | 3.2.1.1.5 | **Apartado 5** | 0.15d | 2017-01-12 10:30 | 2017-01-12 12:00 | 154 | 6.2d |  |
| 161 |  | Explicar objetivos cumplidos | 1.5h | 2017-01-12 10:30 | 2017-01-12 12:00 | 157 | 6.2d | start no earlier than 2017-01-12 09:00 |
| 162 | 3.2.1.1.6 | **Conclusión** | 0.1d | 2017-01-12 12:00 | 2017-01-12 13:00 | 160 | 6.2d |  |
| 163 |  | Escribir conclusion de la memoria | 1h | 2017-01-12 12:00 | 2017-01-12 13:00 | 156 | 6.2d |  |
| 164 | 3.2.1.1.7 | **Apartado 7** | 0.1d | 2017-01-12 15:00 | 2017-01-12 16:00 | 162 | 6.2d |  |
| 165 |  | Explicar Reparto del trabajo | 1h | 2017-01-12 15:00 | 2017-01-12 16:00 | 161 | 6.2d |  |
| 166 | 3.2.1.2 | **Presentación** | 0.15d | 2017-01-16 09:00 | 2017-01-16 10:30 |  | 4.95d |  |
| 167 |  | Hacer powerpoint para presentacion | 1.5h | 2017-01-16 09:00 | 2017-01-16 10:30 |  | 4.95d | start no earlier than 2017-01-16 09:00 |
| 168 | 3.2.2 | **SMA** | 0.5d | 2017-01-16 10:30 | 2017-01-16 17:30 | 146 | 4.95d |  |
| 169 |  | Documento de SEO: definición de aspectos SEO como son palabras clave, estilos de textos, posiciones de texto, como se va a potenciar esto (landing, blog, etc…), URL amigables | 5h | 2017-01-16 10:30 | 2017-01-16 17:30 |  | 4.95d |  |
| 170 | 3.2.3 | **PM** | 0.8d | 2017-01-28 09:00 | 2017-01-28 19:00 |  | -3.2d |  |
| 171 | 3.2.3.1 | **Seguimiento** | 0.8d | 2017-01-28 09:00 | 2017-01-28 19:00 |  | -3.2d |  |
| 172 |  | Registrar de tiempos y % de realización de tareas en Project | 5h | 2017-01-28 09:00 | 2017-01-28 16:00 |  | -3.2d | start no earlier than 2017-01-28 09:00 |
| 173 |  | Comparar la planificación prevista y real en Project hito 2 | 3h | 2017-01-28 16:00 | 2017-01-28 19:00 | 172 | -3.2d | start no earlier than 2017-01-28 09:00 |
| 174 |  | Confeccionar Informes de iteración e informe resumen de Hito 2 | 2h | 2017-01-30 09:00 | 2017-01-30 11:00 | 173 | -3.4d | start no earlier than 2017-01-28 09:00 |
| 175 | 3.2.4 | **SMBI** | 13.45d | 2017-01-09 10:30 | 2017-01-30 19:00 |  | -4d |  |
| 176 | 3.2.4.1 | **Pruebas** | 3.55d | 2017-01-09 10:30 | 2017-01-13 16:00 |  | 5.9d |  |
| 177 |  | Hacer pruebas de integración | 15h | 2017-01-09 10:30 | 2017-01-11 09:30 |  | 6.35d | start no earlier than 2017-01-09 09:00 |
| 178 |  | Hacer pruebas funcionales | 10h | 2017-01-11 16:30 | 2017-01-12 18:30 | 177 | 5.95d |  |
| 179 |  | Hacer pruebas de regresión | 5h | 2017-01-13 09:00 | 2017-01-13 16:00 | 178 | 5.9d | start no earlier than 2017-01-13 09:00 |
| 180 |  | Hacer pruebas de carga y rendimiento | 1d? | 2017-01-28 17:00 | 2017-01-30 19:00 |  | -4d | finish no earlier than 2017-01-30 19:00 |
| 181 | 3.2.4.2 | **Validación** | 1d | 2017-01-28 17:00 | 2017-01-30 19:00 |  | -4d |  |
| 182 |  | Validar el funcionamiento del backend (Pruebas API Rest Full) | 10h | 2017-01-28 17:00 | 2017-01-30 19:00 |  | -4d | finish no earlier than 2017-01-30 19:00 |
| 183 | 3.2.5 | **TAG** | 0.8d | 2017-01-30 09:00 | 2017-01-30 19:00 |  | -4d |  |
| 184 | 3.2.5.1 | **Gestión de recursos** | 0.8d | 2017-01-30 09:00 | 2017-01-30 19:00 |  | -4d |  |
| 185 |  | Parser de objetos en multiples formatos, salida en modo texto | 8h | 2017-01-30 09:00 | 2017-01-30 19:00 |  | -4d | finish no earlier than 2017-01-30 19:00 |
| 186 | 3.2.5.2 | **Visualización** | 4d? | 2017-01-25 09:00 | 2017-01-30 19:00 |  | -4d |  |
| 187 |  | Visualizador OpenGL 4.X simple, con datos por programa. Shader básico. | 40h? | 2017-01-25 09:00 | 2017-01-30 19:00 |  | -4d | finish no earlier than 2017-01-30 19:00 |
| 188 | 3.2.6 | **NM** | 0.25d | 2017-01-19 09:00 | 2017-01-19 11:30 |  | 2.95d |  |
| 189 |  | Incorporación de open data, API's, y otras fuentes heterogéneas | 2.5h | 2017-01-19 09:00 | 2017-01-19 11:30 |  | 2.95d | start no earlier than 2017-01-19 09:00 |
| 190 | 3.2.7 | **SMA** | 4d | 2017-01-25 09:00 | 2017-01-30 19:00 |  | -4d |  |
| 191 |  | Integración Front-Back: documento de relación entre back-end y front-end | 2.4d | 2017-01-25 09:00 | 2017-01-27 19:00 |  | -2.4d | finish no earlier than 2017-01-27 19:00 |
| 192 |  | Arquitectura tecnológica: documento sobre toma de decisión, versiones, codificación, internacionalización (varias lenguas), instalación sobre servidor de frameworks... | 2h | 2017-01-27 09:00 | 2017-01-27 11:00 |  | -1.8d | start no earlier than 2017-01-27 09:00 |
| 193 |  | Guía de estilos: documento detallando la imagen corporativa del servicio (colores, estilos, esencia para la experiencia de usuario, consideraciones de usabilidad y accesibilidad) | 2h | 2017-01-30 17:00 | 2017-01-30 19:00 |  | -4d | finish no earlier than 2017-01-30 19:00 |
| 194 | 4 | **HITO 3** | 11.2d? | 2017-01-30 19:00 | 2017-02-17 19:00 | 126 | -4d |  |
| 195 | 4.1 | **Iteracion 1** | 8d | 2017-01-31 09:00 | 2017-02-12 19:00 |  |  |  |
| 196 | 4.1.1 | **PM** | 0d | 2017-01-31 09:00 | 2017-01-31 09:00 |  | -3d |  |
| 197 | 4.1.1.1 | **Planificación** | 0d | 2017-01-31 09:00 | 2017-01-31 09:00 |  |  |  |
| 198 | 4.1.1.1.1 | **Detallar plan iteraciones del mes de Febrero-Marzo** | 0d | 2017-01-31 09:00 | 2017-01-31 09:00 |  |  |  |
| 199 |  | Creación Subtareas y precedencias en Project | 0d | 2017-01-31 09:00 | 2017-01-31 09:00 |  | -3d |  |
| 200 |  | Asignar recursos a las tareas en Project. | 0d | 2017-01-31 09:00 | 2017-01-31 09:00 |  | -3d |  |
| 201 | 4.1.1.2 | **Seguimiento** | 0d | 2017-01-31 09:00 | 2017-01-31 09:00 |  |  |  |
| 202 |  | Registrar de tiempos y % de realización de tareas en Project | 0d | 2017-01-31 09:00 | 2017-01-31 09:00 |  | -3d |  |
| 203 |  | Comparar la planificación prevista y real en Project hito 3 | 0d | 2017-01-31 09:00 | 2017-01-31 09:00 |  | -3d |  |
| 204 |  | Confeccionar Informes de iteración e informe resumen de Hito 3 | 0d | 2017-01-31 09:00 | 2017-01-31 09:00 |  | -3d |  |
| 205 | 4.1.1.3 | **Presentación** | 0d | 2017-01-31 09:00 | 2017-01-31 09:00 |  |  |  |
| 206 |  | Elaborar la presentación del Hito 3 | 0d | 2017-01-31 09:00 | 2017-01-31 09:00 |  | -3d |  |
| 207 |  | Exponer la presentación del Hito 3 | 0d | 2017-01-31 09:00 | 2017-01-31 09:00 |  | -3d |  |
| 208 | 4.1.2 | **PD** | 0.5d? | 2017-02-01 09:00 | 2017-02-01 16:00 |  |  |  |
| 209 |  | Cartel del proyecto | 5h? | 2017-02-01 09:00 | 2017-02-01 16:00 |  | 65.9d | start no earlier than 2017-02-01 09:00 |
| 210 | 4.1.3 | **ELE** | 2d? | 2017-01-31 09:00 | 2017-02-02 13:00 |  | -5d |  |
| 211 | 4.1.3.1 | **Tarea 2** | 2d? | 2017-01-31 09:00 | 2017-02-02 13:00 |  | -5d |  |
| 212 |  | Hacer guión | 1d? | 2017-01-31 09:00 | 2017-02-01 11:00 |  | -4d |  |

| ID | WBS | Task | Duration | Start | Finish | Predecessors | Total float |
| --- | --- | --- | --- | --- | --- | --- | --- |
| 213 |  | Hacer guión gráfico | 1d? | 2017-02-01 11:00 | 2017-02-02 13:00 |  | -5d |
| 214 | 4.1.4 | **SMA** | 1d? | 2017-01-31 09:00 | 2017-02-01 11:00 |  | -4d |
| 215 |  | Guia de estilos | 1d? | 2017-01-31 09:00 | 2017-02-01 11:00 |  | -4d |
| 216 | 4.1.5 | **NM** | 1d? | 2017-01-31 09:00 | 2017-02-01 11:00 |  |  |
| 217 |  | Despliegue de la infraestructura del proyecto | 1d? | 2017-01-31 09:00 | 2017-02-01 11:00 |  | -4d |
| 218 | 4.2 | **Iteración 2** | 1d? | 2017-02-13 09:00 | 2017-02-14 11:00 | 195 |  |
| 219 | 4.2.1 | **NM** | 1d? | 2017-02-13 09:00 | 2017-02-14 11:00 |  |  |
| 220 |  | Definición de cuadros de mando e implementación | 1d? | 2017-02-13 09:00 | 2017-02-14 11:00 |  | -10.2d |
| 221 | 4.2.2 | **ELE** | 1d? | 2017-02-13 09:00 | 2017-02-14 11:00 |  |  |
| 222 | 4.2.2.1 | **Tarea 3** | 1d? | 2017-02-13 09:00 | 2017-02-14 11:00 |  | -10.2d |
| 223 |  | Definir tecnologias | 1d? | 2017-02-13 09:00 | 2017-02-14 11:00 |  | -10.2d |
| 224 | 4.2.3 | **TAG** | 1d? | 2017-02-13 09:00 | 2017-02-14 11:00 |  | -10.2d |
| 225 | 4.2.3.1 | **Árbol de la escena** | 1d? | 2017-02-13 09:00 | 2017-02-14 11:00 |  | -10.2d |
| 226 |  | Tipos de datos para nodos (completo) y entidades (sólo clase padre; clases hijas sin contenido) | 1d? | 2017-02-13 09:00 | 2017-02-14 11:00 |  | -10.2d |
| 227 |  | Construcción del árbol | 1d? | 2017-02-13 09:00 | 2017-02-14 11:00 |  | -10.2d |
| 228 |  | Recorrido del arbol | 1d? | 2017-02-13 09:00 | 2017-02-14 11:00 |  | -10.2d |
| 229 |  | Salida en modo texto | 1d? | 2017-02-13 09:00 | 2017-02-14 11:00 |  | -10.2d |
| 230 |  | Tipos de datos para entidades de tipo transformacion | 1d? | 2017-02-13 09:00 | 2017-02-14 11:00 |  | -10.2d |
| 231 |  | Tipos de datos para entidades de tipo cámara y luz (cámaras y luces de dos tipos). Salida en modo texto | 1d? | 2017-02-13 09:00 | 2017-02-14 11:00 |  | -10.2d |
| 232 |  | Tipos de datos para entidades de tipo malla. Salida en modo texto | 1d? | 2017-02-13 09:00 | 2017-02-14 11:00 |  | -10.2d |
| 233 |  | Tipos de datos para entidades de tipo animación (cuadro a cuadro). Salida en modo texto | 1d? | 2017-02-13 09:00 | 2017-02-14 11:00 |  | -10.2d |
| 234 | 4.3 | **Iteracion 3** | 1d? | 2017-02-14 11:00 | 2017-02-15 13:00 | 218 |  |
| 235 | 4.3.1 | **SMA** | 1d? | 2017-01-30 19:00 | 2017-02-01 11:00 |  | -2d |
| 236 | 4.3.1.1 | **Implementación front-end más documentación** | 1d? | 2017-01-30 19:00 | 2017-02-01 11:00 |  |  |
| 237 |  | De código (documentación sobre estructura de código y particularidades especiales como por ejemplo algoritmos de optimización, mejoras, etc) | 1d? | 2017-01-31 09:00 | 2017-02-01 11:00 |  | -2d |
| 238 | 4.3.2 | **NM** | 1d? | 2017-02-14 11:00 | 2017-02-15 13:00 |  |  |
| 239 |  | Definición de KPI's implementación | 1d? | 2017-02-14 11:00 | 2017-02-15 13:00 |  | -10.2d |
| 240 | 4.3.3 | **TAG** | 1d | 2017-01-31 09:00 | 2017-02-01 11:00 |  | -2d |
| 241 | 4.3.3.1 | **Gestor de recursos** | 1d? | 2017-01-31 09:00 | 2017-02-01 11:00 |  |  |
| 242 |  | Carga de modelos en formato múltiple en las entidades de tipo malla | 1d? | 2017-01-31 09:00 | 2017-02-01 11:00 |  | -2d |
| 243 |  | Carga de varios ficheros para animación. Salida en modo texto | 1d? | 2017-01-31 09:00 | 2017-02-01 11:00 |  | -2d |
| 244 | 4.3.3.1.3 | **Visualización** | 1d? | 2017-01-31 09:00 | 2017-02-01 11:00 |  |  |
| 245 |  | Visualizador OpenGL 4.X de las entidades tipo malla. Shader básico. Integración con el motor. Sin materiales, texturas, cámara ni luces | 1d? | 2017-01-31 09:00 | 2017-02-01 11:00 |  | -2d |
| 246 |  | Visualizador OpenGL 4.X de las entidades tipo malla. Shader básico. Con cámaras y luces de varios tipos. Visualización con registro de cámaras y luces. | 1d? | 2017-01-31 09:00 | 2017-02-01 11:00 |  | -2d |
| 247 | 4.4 | **Iteracion 4** | 1d? | 2017-02-15 15:00 | 2017-02-16 17:00 | 234 |  |
| 248 | 4.4.1 | **SMA** | 1d? | 2017-01-30 19:00 | 2017-02-01 11:00 |  |  |
| 249 |  | Implementación de las funcionalidades en front-end (relación de las interfaces y funcionalidades que se están implementando y en que momento están implementadas) | 1d? | 2017-01-31 09:00 | 2017-02-01 11:00 |  | -1d |
| 250 | 4.4.2 | **NM** | 1d? | 2017-02-15 15:00 | 2017-02-16 17:00 |  |  |
| 251 |  | Valoración de los cuadros de mando y KPI's definidos e incorporación de nuevos elementos según datos | 1d? | 2017-02-15 15:00 | 2017-02-16 17:00 |  | -10.2d |
| 252 | 4.4.3 | **TAG** | 1d | 2017-01-31 09:00 | 2017-02-01 11:00 |  | -1d |
| 253 | 4.4.3.1 | **Gestor de recursos** | 1d? | 2017-01-31 09:00 | 2017-02-01 11:00 |  |  |
| 254 |  | Carga de materiales y texturas. Salida en modo texto | 1d? | 2017-01-31 09:00 | 2017-02-01 11:00 |  | -1d |
| 255 | 4.4.3.2 | **Visualización** | 1d? | 2017-01-31 09:00 | 2017-02-01 11:00 |  |  |
| 256 |  | Visualizador OpenGL 4.X de las entidades tipo malla. Shader básico. Añadiendo materiales y texturas. | 1d? | 2017-01-31 09:00 | 2017-02-01 11:00 |  | -1d |
| 257 | 4.5 | **Iteracion 5** | 1d? | 2017-02-16 17:00 | 2017-02-17 19:00 | 247 |  |
| 258 | 4.5.1 | **SMA** | 1d? | 2017-02-16 17:00 | 2017-02-17 19:00 |  | 26.4d |
| 259 |  | Informe | 1d? | 2017-02-16 17:00 | 2017-02-17 19:00 |  | 26.4d |
| 260 | 4.5.2 | **NM** | 1d? | 2017-02-16 17:00 | 2017-02-17 19:00 |  |  |
| 261 |  | Informe | 1d? | 2017-02-16 17:00 | 2017-02-17 19:00 |  | 26.4d |
| 262 | 4.5.3 | **PD** | 1d? | 2017-01-31 09:00 | 2017-02-01 11:00 |  |  |
| 263 |  | Trailer del proyecto | 1d? | 2017-01-31 09:00 | 2017-02-01 11:00 |  | 36.6d |
| 264 | 4.5.4 | **ELE** | 1d? | 2017-01-31 09:00 | 2017-02-01 11:00 |  |  |
| 265 | 4.5.4.1 | **Tarea 4** | 1d? | 2017-01-31 09:00 | 2017-02-01 11:00 |  |  |
| 266 |  | Crear video | 1d? | 2017-01-31 09:00 | 2017-02-01 11:00 |  | 36.6d |
| 267 | 4.5.5 | **TAG** | 1d | 2017-01-31 09:00 | 2017-02-01 11:00 |  |  |
| 268 | 4.5.5.1 | **Fachada** | 1d? | 2017-01-31 09:00 | 2017-02-01 11:00 |  |  |
| 269 |  | Creación de una fachada entre el motor y la aplicación | 1d? | 2017-01-31 09:00 | 2017-02-01 11:00 |  | 36.6d |
| 270 | 4.5.5.2 | **Visualización** | 1d? | 2017-01-31 09:00 | 2017-02-01 11:00 |  |  |
| 271 |  | Visualizador OpenGL 4.X con tres shaders avanzados | 1d? | 2017-01-31 09:00 | 2017-02-01 11:00 |  | 36.6d |
| 272 | 5 | **HITO 4** | 56d? | 2017-02-20 09:00 | 2017-05-26 19:00 | 194 | 0d |
| 273 | 5.1 | **PM** | 29.6d | 2017-02-20 09:00 | 2017-04-11 19:00 |  | 26.4d |
| 274 | 5.1.1 | **Planificación** | 29.6d | 2017-02-20 09:00 | 2017-04-11 19:00 |  | 26.4d |
| 275 | 5.1.1.1 | **Detallar plan iteraciones del mes de Abril-Mayo** | 29.6d | 2017-02-20 09:00 | 2017-04-11 19:00 |  | 26.4d |
| 276 |  | Creación Subtareas y precedencias en Project | 29.6d | 2017-02-20 09:00 | 2017-04-11 19:00 |  | 26.4d |
| 277 |  | Asignar recursos a las tareas en Project | 29.6d | 2017-02-20 09:00 | 2017-04-11 19:00 |  | 26.4d |
| 278 | 5.1.2 | **Seguimiento** | 29.6d | 2017-02-20 09:00 | 2017-04-11 19:00 |  | 26.4d |
| 279 |  | Registrar de tiempos y % de realización de tareas en Project | 29.6d | 2017-02-20 09:00 | 2017-04-11 19:00 |  | 26.4d |
| 280 |  | Comparar la planificación prevista y real en Project hito 4 | 29.6d | 2017-02-20 09:00 | 2017-04-11 19:00 |  | 26.4d |
| 281 |  | Confeccionar Informes de iteración e informe resumen de Hito 4 | 29.6d | 2017-02-20 09:00 | 2017-04-11 19:00 |  | 26.4d |
| 282 | 5.1.3 | **Presentación** | 29.6d | 2017-02-20 09:00 | 2017-04-11 19:00 |  | 26.4d |

| ID | WBS | Task | Duration | Start | Finish | Total float | Constraint |
| --- | --- | --- | --- | --- | --- | --- | --- |
| 283 |  | Elaborar la presentación del Hito 4 | 29.6d | 2017-02-20 09:00 | 2017-04-11 19:00 | 26.4d |  |
| 284 |  | Exponer la presentación del Hito 4 | 29.6d | 2017-02-20 09:00 | 2017-04-11 19:00 | 26.4d |  |
| 285 | 5.2 | **TAG** | 29.6d | 2017-02-20 09:00 | 2017-04-11 19:00 | 26.4d |  |
| 286 | 5.2.1 | **IGC** | 29.6d | 2017-02-20 09:00 | 2017-04-11 19:00 | 26.4d |  |
| 287 | 5.2.1.1 | **Aplicación** | 29.6d | 2017-02-20 09:00 | 2017-04-11 19:00 | 26.4d |  |
| 288 |  | Cargador de modelos | 29.6d | 2017-02-20 09:00 | 2017-04-11 19:00 | 26.4d |  |
| 289 |  | Movimiento del modelo, de las luces y de la cámara | 29.6d | 2017-02-20 09:00 | 2017-04-11 19:00 | 26.4d |  |
| 290 |  | Cambio de modelo, materiales y texturas | 29.6d | 2017-02-20 09:00 | 2017-04-11 19:00 | 26.4d |  |
| 291 |  | Animaciones | 29.6d | 2017-02-20 09:00 | 2017-04-11 19:00 | 26.4d |  |
| 292 |  | Integración con el motor | 29.6d | 2017-02-20 09:00 | 2017-04-11 19:00 | 26.4d |  |
| 293 |  | Optimizaciones del motor | 29.6d | 2017-02-20 09:00 | 2017-04-11 19:00 | 26.4d |  |
| 294 |  | Efectos visuales | 29.6d | 2017-02-20 09:00 | 2017-04-11 19:00 | 26.4d |  |
| 295 | 5.3 | **SMA** | 29.6d | 2017-02-20 09:00 | 2017-04-11 19:00 | 26.4d |  |
| 296 |  | Documento de pruebas donde se documenta las pruebas de las funcionalidades principales (por lo menos las interfaces principales) | 29.6d | 2017-02-20 09:00 | 2017-04-11 19:00 | 26.4d |  |
| 297 |  | Pruebas de la aplicación demostrando que no hay errores (falta de librerías, archivos que no se descargan, errores javascript) | 29.6d | 2017-02-20 09:00 | 2017-04-11 19:00 | 26.4d |  |
| 298 |  | Pruebas de seguridad de front end | 29.6d | 2017-02-20 09:00 | 2017-04-11 19:00 | 26.4d |  |
| 299 |  | Pruebas de rendimiento (velocidad de carga, que todo carga y no hay errores) | 29.6d | 2017-02-20 09:00 | 2017-04-11 19:00 | 26.4d |  |
| 300 |  | Validar las funcionalidades (comprobar que realmente han sido implementadas), las funcionalidades han quedado recogidas en las interfaces implementadas | 29.6d | 2017-02-20 09:00 | 2017-04-11 19:00 | 26.4d |  |
| 301 |  | Informe | 29.6d | 2017-02-20 09:00 | 2017-04-11 19:00 | 26.4d |  |
| 302 | 5.4 | **NM** | 29.6d | 2017-02-20 09:00 | 2017-04-11 19:00 | 26.4d |  |
| 303 |  | Validación del funcionamiento | 29.6d | 2017-02-20 09:00 | 2017-04-11 19:00 | 26.4d |  |
| 304 |  | Informe | 29.6d | 2017-02-20 09:00 | 2017-04-11 19:00 | 26.4d |  |
| 305 | 5.5 | **PD** | 56d? | 2017-02-20 09:00 | 2017-05-26 19:00 | 0d |  |
| 306 |  | Making of del proyecto | 29.6d | 2017-02-20 09:00 | 2017-04-11 19:00 | 26.4d |  |
| 307 |  | Creditos | 14.4d? | 2017-05-03 09:00 | 2017-05-26 19:00 | 0d | finish no earlier than 2017-05-26 19:00 |
| 308 | 5.6 | **ELE** | 1d? | 2017-02-20 09:00 | 2017-02-21 11:00 | 55d |  |
| 309 | 5.6.1 | **Tarea 5** | 1d? | 2017-02-20 09:00 | 2017-02-21 11:00 | 55d |  |
| 310 |  | Grabar audio | 1d? | 2017-02-20 09:00 | 2017-02-21 11:00 | 55d |  |
| 311 | 5.6.2 | **Tarea 6** | 1d? | 2017-02-20 09:00 | 2017-02-21 11:00 | 55d |  |
| 312 |  | Hacer montaje | 1d? | 2017-02-20 09:00 | 2017-02-21 11:00 | 55d |  |

## Version 2 (saved 2017-02-01)

Note of the change: Merge branch 'master' of https://github.com/ABPMultimediaUA/SchoolApp

Last finish 2017-05-26 → 2019-12-02 (+920d).

Added:

| ID | Task | Duration | Start | Finish | Predecessors | Constraint | Resources |
| --- | --- | --- | --- | --- | --- | --- | --- |
| 210 | **Guía de estilos** | 1d? | 2017-02-01 17:00 | 2017-02-02 19:00 |  |  |  |
| 215 | Desplegar infraestructura del proyecto | 1d? | 2017-02-13 09:00 | 2017-02-14 11:00 |  | start no earlier than 2017-02-13 09:00 | Jorge |
| 217 | Definir cuadros de mando | 2d? | 2017-02-14 11:00 | 2017-02-16 17:00 | 215 | start no earlier than 2017-02-13 09:00 | Jorge |
| 218 | Implementar cuadros de mando | 1d? | 2017-02-16 17:00 | 2017-02-17 19:00 | 217 | start no earlier than 2017-02-13 09:00 | Jorge |
| 224 | **Tipos de datos para nodos y entidades** | 0.5d? | 2017-02-13 09:00 | 2017-02-13 16:00 |  |  |  |
| 229 | **Tipos de datos para entidades de tipo transformación** | 2.3d? | 2017-02-13 09:00 | 2017-02-15 18:00 |  |  |  |
| 231 | Implementar salida en modo texto | 2h? | 2017-02-13 09:00 | 2017-02-13 11:00 |  |  |  |
| 232 | **Tipos de datos para entidades de tipo cámara y luz** | 1.3d? | 2017-02-13 09:00 | 2017-02-14 16:00 |  |  |  |
| 234 | Implementar salida en modo texto | 2h? | 2017-02-13 09:00 | 2017-02-13 11:00 |  |  |  |
| 236 | Definir tipos de datos para entidades de tipo malla | 6h? | 2017-02-13 09:00 | 2017-02-13 17:00 |  |  |  |
| 237 | Implementar salida en modo texto | 2h? | 2017-02-13 09:00 | 2017-02-13 11:00 |  |  |  |
| 239 | Definir tipos de datos para entidades de tipo animación (cuadro a cuadro) | 13h? | 2017-02-13 09:00 | 2017-02-14 16:00 |  |  |  |
| 240 | Implementar salida en modo texto | 2h? | 2017-02-13 09:00 | 2017-02-13 11:00 |  |  |  |
| 244 | Definir KPI's implementados | 1d? | 2017-02-27 09:00 | 2017-02-28 11:00 |  |  |  |
| 249 | Implementar salida en modo texto | 2h? | 2017-02-27 09:00 | 2017-02-27 11:00 |  |  |  |
| 256 | Valorar los cuadros de mando | 8d? | 2017-02-27 09:00 | 2017-03-12 19:00 | 218 | finish no earlier than 2017-03-12 19:00 | Jorge |
| 257 | **Valoración KPI's definidos** | 8.8d | 2017-02-27 09:00 | 2017-03-12 19:00 |  |  |  |
| 258 | Valorar KPI's definidos | 7d? | 2017-03-13 09:00 | 2017-03-23 17:00 | 256 | finish no earlier than 2017-03-12 19:00 | Jorge |
| 265 | **PM** | 0d | 2018-06-01 17:00 | 2018-06-01 17:00 |  |  |  |
| 274 | Implementar funcionalidades de front-end | 1d? | 2017-01-31 09:00 | 2017-02-01 11:00 |  |  |  |
| 275 | **Documentación front-end** | 1d? | 2017-02-13 09:00 | 2017-02-14 11:00 |  |  |  |
| 276 | Hacer documentación de esctructura de código y particularidades especiales | 1d? | 2017-02-13 09:00 | 2017-02-14 11:00 |  |  |  |
| 278 | **Incorporación de nuevos elementos según datos** | 1d? | 2017-02-13 09:00 | 2017-02-14 11:00 |  |  |  |
| 279 | Incorporar nuevos elementos según datos | 1d? | 2017-07-19 09:00 | 2017-07-20 11:00 | 258 | start no earlier than 2017-07-19 09:00 | Jorge |

Removed: 207 Exponer la presentación del Hito 3; 216 NM; 235 SMA; 237 De código (documentación sobre estructura de código y particularidades especiales como por ejemplo algoritmos de optimización, mejoras, etc); 248 SMA; 249 Implementación de las funcionalidades en front-end (relación de las interfaces y funcionalidades que se están implementando y en que momento están implementadas); 259 Informe; 261 Informe; 305 PD

Changed:

| ID | Task | Start | Finish | Duration | Total float | Predecessors | Other |
| --- | --- | --- | --- | --- | --- | --- | --- |
| 147 | **Memoria ABP** |  | 2017-01-12 16:00 → 2017-01-12 12:30 | 2.75d → 2.6d | 6.2d → 10.35d |  |  |
| 152 | **Apartado 3** | 2017-01-11 09:30 → 2017-01-09 16:30 (-2d) | 2017-01-11 12:30 → 2017-01-10 09:30 (-1d) |  | 6.2d → 11.3d |  |  |
| 153 | Explicar marco tecnológico | 2017-01-11 09:30 → 2017-01-09 16:30 (-2d) | 2017-01-11 12:30 → 2017-01-10 09:30 (-1d) |  | 6.2d → 11.3d |  |  |
| 154 | **Descripcion de objetivos SDM en ABP** | 2017-01-11 12:30 → 2017-01-10 09:30 (-1d) | 2017-01-12 10:30 → 2017-01-11 10:00 (-1d) | 0.6d → 0.85d | 6.2d → 11.05d |  |  |
| 155 | Explicar uso de CMS | 2017-01-11 12:30 → 2017-01-10 09:30 (-1d) | 2017-01-11 16:30 → 2017-01-10 11:30 (-1d) |  | 6.2d → 11.3d |  |  |
| 156 | Explicar uso de posicionamiento y difusion | 2017-01-11 12:30 → 2017-01-10 09:30 (-1d) | 2017-01-12 09:30 → 2017-01-10 16:30 (-2d) |  | 6.3d → 11.4d |  |  |
| 157 | Usar transformacion de formatos | 2017-01-11 16:30 → 2017-01-10 11:30 (-1d) | 2017-01-12 10:30 → 2017-01-10 17:30 (-2d) |  | 6.2d → 11.3d |  |  |
| 158 | Explicar el consumo de API's | 2017-01-11 12:30 → 2017-01-10 09:30 (-1d) | 2017-01-11 16:30 → 2017-01-10 11:30 (-1d) |  | 6.5d → 11.6d |  |  |
| 159 | Explicar la autorizacion Oauth 2.0 | 2017-01-11 16:30 → 2017-01-11 09:00 | 2017-01-11 17:30 → 2017-01-11 10:00 |  | 6.5d → 11.05d |  |  |
| 160 | **Apartado 5** | 2017-01-12 10:30 → 2017-01-12 09:00 | 2017-01-12 12:00 → 2017-01-12 10:30 |  | 6.2d → 10.35d |  |  |
| 161 | Explicar objetivos cumplidos | 2017-01-12 10:30 → 2017-01-12 09:00 | 2017-01-12 12:00 → 2017-01-12 10:30 |  | 6.2d → 10.35d |  |  |
| 162 | **Conclusión** | 2017-01-12 12:00 → 2017-01-12 10:30 | 2017-01-12 13:00 → 2017-01-12 11:30 |  | 6.2d → 10.35d |  |  |
| 163 | Escribir conclusion de la memoria | 2017-01-12 12:00 → 2017-01-12 10:30 | 2017-01-12 13:00 → 2017-01-12 11:30 |  | 6.2d → 10.35d |  |  |
| 164 | **Apartado 7** | 2017-01-12 15:00 → 2017-01-12 11:30 | 2017-01-12 16:00 → 2017-01-12 12:30 |  | 6.2d → 10.35d |  |  |
| 165 | Explicar Reparto del trabajo | 2017-01-12 15:00 → 2017-01-12 11:30 | 2017-01-12 16:00 → 2017-01-12 12:30 |  | 6.2d → 10.35d |  |  |
| 178 | Hacer pruebas funcionales | 2017-01-11 16:30 → 2017-01-11 09:30 | 2017-01-12 18:30 → 2017-01-12 11:30 |  | 5.95d → 10.45d |  |  |
| 194 | **HITO 3** |  | 2017-02-17 19:00 → 2019-10-10 13:00 (+965d) | 11.2d? → 562d? | -4d → 0d |  |  |
| 195 | **Iteracion 1** |  | 2017-02-12 19:00 → 2017-07-18 19:00 (+156d) | 8d → 96.8d? | none → 10.2d |  |  |
| 196 | **PM** | 2017-01-31 09:00 → 2017-02-01 09:00 (+1d) | 2017-01-31 09:00 → 2017-02-01 17:00 (+1d) | 0d → 0.6d | -3d → 559.6d |  |  |
| 197 | **Planificación** | 2017-01-31 09:00 → 2017-02-01 09:00 (+1d) | 2017-01-31 09:00 → 2017-02-01 17:00 (+1d) | 0d → 0.6d | none → 559.6d |  |  |
| 198 | **Detallar plan iteraciones del mes de Febrero-Marzo** | 2017-01-31 09:00 → 2017-02-01 09:00 (+1d) | 2017-01-31 09:00 → 2017-02-01 17:00 (+1d) | 0d → 0.6d | none → 559.6d |  |  |
| 199 | Crear Subtareas y precedencias en Project | 2017-01-31 09:00 → 2017-02-01 09:00 (+1d) | 2017-01-31 09:00 → 2017-02-01 13:00 (+1d) | 0d → 4h | -3d → 559.6d |  | was named Creación Subtareas y precedencias en Project; constraint none → start no earlier than 2017-02-01 09:00; resources none → Nahiara |
| 200 | Asignar recursos a las tareas en Project. | 2017-01-31 09:00 → 2017-02-01 15:00 (+1d) | 2017-01-31 09:00 → 2017-02-01 17:00 (+1d) | 0d → 2h | -3d → 559.6d | none → 199 | resources none → Nahiara |
| 201 | **PD** |  | 2017-02-01 16:00 → 2017-07-18 19:00 (+167d) | 0.5d? → 96d? | none → 465.2d |  |  |
| 202 | Cartel del proyecto |  | 2017-02-01 16:00 → 2017-02-01 17:00 | 5h? → 6h? | 65.9d → 516.6d |  | resources Antonio; Jorge → Antonio |
| 203 | Creditos |  |  |  | 0d → 465.2d | none → 202 | resources none → Jorge |
| 204 | Making of del proyecto | 2017-02-20 09:00 → 2017-05-29 09:00 (+98d) | 2017-04-11 19:00 → 2017-07-18 19:00 (+98d) |  | 26.4d → 465.2d | none → 203 | resources none → Jorge |
| 208 | Hacer guión gráfico |  |  |  | -5d → 10.2d | none → 207 |  |
| 209 | **SMA** | 2017-01-31 09:00 → 2017-02-01 17:00 (+1d) | 2017-02-01 11:00 → 2017-02-02 19:00 (+1d) |  | -4d → 559.6d |  |  |
| 211 | Crear guia de estilos | 2017-01-31 09:00 → 2017-02-01 17:00 (+1d) | 2017-02-01 11:00 → 2017-02-02 19:00 (+1d) |  | -4d → 559.6d | none → 200 | was named Guia de estilos; resources none → Nahiara |
| 212 | **Iteración 2** |  | 2017-02-14 11:00 → 2017-02-26 19:00 (+12d) | 1d? → 8.8d |  | 195 → none |  |
| 213 | **NM** |  | 2017-02-14 11:00 → 2017-02-17 19:00 (+3d) | 1d? → 4d? | none → 0d |  |  |
| 214 | **Despliegue de la infraestructura del proyecto** | 2017-01-31 09:00 → 2017-02-13 09:00 (+13d) | 2017-02-01 11:00 → 2017-02-15 13:00 (+14d) | 1d? → 2d | -4d → none |  |  |
| 216 | **Definición de cuadros de mando e implementación** | 2017-02-13 09:00 → 2017-02-14 11:00 (+1d) | 2017-02-14 11:00 → 2017-02-17 19:00 (+3d) | 1d? → 3d? | -10.2d → none |  |  |
| 219 | **ELE** |  | 2017-02-14 11:00 → 2017-02-26 19:00 (+12d) | 1d? → 8.8d |  |  |  |
| 221 | Definir tecnologias |  |  |  | -10.2d → 5d | none → 208 | resources none → Ricardo |
| 222 | **TAG** |  | 2017-02-14 11:00 → 2017-02-26 19:00 (+12d) | 1d? → 8.8d | -10.2d → none |  |  |
| 223 | **Árbol de la escena** |  | 2017-02-14 11:00 → 2017-02-15 18:00 (+1d) | 1d? → 2.3d? | -10.2d → 3.7d |  |  |
| 225 | Definir tipos de datos para nodos (completo) y entidades (sólo clase padre; clases hijas sin contenido) |  | 2017-02-14 11:00 → 2017-02-13 16:00 (-1d) | 1d? → 5h? | -10.2d → 5.5d |  | was named Tipos de datos para nodos (completo) y entidades (sólo clase padre; clases hijas sin contenido) |
| 226 | Construir árbol |  | 2017-02-14 11:00 → 2017-02-13 11:00 (-1d) | 1d? → 2h? | -10.2d → 5.8d |  | was named Construcción del árbol |
| 227 | Definir recorrido del arbol |  | 2017-02-14 11:00 → 2017-02-13 11:00 (-1d) | 1d? → 2h? | -10.2d → 5.8d |  | was named Recorrido del arbol |
| 228 | Implementar salida en modo texto |  | 2017-02-14 11:00 → 2017-02-13 10:00 (-1d) | 1d? → 1h? | -10.2d → 5.9d |  | was named Salida en modo texto |
| 230 | Definir tipos de datos para entidades de tipo transformación (traslación, rotación y escalado relativos y absolutos. Otras transformaciones) |  | 2017-02-14 11:00 → 2017-02-15 18:00 (+1d) | 1d? → 23h? | -10.2d → 3.7d |  | was named Tipos de datos para entidades de tipo transformacion |
| 233 | Definir tipos de datos para entidades de tipo cámara y luz (cámaras y luces de dos tipos). |  | 2017-02-14 11:00 → 2017-02-14 16:00 | 1d? → 13h? | -10.2d → 4.7d |  | was named Tipos de datos para entidades de tipo cámara y luz (cámaras y luces de dos tipos). Salida en modo texto |
| 235 | **Tipos de datos para entidades de tipo malla** |  | 2017-02-14 11:00 → 2017-02-13 17:00 (-1d) | 1d? → 0.6d? | -10.2d → 5.4d |  | was named Tipos de datos para entidades de tipo malla. Salida en modo texto |
| 238 | **Tipos de datos para entidades de tipo animación** |  | 2017-02-14 11:00 → 2017-02-14 16:00 | 1d? → 1.3d? | -10.2d → 4.7d |  | was named Tipos de datos para entidades de tipo animación (cuadro a cuadro). Salida en modo texto |
| 241 | **Iteracion 3** | 2017-02-14 11:00 → 2017-02-27 09:00 (+13d) | 2017-02-15 13:00 → 2017-03-12 19:00 (+25d) | 1d? → 8.8d |  |  |  |
| 242 | **NM** | 2017-02-14 11:00 → 2017-02-27 09:00 (+13d) | 2017-02-15 13:00 → 2017-03-12 19:00 (+25d) | 1d? → 8.8d |  |  |  |
| 243 | **Definición de KPI's implementación** | 2017-02-14 11:00 → 2017-02-27 09:00 (+13d) | 2017-02-15 13:00 → 2017-02-28 11:00 (+13d) |  | -10.2d → -1d |  |  |
| 245 | **TAG** | 2017-01-31 09:00 → 2017-02-27 09:00 (+27d) | 2017-02-01 11:00 → 2017-03-12 19:00 (+39d) | 1d → 8.8d | -2d → none |  |  |
| 246 | **Gestor de recursos** | 2017-01-31 09:00 → 2017-02-27 09:00 (+27d) | 2017-02-01 11:00 → 2017-02-28 10:00 (+27d) | 1d? → 0.9d? | none → -0.9d |  |  |
| 247 | Cargar modelos en formato múltiple en las entidades de tipo malla | 2017-01-31 09:00 → 2017-02-27 09:00 (+27d) | 2017-02-01 11:00 → 2017-02-28 10:00 (+27d) | 1d? → 9h? | -2d → -0.9d |  | was named Carga de modelos en formato múltiple en las entidades de tipo malla |
| 248 | Cargar varios ficheros para animación | 2017-01-31 09:00 → 2017-02-27 09:00 (+27d) | 2017-02-01 11:00 → 2017-02-28 10:00 (+27d) | 1d? → 9h? | -2d → -0.9d |  | was named Carga de varios ficheros para animación. Salida en modo texto |
| 250 | **Visualización** | 2017-01-31 09:00 → 2017-02-27 09:00 (+27d) | 2017-02-01 11:00 → 2017-03-01 13:00 (+28d) | 1d? → 2d? | none → -2d |  |  |
| 251 | Realizar visualizador OpenGL 4.X de las entidades tipo malla. Shader básico. Integración con el motor. Sin materiales, texturas, cámara ni luces | 2017-01-31 09:00 → 2017-02-27 09:00 (+27d) | 2017-02-01 11:00 → 2017-02-28 11:00 (+27d) | 1d? → 10h? | -2d → -1d |  | was named Visualizador OpenGL 4.X de las entidades tipo malla. Shader básico. Integración con el motor. Sin materiales, texturas, cámara ni luces |
| 252 | Realizar visualizador OpenGL 4.X de las entidades tipo malla. Shader básico. Con cámaras y luces de varios tipos. Visualización con registro de cámaras y luces. | 2017-01-31 09:00 → 2017-02-27 09:00 (+27d) | 2017-02-01 11:00 → 2017-03-01 13:00 (+28d) | 1d? → 20h? |  |  | was named Visualizador OpenGL 4.X de las entidades tipo malla. Shader básico. Con cámaras y luces de varios tipos. Visualización con registro de cámaras y luces. |
| 253 | **Iteracion 4** | 2017-02-15 15:00 → 2017-02-27 09:00 (+12d) | 2017-02-16 17:00 → 2017-03-12 19:00 (+24d) | 1d? → 8.8d |  |  |  |
| 254 | **NM** | 2017-02-15 15:00 → 2017-02-27 09:00 (+12d) | 2017-02-16 17:00 → 2017-03-12 19:00 (+24d) | 1d? → 8.8d |  |  |  |
| 255 | **Valoración de los cuadros de mando** | 2017-02-15 15:00 → 2017-02-27 09:00 (+12d) | 2017-02-16 17:00 → 2017-03-12 19:00 (+24d) | 1d? → 8.8d | -10.2d → none |  | was named Valoración de los cuadros de mando y KPI's definidos e incorporación de nuevos elementos según datos |
| 259 | **TAG** | 2017-01-31 09:00 → 2017-02-27 09:00 (+27d) | 2017-02-01 11:00 → 2017-03-12 19:00 (+39d) | 1d → 8.8d | -1d → none |  |  |
| 260 | **Gestor de recursos** | 2017-01-31 09:00 → 2017-02-27 09:00 (+27d) | 2017-02-01 11:00 → 2017-03-01 13:00 (+28d) | 1d? → 2d? | none → 170.2d |  |  |
| 261 | Cargar materiales y texturas. Salida en modo texto | 2017-01-31 09:00 → 2017-02-27 09:00 (+27d) | 2017-02-01 11:00 → 2017-03-01 13:00 (+28d) | 1d? → 20h? | -1d → 170.2d |  | was named Carga de materiales y texturas. Salida en modo texto |
| 262 | **Visualización** | 2017-01-31 09:00 → 2017-02-27 09:00 (+27d) | 2017-02-01 11:00 → 2017-03-01 13:00 (+28d) | 1d? → 2d? | none → 170.2d |  |  |
| 263 | Realizar visualizador OpenGL 4.X de las entidades tipo malla. Shader básico. Añadiendo materiales y texturas. | 2017-01-31 09:00 → 2017-02-27 09:00 (+27d) | 2017-02-01 11:00 → 2017-03-01 13:00 (+28d) | 1d? → 20h? | -1d → 170.2d |  | was named Visualizador OpenGL 4.X de las entidades tipo malla. Shader básico. Añadiendo materiales y texturas. |
| 264 | **Iteracion 5** | 2017-02-16 17:00 → 2017-12-25 11:00 (+312d) | 2017-02-17 19:00 → 2019-10-10 13:00 (+965d) | 1d? → 374.6d? |  |  |  |
| 266 | **Seguimiento** | 2017-01-31 09:00 → 2017-02-13 09:00 (+13d) | 2017-01-31 09:00 → 2017-02-13 09:00 (+13d) |  |  |  |  |
| 267 | Registrar de tiempos y % de realización de tareas en Project | 2017-01-31 09:00 → 2017-02-13 09:00 (+13d) | 2017-01-31 09:00 → 2017-02-13 09:00 (+13d) |  | -3d → 584.4d |  | constraint none → start no earlier than 2017-02-13 09:00; resources none → Nahiara |
| 268 | Comparar la planificación prevista y real en Project hito 3 | 2017-01-31 09:00 → 2017-02-13 09:00 (+13d) | 2017-01-31 09:00 → 2017-02-13 09:00 (+13d) |  | -3d → 584.4d |  | constraint none → start no earlier than 2017-02-13 09:00; resources none → Nahiara |
| 269 | Confeccionar Informes de iteración e informe resumen de Hito 3 | 2017-01-31 09:00 → 2017-02-13 09:00 (+13d) | 2017-01-31 09:00 → 2017-02-13 09:00 (+13d) |  | -3d → 584.4d |  | constraint none → start no earlier than 2017-02-13 09:00; resources none → Nahiara |
| 270 | **Presentación** | 2017-01-31 09:00 → 2017-02-13 09:00 (+13d) | 2017-01-31 09:00 → 2017-02-13 09:00 (+13d) |  |  |  |  |

| ID | Task | Start | Finish | Duration | Total float | Predecessors | Other |
| --- | --- | --- | --- | --- | --- | --- | --- |
| 271 | Elaborar la presentación del Hito 3 | 2017-01-31 09:00 → 2017-02-13 09:00 (+13d) | 2017-01-31 09:00 → 2017-02-13 09:00 (+13d) |  | -3d → 584.4d |  | constraint none → start no earlier than 2017-02-13 09:00 |
| 272 | **SMA** | 2017-02-16 17:00 → 2017-02-13 09:00 (-3d) | 2017-02-17 19:00 → 2018-01-08 13:00 (+325d) | 1d? → 188.4d? | 26.4d → none |  |  |
| 273 | **Implementación front-end** |  |  |  |  |  | was named Implementación front-end más documentación |
| 277 | **NM** | 2017-02-16 17:00 → 2017-02-13 09:00 (-3d) | 2017-02-17 19:00 → 2017-02-14 11:00 (-3d) |  |  |  |  |
| 280 | **PD** | 2017-01-31 09:00 → 2017-02-13 09:00 (+13d) | 2017-02-01 11:00 → 2017-02-14 11:00 (+13d) |  |  |  |  |
| 281 | Trailer del proyecto | 2017-01-31 09:00 → 2017-02-13 09:00 (+13d) | 2017-02-01 11:00 → 2017-02-14 11:00 (+13d) |  | 36.6d → 553.8d | none → 202 | resources none → Jorge; Antonio |
| 282 | **ELE** | 2017-01-31 09:00 → 2017-02-13 09:00 (+13d) | 2017-02-01 11:00 → 2017-02-14 11:00 (+13d) |  |  |  |  |
| 283 | **Tarea 4** | 2017-01-31 09:00 → 2017-02-13 09:00 (+13d) | 2017-02-01 11:00 → 2017-02-14 11:00 (+13d) |  |  |  |  |
| 284 | Crear video | 2017-01-31 09:00 → 2017-02-14 11:00 (+14d) | 2017-02-01 11:00 → 2017-02-15 13:00 (+14d) |  | 36.6d → 582.4d | none → 221 | constraint none → start no earlier than 2017-02-13 09:00; resources none → Ricardo |
| 285 | **TAG** | 2017-01-31 09:00 → 2017-02-13 09:00 (+13d) | 2017-02-01 11:00 → 2017-02-17 12:00 (+16d) | 1d → 3.5d? |  |  |  |
| 286 | **Fachada** | 2017-01-31 09:00 → 2017-02-13 09:00 (+13d) | 2017-02-01 11:00 → 2017-02-16 10:00 (+15d) | 1d? → 2.5d? | none → 552.3d |  |  |
| 287 | Crear fachada entre el motor y la aplicación | 2017-01-31 09:00 → 2017-02-13 09:00 (+13d) | 2017-02-01 11:00 → 2017-02-16 10:00 (+15d) | 1d? → 25h? | 36.6d → 552.3d |  | was named Creación de una fachada entre el motor y la aplicación |
| 288 | **Visualización** | 2017-01-31 09:00 → 2017-02-13 09:00 (+13d) | 2017-02-01 11:00 → 2017-02-17 12:00 (+16d) | 1d? → 3.5d? | none → 551.3d |  |  |
| 289 | Realizar visualizador OpenGL 4.X con tres shaders avanzados | 2017-01-31 09:00 → 2017-02-13 09:00 (+13d) | 2017-02-01 11:00 → 2017-02-17 12:00 (+16d) | 1d? → 35h? | 36.6d → 551.3d |  | was named Visualizador OpenGL 4.X con tres shaders avanzados |
| 290 | **HITO 4** | 2017-02-20 09:00 → 2019-10-10 15:00 (+962d) | 2017-05-26 19:00 → 2019-12-02 13:00 (+920d) | 56d? → 29.6d? |  |  |  |
| 291 | **PM** | 2017-02-20 09:00 → 2019-10-10 15:00 (+962d) | 2017-04-11 19:00 → 2019-12-02 13:00 (+965d) |  | 26.4d → 0d |  |  |
| 292 | **Planificación** | 2017-02-20 09:00 → 2019-10-10 15:00 (+962d) | 2017-04-11 19:00 → 2019-12-02 13:00 (+965d) |  | 26.4d → 0d |  |  |
| 293 | **Detallar plan iteraciones del mes de Abril-Mayo** | 2017-02-20 09:00 → 2019-10-10 15:00 (+962d) | 2017-04-11 19:00 → 2019-12-02 13:00 (+965d) |  | 26.4d → 0d |  |  |
| 294 | Creación Subtareas y precedencias en Project | 2017-02-20 09:00 → 2019-10-10 15:00 (+962d) | 2017-04-11 19:00 → 2019-12-02 13:00 (+965d) |  | 26.4d → 0d |  |  |
| 295 | Asignar recursos a las tareas en Project | 2017-02-20 09:00 → 2019-10-10 15:00 (+962d) | 2017-04-11 19:00 → 2019-12-02 13:00 (+965d) |  | 26.4d → 0d |  |  |
| 296 | **Seguimiento** | 2017-02-20 09:00 → 2019-10-10 15:00 (+962d) | 2017-04-11 19:00 → 2019-12-02 13:00 (+965d) |  | 26.4d → 0d |  |  |
| 297 | Registrar de tiempos y % de realización de tareas en Project | 2017-02-20 09:00 → 2019-10-10 15:00 (+962d) | 2017-04-11 19:00 → 2019-12-02 13:00 (+965d) |  | 26.4d → 0d |  |  |
| 298 | Comparar la planificación prevista y real en Project hito 4 | 2017-02-20 09:00 → 2019-10-10 15:00 (+962d) | 2017-04-11 19:00 → 2019-12-02 13:00 (+965d) |  | 26.4d → 0d |  |  |
| 299 | Confeccionar Informes de iteración e informe resumen de Hito 4 | 2017-02-20 09:00 → 2019-10-10 15:00 (+962d) | 2017-04-11 19:00 → 2019-12-02 13:00 (+965d) |  | 26.4d → 0d |  |  |
| 300 | **Presentación** | 2017-02-20 09:00 → 2019-10-10 15:00 (+962d) | 2017-04-11 19:00 → 2019-12-02 13:00 (+965d) |  | 26.4d → 0d |  |  |
| 301 | Elaborar la presentación del Hito 4 | 2017-02-20 09:00 → 2019-10-10 15:00 (+962d) | 2017-04-11 19:00 → 2019-12-02 13:00 (+965d) |  | 26.4d → 0d |  |  |
| 302 | Exponer la presentación del Hito 4 | 2017-02-20 09:00 → 2019-10-10 15:00 (+962d) | 2017-04-11 19:00 → 2019-12-02 13:00 (+965d) |  | 26.4d → 0d |  |  |
| 303 | **TAG** | 2017-02-20 09:00 → 2019-10-10 15:00 (+962d) | 2017-04-11 19:00 → 2019-12-02 13:00 (+965d) |  | 26.4d → 0d |  |  |
| 304 | **IGC** | 2017-02-20 09:00 → 2019-10-10 15:00 (+962d) | 2017-04-11 19:00 → 2019-12-02 13:00 (+965d) |  | 26.4d → 0d |  |  |
| 305 | **Aplicación** | 2017-02-20 09:00 → 2019-10-10 15:00 (+962d) | 2017-04-11 19:00 → 2019-12-02 13:00 (+965d) |  | 26.4d → 0d |  |  |
| 306 | Cargador de modelos | 2017-02-20 09:00 → 2019-10-10 15:00 (+962d) | 2017-04-11 19:00 → 2019-12-02 13:00 (+965d) |  | 26.4d → 0d |  |  |
| 307 | Movimiento del modelo, de las luces y de la cámara | 2017-02-20 09:00 → 2019-10-10 15:00 (+962d) | 2017-04-11 19:00 → 2019-12-02 13:00 (+965d) |  | 26.4d → 0d |  |  |
| 308 | Cambio de modelo, materiales y texturas | 2017-02-20 09:00 → 2019-10-10 15:00 (+962d) | 2017-04-11 19:00 → 2019-12-02 13:00 (+965d) |  | 26.4d → 0d |  |  |
| 309 | Animaciones | 2017-02-20 09:00 → 2019-10-10 15:00 (+962d) | 2017-04-11 19:00 → 2019-12-02 13:00 (+965d) |  | 26.4d → 0d |  |  |
| 310 | Integración con el motor | 2017-02-20 09:00 → 2019-10-10 15:00 (+962d) | 2017-04-11 19:00 → 2019-12-02 13:00 (+965d) |  | 26.4d → 0d |  |  |
| 311 | Optimizaciones del motor | 2017-02-20 09:00 → 2019-10-10 15:00 (+962d) | 2017-04-11 19:00 → 2019-12-02 13:00 (+965d) |  | 26.4d → 0d |  |  |
| 312 | Efectos visuales | 2017-02-20 09:00 → 2019-10-10 15:00 (+962d) | 2017-04-11 19:00 → 2019-12-02 13:00 (+965d) |  | 26.4d → 0d |  |  |
| 313 | **SMA** | 2017-02-20 09:00 → 2019-10-10 15:00 (+962d) | 2017-04-11 19:00 → 2019-12-02 13:00 (+965d) |  | 26.4d → 0d |  |  |
| 314 | Documento de pruebas donde se documenta las pruebas de las funcionalidades principales (por lo menos las interfaces principales) | 2017-02-20 09:00 → 2019-10-10 15:00 (+962d) | 2017-04-11 19:00 → 2019-12-02 13:00 (+965d) |  | 26.4d → 0d |  |  |
| 315 | Pruebas de la aplicación demostrando que no hay errores (falta de librerías, archivos que no se descargan, errores javascript) | 2017-02-20 09:00 → 2019-10-10 15:00 (+962d) | 2017-04-11 19:00 → 2019-12-02 13:00 (+965d) |  | 26.4d → 0d |  |  |
| 316 | Pruebas de seguridad de front end | 2017-02-20 09:00 → 2019-10-10 15:00 (+962d) | 2017-04-11 19:00 → 2019-12-02 13:00 (+965d) |  | 26.4d → 0d |  |  |
| 317 | Pruebas de rendimiento (velocidad de carga, que todo carga y no hay errores) | 2017-02-20 09:00 → 2019-10-10 15:00 (+962d) | 2017-04-11 19:00 → 2019-12-02 13:00 (+965d) |  | 26.4d → 0d |  |  |
| 318 | Validar las funcionalidades (comprobar que realmente han sido implementadas), las funcionalidades han quedado recogidas en las interfaces implementadas | 2017-02-20 09:00 → 2019-10-10 15:00 (+962d) | 2017-04-11 19:00 → 2019-12-02 13:00 (+965d) |  | 26.4d → 0d |  |  |
| 319 | Informe | 2017-02-20 09:00 → 2019-10-10 15:00 (+962d) | 2017-04-11 19:00 → 2019-12-02 13:00 (+965d) |  | 26.4d → 0d |  |  |
| 320 | **NM** | 2017-02-20 09:00 → 2019-10-10 15:00 (+962d) | 2017-04-11 19:00 → 2019-12-02 13:00 (+965d) |  | 26.4d → 0d |  |  |
| 321 | Validación del funcionamiento | 2017-02-20 09:00 → 2019-10-10 15:00 (+962d) | 2017-04-11 19:00 → 2019-12-02 13:00 (+965d) |  | 26.4d → 0d |  |  |
| 322 | Informe | 2017-02-20 09:00 → 2019-10-10 15:00 (+962d) | 2017-04-11 19:00 → 2019-12-02 13:00 (+965d) |  | 26.4d → 0d |  |  |
| 323 | **ELE** | 2017-02-20 09:00 → 2019-10-10 15:00 (+962d) | 2017-02-21 11:00 → 2019-10-11 17:00 (+962d) |  | 55d → 28.6d |  |  |
| 324 | **Tarea 5** | 2017-02-20 09:00 → 2019-10-10 15:00 (+962d) | 2017-02-21 11:00 → 2019-10-11 17:00 (+962d) |  | 55d → 28.6d |  |  |
| 325 | Grabar audio | 2017-02-20 09:00 → 2019-10-10 15:00 (+962d) | 2017-02-21 11:00 → 2019-10-11 17:00 (+962d) |  | 55d → 28.6d |  |  |
| 326 | **Tarea 6** | 2017-02-20 09:00 → 2019-10-10 15:00 (+962d) | 2017-02-21 11:00 → 2019-10-11 17:00 (+962d) |  | 55d → 28.6d |  |  |
| 327 | Hacer montaje | 2017-02-20 09:00 → 2019-10-10 15:00 (+962d) | 2017-02-21 11:00 → 2019-10-11 17:00 (+962d) |  | 55d → 28.6d |  |  |

## Version 3 (saved 2017-02-13)

Note of the change: Actualizado Project Hito 3 Iteracion 1

Last finish stays 2019-12-02.

Added:

| ID | Task | Duration | Start | Finish | Predecessors | Constraint | Resources |
| --- | --- | --- | --- | --- | --- | --- | --- |
| 170 | Definir aspectos SEO como son palabras clave, estilos de textos, posiciones de texto, como se va a potenciar esto (landing, blog, etc…), URL amigables | 1h | 2017-01-16 10:30 | 2017-01-16 11:30 |  |  |  |
| 194 | Describir arquitectura tecnológica: documento sobre toma de decisión, versiones, codificación, internacionalización (varias lenguas), instalación sobre servidor de frameworks… | 2.5h | 2017-01-09 10:30 | 2017-01-09 13:00 |  |  | Antonio; Nahiara |
| 195 | **PD** | 0.3d | 2017-01-31 09:00 | 2017-01-31 12:00 |  |  |  |
| 204 | **TAG** | 1.05d | 2017-02-06 09:00 | 2017-02-07 11:30 |  |  |  |
| 205 | **Arbol de la escena** | 1.05d | 2017-02-06 09:00 | 2017-02-07 11:30 |  |  |  |
| 214 | **Creación de Interfaces** | 0.8d | 2017-02-10 09:00 | 2017-02-10 19:00 |  |  |  |
| 215 | Implementar Pane de Administrador | 5h | 2017-02-10 09:00 | 2017-02-10 16:00 |  | start no earlier than 2017-02-10 09:00 | Ricardo |
| 216 | Implementar Login | 3h | 2017-02-10 16:00 | 2017-02-10 19:00 | 215 |  | Ricardo |
| 219 | Escribir guión | 2h | 2017-02-07 09:00 | 2017-02-07 11:00 |  | start no earlier than 2017-02-07 09:00 | Jorge |
| 220 | Hacer Storyboard | 2.5h | 2017-02-07 11:00 | 2017-02-07 15:30 | 219 | start no earlier than 2017-02-07 09:00 | Jorge |
| 221 | **SMBI** | 1.1d | 2017-02-02 09:00 | 2017-02-03 12:00 |  |  |  |
| 222 | **Implementación** | 0.7d | 2017-02-02 09:00 | 2017-02-02 18:00 |  |  |  |
| 223 | Implementar funciones GET | 2h | 2017-02-02 09:00 | 2017-02-02 11:00 |  | start no earlier than 2017-02-02 09:00 | Manuel |
| 224 | Implementar funciones PUT | 3h | 2017-02-02 11:00 | 2017-02-02 16:00 | 223 |  | Manuel |
| 225 | Implementar funciones DELETE | 2h | 2017-02-02 16:00 | 2017-02-02 18:00 | 224 |  | Manuel |
| 226 | **Pruebas funciones** | 0.4d | 2017-02-02 18:00 | 2017-02-03 12:00 |  |  |  |
| 227 | Probar PUT | 2h | 2017-02-02 18:00 | 2017-02-03 10:00 | 224 |  | Manuel |
| 228 | Probar DELETE | 2h | 2017-02-03 10:00 | 2017-02-03 12:00 | 225 | finish no earlier than 2016-10-04 11:00 | Manuel |
| 233 | **Trailer del proyecto** | 1d? | 2017-02-16 17:00 | 2017-02-17 19:00 |  |  |  |
| 234 | Grabar video | 1d? | 2017-02-16 17:00 | 2017-02-17 19:00 |  |  | Jorge |

Removed: 193 Guía de estilos: documento detallando la imagen corporativa del servicio (colores, estilos, esencia para la experiencia de usuario, consideraciones de usabilidad y accesibilidad); 205 ELE

Changed:

| ID | Task | Start | Finish | Duration | Total float | Predecessors | Other |
| --- | --- | --- | --- | --- | --- | --- | --- |
| 126 | **HITO 2** | 2016-12-26 09:00 → 2016-10-03 09:00 (-84d) | 2017-01-30 19:00 → 2017-01-31 12:00 (+1d) | 21.6d → 71.5d? | none → 534.7d |  |  |
| 127 | **Iteración 1** | 2016-12-26 09:00 → 2016-10-03 09:00 (-84d) |  | 8.15d? → 57.75d? | 10.45d → 546.7d |  |  |
| 128 | **PM** | 2016-12-26 09:00 → 2016-10-03 09:00 (-84d) |  | 8.15d? → 57.75d? | 10.45d → 546.7d |  |  |
| 129 | **Especificación** | 2016-12-26 09:00 → 2016-10-03 09:00 (-84d) | 2016-12-26 11:00 → 2016-10-03 11:00 (-84d) |  | 17.45d → 603.3d |  |  |
| 130 | Revisar especificación proyecto. | 2016-12-26 09:00 → 2016-10-03 09:00 (-84d) | 2016-12-26 11:00 → 2016-10-03 11:00 (-84d) |  | 17.45d → 603.3d |  |  |
| 143 | **NM** | 2016-12-26 09:00 → 2016-10-03 09:00 (-84d) | 2016-12-26 13:00 → 2016-10-03 13:00 (-84d) |  | 18.2d → 604.05d |  |  |
| 144 | Modelo para la integración de datos | 2016-12-26 09:00 → 2016-10-03 09:00 (-84d) | 2016-12-26 13:00 → 2016-10-03 13:00 (-84d) |  | 18.2d → 604.05d |  |  |
| 145 | **Iteración 2** |  | 2017-01-30 19:00 → 2017-01-31 12:00 (+1d) | 13.45d → 13.75d? | 0d → 534.7d |  |  |
| 168 | **SMA** |  | 2017-01-16 17:30 → 2017-01-16 11:30 | 0.5d → 0.1d | 8.95d → 544.35d |  |  |
| 169 | **Documento de SEO** |  | 2017-01-16 17:30 → 2017-01-16 11:30 | 5h → 0.1d | 8.95d → 544.35d |  | was named Documento de SEO: definición de aspectos SEO como son palabras clave, estilos de textos, posiciones de texto, como se va a potenciar esto (landing, blog, etc…), URL amigables |
| 176 | **SMBI** |  | 2017-01-30 19:00 → 2017-01-09 10:30 (-21d) | 13.45d → 0d? | 0d → 548.45d |  |  |
| 177 | **Pruebas** |  | 2017-01-13 16:00 → 2017-01-09 10:30 (-4d) | 3.55d → 0d? | 9.9d → 548.45d |  |  |
| 181 | Hacer pruebas de carga y rendimiento |  |  |  | 0d → 535d |  | resources Antonio; Manuel → Manuel |
| 182 | **Validación** | 2017-01-28 17:00 → 2017-01-09 10:30 (-19d) | 2017-01-30 19:00 → 2017-01-09 10:30 (-21d) | 1d → 0d | 0d → 548.45d |  |  |
| 191 | **SMA** | 2017-01-25 09:00 → 2017-01-09 10:30 (-16d) | 2017-01-30 19:00 → 2017-01-27 19:00 (-3d) | 4d → 11.85d | 0d → 536.6d |  |  |
| 192 | Integración Front-Back: documento de relación entre back-end y front-end | 2017-01-25 09:00 → 2017-01-27 09:00 (+2d) |  | 2.4d → 8h | 1.6d → 536.6d |  |  |
| 193 | **Arquitectura tecnológica** | 2017-01-27 09:00 → 2017-01-09 10:30 (-18d) | 2017-01-27 11:00 → 2017-01-09 13:00 (-18d) | 2h → 0.25d | 2.2d → 548.2d |  | was named Arquitectura tecnológica: documento sobre toma de decisión, versiones, codificación, internacionalización (varias lenguas), instalación sobre servidor de frameworks...; constraint start no earlier than 2017-01-27 09:00 → none; resources Nahiara; Antonio → none |
| 196 | Cartel del proyecto | 2017-02-01 09:00 → 2017-01-31 09:00 (-1d) | 2017-02-01 17:00 → 2017-01-31 12:00 (-1d) | 6h? → 3h | 516.6d → 534.7d |  | constraint start no earlier than 2017-02-01 09:00 → start no earlier than 2017-01-31 09:00 |
| 197 | **HITO 3** |  | 2019-10-10 13:00 → 2019-10-10 19:00 | 562d? → 562.4d | 0d → none |  |  |
| 198 | **Iteracion 1** | 2017-01-31 09:00 → 2017-02-01 09:00 (+1d) | 2017-07-18 19:00 → 2017-02-10 19:00 (-158d) | 96.8d? → 6.4d | 10.2d → 529d |  |  |
| 199 | **PM** |  | 2017-02-01 17:00 → 2017-02-01 19:00 | 0.6d → 0.8d | 559.6d → 534.2d |  |  |
| 200 | **Planificación** |  | 2017-02-01 17:00 → 2017-02-01 19:00 | 0.6d → 0.8d | 559.6d → 534.2d |  |  |
| 201 | **Detallar plan iteraciones del mes de Febrero-Marzo** |  | 2017-02-01 17:00 → 2017-02-01 19:00 | 0.6d → 0.8d | 559.6d → 534.2d |  |  |
| 202 | Crear Subtareas y precedencias en Project |  | 2017-02-01 13:00 → 2017-02-01 16:00 | 4h → 5h | 559.6d → 534.2d |  |  |
| 203 | Asignar recursos a las tareas en Project. | 2017-02-01 15:00 → 2017-02-01 16:00 | 2017-02-01 17:00 → 2017-02-01 19:00 | 2h → 3h | 559.6d → 534.2d |  |  |
| 206 | **Tipos de datos para nodos y entidades (4)** | 2017-02-13 09:00 → 2017-02-06 09:00 (-7d) | 2017-02-13 16:00 → 2017-02-07 11:30 (-6d) | 0.5d? → 1.05d | 5.5d → 531.95d |  | was named Tipos de datos para nodos y entidades |
| 207 | Definir tipos de datos para nodos (completo) y entidades (sólo clase padre; clases hijas sin contenido) | 2017-02-13 09:00 → 2017-02-06 09:00 (-7d) | 2017-02-13 16:00 → 2017-02-06 17:00 (-7d) | 5h? → 6h | 5.5d → 531.95d |  | constraint none → start no earlier than 2017-02-06 09:00; resources none → Antonio |
| 208 | Construir árbol | 2017-02-13 09:00 → 2017-02-06 17:00 (-7d) | 2017-02-13 11:00 → 2017-02-06 19:00 (-7d) | 2h? → 2h | 5.8d → 531.95d | none → 207 | resources none → Antonio |
| 209 | Definir recorrido del arbol | 2017-02-13 09:00 → 2017-02-07 09:00 (-6d) | 2017-02-13 11:00 → 2017-02-07 10:30 (-6d) | 2h? → 1.5h | 5.8d → 531.95d | none → 208 | resources none → Antonio |
| 210 | Implementar salida en modo texto | 2017-02-13 09:00 → 2017-02-07 10:30 (-6d) | 2017-02-13 10:00 → 2017-02-07 11:30 (-6d) | 1h? → 1h | 5.9d → 531.95d | none → 209 | resources none → Antonio |
| 211 | **SMA** | 2017-02-01 17:00 → 2017-02-02 09:00 (+1d) | 2017-02-02 19:00 → 2017-02-10 19:00 (+8d) | 1d? → 5.6d | 559.6d → 529d |  |  |
| 212 | **Guía de estilos** | 2017-02-01 17:00 → 2017-02-02 09:00 (+1d) | 2017-02-02 19:00 → 2017-02-02 13:00 | 1d? → 0.4d | 559.6d → 534.2d |  |  |
| 213 | Crear guia de estilos | 2017-02-01 17:00 → 2017-02-02 09:00 (+1d) | 2017-02-02 19:00 → 2017-02-02 13:00 | 1d? → 4h | 559.6d → 534.2d |  |  |
| 217 | **PD** | 2017-02-13 09:00 → 2017-02-07 09:00 (-6d) | 2017-02-14 11:00 → 2017-02-07 15:30 (-7d) | 1d? → 0.45d | none → 531.75d |  |  |
| 218 | **Trailer del proyecto** | 2017-02-13 09:00 → 2017-02-07 09:00 (-6d) | 2017-02-14 11:00 → 2017-02-07 15:30 (-7d) | 1d? → 0.45d | 553.8d → 531.75d | 196 → none | resources Jorge; Antonio → none |
| 229 | **Iteración 2** |  | 2017-02-26 19:00 → 2017-02-21 11:00 (-5d) | 8.8d → 5d? | none → 529d | none → 198 |  |
| 230 | **PD** | 2017-02-01 09:00 → 2017-02-16 17:00 (+15d) | 2017-07-18 19:00 → 2017-02-17 19:00 (-151d) | 96d? → 1d? | 465.2d → 530.7d |  |  |
| 231 | Creditos | 2017-05-03 09:00 → 2017-02-13 09:00 (-79d) | 2017-05-26 19:00 → 2017-02-15 13:00 (-100d) | 14.4d? → 2d? | 465.2d → 530.7d |  | constraint finish no earlier than 2017-05-26 19:00 → start no earlier than 2017-02-13 09:00 |
| 232 | Making of del proyecto | 2017-05-29 09:00 → 2017-02-15 15:00 (-103d) | 2017-07-18 19:00 → 2017-02-17 19:00 (-151d) | 29.6d → 2d? | 465.2d → 530.7d |  | constraint none → start no earlier than 2017-02-14 11:00 |
| 235 | **NM** |  | 2017-02-17 19:00 → 2017-02-21 11:00 (+4d) | 4d? → 5d? | 0d → 529d |  |  |
| 236 | **Despliegue de la infraestructura del proyecto** |  | 2017-02-15 13:00 → 2017-02-14 11:00 (-1d) | 2d → 1d? | none → 529d |  |  |
| 238 | **Definición de cuadros de mando e implementación** |  | 2017-02-17 19:00 → 2017-02-21 11:00 (+4d) | 3d? → 4d? | none → 529d |  |  |
| 240 | Implementar cuadros de mando | 2017-02-16 17:00 → 2017-02-20 09:00 (+4d) | 2017-02-17 19:00 → 2017-02-21 11:00 (+4d) |  | 564.4d → 529.7d |  |  |
| 241 | **ELE** |  | 2017-02-26 19:00 → 2017-02-16 17:00 (-10d) | 8.8d → 3d? | none → 531.7d |  |  |
| 242 | **Tarea 2** | 2017-01-31 09:00 → 2017-02-13 09:00 (+13d) | 2017-02-02 13:00 → 2017-02-15 13:00 (+13d) |  | 10.2d → 531.7d |  |  |
| 243 | Hacer guión | 2017-01-31 09:00 → 2017-02-13 09:00 (+13d) | 2017-02-01 11:00 → 2017-02-14 11:00 (+13d) |  | 10.2d → 531.7d |  |  |
| 244 | Hacer guión gráfico | 2017-02-01 11:00 → 2017-02-14 11:00 (+13d) | 2017-02-02 13:00 → 2017-02-15 13:00 (+13d) |  | 10.2d → 531.7d |  |  |
| 245 | **Tarea 3** | 2017-02-13 09:00 → 2017-02-15 15:00 (+2d) | 2017-02-14 11:00 → 2017-02-16 17:00 (+2d) |  | 5d → 531.7d |  |  |
| 246 | Definir tecnologias | 2017-02-13 09:00 → 2017-02-15 15:00 (+2d) | 2017-02-14 11:00 → 2017-02-16 17:00 (+2d) |  | 5d → 531.7d |  |  |
| 247 | **TAG** |  | 2017-02-26 19:00 → 2017-02-13 17:00 (-13d) | 8.8d → 0.6d? | none → 534.1d |  |  |
| 248 | **Árbol de la escena** |  | 2017-02-15 18:00 → 2017-02-13 17:00 (-2d) | 2.3d? → 0.6d? | 3.7d → 534.1d |  |  |
| 249 | **Tipos de datos para entidades de tipo transformación (5)** |  | 2017-02-15 18:00 → 2017-02-13 11:00 (-2d) | 2.3d? → 0.2d? | 3.7d → 534.5d |  | was named Tipos de datos para entidades de tipo transformación |
| 250 | Definir tipos de datos para entidades de tipo transformación (traslación, rotación y escalado relativos y absolutos. Otras transformaciones) |  | 2017-02-15 18:00 → 2017-02-13 11:00 (-2d) | 23h? → 2h? | 3.7d → 534.5d |  |  |
| 252 | **Tipos de datos para entidades de tipo cámara y luz (6)** |  | 2017-02-14 16:00 → 2017-02-13 11:00 (-1d) | 1.3d? → 0.2d? | 4.7d → 534.5d |  | was named Tipos de datos para entidades de tipo cámara y luz |
| 253 | Definir tipos de datos para entidades de tipo cámara y luz (cámaras y luces de dos tipos). |  | 2017-02-14 16:00 → 2017-02-13 11:00 (-1d) | 13h? → 2h? | 4.7d → 534.5d |  |  |
| 255 | **Tipos de datos para entidades de tipo malla (7)** |  |  |  | 5.4d → 534.1d |  | was named Tipos de datos para entidades de tipo malla |
| 258 | **Tipos de datos para entidades de tipo animación (8)** |  | 2017-02-14 16:00 → 2017-02-13 12:00 (-1d) | 1.3d? → 0.3d? | 4.7d → 534.4d |  | was named Tipos de datos para entidades de tipo animación |
| 259 | Definir tipos de datos para entidades de tipo animación (cuadro a cuadro) |  | 2017-02-14 16:00 → 2017-02-13 12:00 (-1d) | 13h? → 3h? | 4.7d → 534.4d |  |  |
| 261 | **Iteracion 3** | 2017-02-27 09:00 → 2017-02-21 11:00 (-6d) | 2017-03-12 19:00 → 2017-02-23 17:00 (-17d) | 8.8d → 2d? | none → 529.7d |  |  |
| 262 | **NM** | 2017-02-27 09:00 → 2017-02-21 11:00 (-6d) | 2017-03-12 19:00 → 2017-02-22 13:00 (-18d) | 8.8d → 1d? | none → 530.7d |  |  |
| 263 | **Definición de KPI's implementación** | 2017-02-27 09:00 → 2017-02-21 11:00 (-6d) | 2017-02-28 11:00 → 2017-02-22 13:00 (-6d) |  | -1d → 530.7d |  |  |
| 264 | Definir KPI's implementados | 2017-02-27 09:00 → 2017-02-21 11:00 (-6d) | 2017-02-28 11:00 → 2017-02-22 13:00 (-6d) |  | -1d → 530.7d |  |  |
| 265 | **TAG** | 2017-02-27 09:00 → 2017-02-21 11:00 (-6d) | 2017-03-12 19:00 → 2017-02-23 17:00 (-17d) | 8.8d → 2d? | none → 529.7d |  |  |
| 266 | **Gestor de recursos (9)** | 2017-02-27 09:00 → 2017-02-21 11:00 (-6d) | 2017-02-28 10:00 → 2017-02-22 12:00 (-6d) |  | -0.9d → 530.8d |  | was named Gestor de recursos |
| 267 | Cargar modelos en formato múltiple en las entidades de tipo malla | 2017-02-27 09:00 → 2017-02-21 11:00 (-6d) | 2017-02-28 10:00 → 2017-02-22 12:00 (-6d) |  | -0.9d → 530.8d |  |  |
| 268 | Cargar varios ficheros para animación | 2017-02-27 09:00 → 2017-02-21 11:00 (-6d) | 2017-02-28 10:00 → 2017-02-22 12:00 (-6d) |  | -0.9d → 530.8d |  |  |
| 269 | Implementar salida en modo texto | 2017-02-27 09:00 → 2017-02-21 11:00 (-6d) | 2017-02-27 11:00 → 2017-02-21 13:00 (-6d) |  | -0.2d → 531.5d |  |  |
| 270 | **Visualización (10,11)** | 2017-02-27 09:00 → 2017-02-21 11:00 (-6d) | 2017-03-01 13:00 → 2017-02-23 17:00 (-6d) |  | -2d → 529.7d |  | was named Visualización |
| 271 | Realizar visualizador OpenGL 4.X de las entidades tipo malla. Shader básico. Integración con el motor. Sin materiales, texturas, cámara ni luces | 2017-02-27 09:00 → 2017-02-21 11:00 (-6d) | 2017-02-28 11:00 → 2017-02-22 13:00 (-6d) |  | -1d → 530.7d |  |  |
| 272 | Realizar visualizador OpenGL 4.X de las entidades tipo malla. Shader básico. Con cámaras y luces de varios tipos. Visualización con registro de cámaras y luces. | 2017-02-27 09:00 → 2017-02-21 11:00 (-6d) | 2017-03-01 13:00 → 2017-02-23 17:00 (-6d) |  | -2d → 529.7d |  |  |

| ID | Task | Start | Finish | Duration | Total float | Other |
| --- | --- | --- | --- | --- | --- | --- |
| 273 | **Iteracion 4** | 2017-02-27 09:00 → 2017-02-23 17:00 (-4d) | 2017-03-12 19:00 → 2017-03-23 17:00 (+11d) | 8.8d → 16d? | none → 528.7d |  |
| 274 | **NM** |  | 2017-03-12 19:00 → 2017-03-23 17:00 (+11d) | 8.8d → 15d? | none → 528.7d |  |
| 275 | **Valoración de los cuadros de mando** |  |  | 8.8d → 8d? | none → 528.7d |  |
| 277 | **Valoración KPI's definidos** | 2017-02-27 09:00 → 2017-03-13 09:00 (+14d) | 2017-03-12 19:00 → 2017-03-23 17:00 (+11d) | 8.8d → 7d? | none → 528.7d |  |
| 279 | **TAG** | 2017-02-27 09:00 → 2017-02-23 17:00 (-4d) | 2017-03-12 19:00 → 2017-02-28 11:00 (-12d) | 8.8d → 2d? | none → 542.7d |  |
| 280 | **Gestor de recursos (12)** | 2017-02-27 09:00 → 2017-02-23 17:00 (-4d) | 2017-03-01 13:00 → 2017-02-28 11:00 (-1d) |  | 170.2d → 542.7d | was named Gestor de recursos |
| 281 | Cargar materiales y texturas. Salida en modo texto | 2017-02-27 09:00 → 2017-02-23 17:00 (-4d) | 2017-03-01 13:00 → 2017-02-28 11:00 (-1d) |  | 170.2d → 542.7d |  |
| 282 | **Visualización (13)** | 2017-02-27 09:00 → 2017-02-23 17:00 (-4d) | 2017-03-01 13:00 → 2017-02-28 11:00 (-1d) |  | 170.2d → 542.7d | was named Visualización |
| 283 | Realizar visualizador OpenGL 4.X de las entidades tipo malla. Shader básico. Añadiendo materiales y texturas. | 2017-02-27 09:00 → 2017-02-23 17:00 (-4d) | 2017-03-01 13:00 → 2017-02-28 11:00 (-1d) |  | 170.2d → 542.7d |  |
| 284 | **Iteracion 5** | 2017-12-25 11:00 → 2017-03-23 17:00 (-277d) | 2019-10-10 13:00 → 2017-07-20 11:00 (-812d) | 374.6d? → 67.6d? | none → 464.6d |  |
| 285 | **PM** | 2018-06-01 17:00 → 2017-03-23 17:00 (-435d) | 2018-06-01 17:00 → 2017-03-23 17:00 (-435d) |  | none → 532.2d |  |
| 286 | **Seguimiento** | 2017-02-13 09:00 → 2017-03-23 17:00 (+38d) | 2017-02-13 09:00 → 2017-03-23 17:00 (+38d) |  | none → 532.2d |  |
| 287 | Registrar de tiempos y % de realización de tareas en Project | 2017-02-13 09:00 → 2017-03-23 17:00 (+38d) | 2017-02-13 09:00 → 2017-03-23 17:00 (+38d) |  | 584.4d → 532.2d |  |
| 288 | Comparar la planificación prevista y real en Project hito 3 | 2017-02-13 09:00 → 2017-03-23 17:00 (+38d) | 2017-02-13 09:00 → 2017-03-23 17:00 (+38d) |  | 584.4d → 532.2d |  |
| 289 | Confeccionar Informes de iteración e informe resumen de Hito 3 | 2017-02-13 09:00 → 2017-03-23 17:00 (+38d) | 2017-02-13 09:00 → 2017-03-23 17:00 (+38d) |  | 584.4d → 532.2d |  |
| 290 | **Presentación** | 2017-02-13 09:00 → 2017-03-23 17:00 (+38d) | 2017-02-13 09:00 → 2017-03-23 17:00 (+38d) |  | none → 532.2d |  |
| 291 | Elaborar la presentación del Hito 3 | 2017-02-13 09:00 → 2017-03-23 17:00 (+38d) | 2017-02-13 09:00 → 2017-03-23 17:00 (+38d) |  | 584.4d → 532.2d |  |
| 292 | **SMA** | 2017-02-13 09:00 → 2017-03-23 17:00 (+38d) | 2018-01-08 13:00 → 2017-03-24 19:00 (-290d) | 188.4d? → 1d? | none → 531.2d |  |
| 293 | **Implementación front-end** | 2017-01-30 19:00 → 2017-03-23 17:00 (+52d) | 2017-02-01 11:00 → 2017-03-24 19:00 (+51d) |  | none → 531.2d |  |
| 294 | Implementar funcionalidades de front-end | 2017-01-31 09:00 → 2017-03-23 17:00 (+51d) | 2017-02-01 11:00 → 2017-03-24 19:00 (+51d) |  | 561d → 531.2d |  |
| 295 | **Documentación front-end** | 2017-02-13 09:00 → 2017-03-23 17:00 (+38d) | 2017-02-14 11:00 → 2017-03-24 19:00 (+38d) |  | 553.8d → 531.2d |  |
| 296 | Hacer documentación de esctructura de código y particularidades especiales | 2017-02-13 09:00 → 2017-03-23 17:00 (+38d) | 2017-02-14 11:00 → 2017-03-24 19:00 (+38d) |  | 553.8d → 531.2d |  |
| 297 | **NM** | 2017-02-13 09:00 → 2017-07-19 09:00 (+156d) | 2017-02-14 11:00 → 2017-07-20 11:00 (+156d) |  | none → 464.6d |  |
| 298 | **Incorporación de nuevos elementos según datos** | 2017-02-13 09:00 → 2017-07-19 09:00 (+156d) | 2017-02-14 11:00 → 2017-07-20 11:00 (+156d) |  | none → 464.6d |  |
| 300 | **ELE** | 2017-02-13 09:00 → 2017-03-23 17:00 (+38d) | 2017-02-14 11:00 → 2017-03-24 19:00 (+38d) |  | none → 531.2d |  |
| 301 | **Tarea 4** | 2017-02-13 09:00 → 2017-03-23 17:00 (+38d) | 2017-02-14 11:00 → 2017-03-24 19:00 (+38d) |  | none → 531.2d |  |
| 302 | Crear video | 2017-02-14 11:00 → 2017-03-23 17:00 (+37d) | 2017-02-15 13:00 → 2017-03-24 19:00 (+37d) |  | 582.4d → 531.2d |  |
| 303 | **TAG** | 2017-02-13 09:00 → 2017-03-23 17:00 (+38d) | 2017-02-17 12:00 → 2017-03-30 10:00 (+41d) |  | none → 528.7d |  |
| 304 | **Fachada (14)** | 2017-02-13 09:00 → 2017-03-23 17:00 (+38d) | 2017-02-16 10:00 → 2017-03-28 18:00 (+40d) |  | 552.3d → 529.7d | was named Fachada |
| 305 | Crear fachada entre el motor y la aplicación | 2017-02-13 09:00 → 2017-03-23 17:00 (+38d) | 2017-02-16 10:00 → 2017-03-28 18:00 (+40d) |  | 552.3d → 529.7d |  |
| 306 | **Visualización (15)** | 2017-02-13 09:00 → 2017-03-23 17:00 (+38d) | 2017-02-17 12:00 → 2017-03-30 10:00 (+41d) |  | 551.3d → 528.7d | was named Visualización |
| 307 | Realizar visualizador OpenGL 4.X con tres shaders avanzados | 2017-02-13 09:00 → 2017-03-23 17:00 (+38d) | 2017-02-17 12:00 → 2017-03-30 10:00 (+41d) |  | 551.3d → 528.7d |  |
| 308 | **HITO 4** | 2019-10-10 15:00 → 2019-10-11 09:00 (+1d) | 2019-12-02 13:00 → 2019-12-02 19:00 |  |  |  |
| 309 | **PM** | 2019-10-10 15:00 → 2019-10-11 09:00 (+1d) | 2019-12-02 13:00 → 2019-12-02 19:00 |  |  |  |
| 310 | **Planificación** | 2019-10-10 15:00 → 2019-10-11 09:00 (+1d) | 2019-12-02 13:00 → 2019-12-02 19:00 |  |  |  |
| 311 | **Detallar plan iteraciones del mes de Abril-Mayo** | 2019-10-10 15:00 → 2019-10-11 09:00 (+1d) | 2019-12-02 13:00 → 2019-12-02 19:00 |  |  |  |
| 312 | Creación Subtareas y precedencias en Project | 2019-10-10 15:00 → 2019-10-11 09:00 (+1d) | 2019-12-02 13:00 → 2019-12-02 19:00 |  |  |  |
| 313 | Asignar recursos a las tareas en Project | 2019-10-10 15:00 → 2019-10-11 09:00 (+1d) | 2019-12-02 13:00 → 2019-12-02 19:00 |  |  |  |
| 314 | **Seguimiento** | 2019-10-10 15:00 → 2019-10-11 09:00 (+1d) | 2019-12-02 13:00 → 2019-12-02 19:00 |  |  |  |
| 315 | Registrar de tiempos y % de realización de tareas en Project | 2019-10-10 15:00 → 2019-10-11 09:00 (+1d) | 2019-12-02 13:00 → 2019-12-02 19:00 |  |  |  |
| 316 | Comparar la planificación prevista y real en Project hito 4 | 2019-10-10 15:00 → 2019-10-11 09:00 (+1d) | 2019-12-02 13:00 → 2019-12-02 19:00 |  |  |  |
| 317 | Confeccionar Informes de iteración e informe resumen de Hito 4 | 2019-10-10 15:00 → 2019-10-11 09:00 (+1d) | 2019-12-02 13:00 → 2019-12-02 19:00 |  |  |  |
| 318 | **Presentación** | 2019-10-10 15:00 → 2019-10-11 09:00 (+1d) | 2019-12-02 13:00 → 2019-12-02 19:00 |  |  |  |
| 319 | Elaborar la presentación del Hito 4 | 2019-10-10 15:00 → 2019-10-11 09:00 (+1d) | 2019-12-02 13:00 → 2019-12-02 19:00 |  |  |  |
| 320 | Exponer la presentación del Hito 4 | 2019-10-10 15:00 → 2019-10-11 09:00 (+1d) | 2019-12-02 13:00 → 2019-12-02 19:00 |  |  |  |
| 321 | **TAG** | 2019-10-10 15:00 → 2019-10-11 09:00 (+1d) | 2019-12-02 13:00 → 2019-12-02 19:00 |  |  |  |
| 322 | **IGC** | 2019-10-10 15:00 → 2019-10-11 09:00 (+1d) | 2019-12-02 13:00 → 2019-12-02 19:00 |  |  |  |
| 323 | **Aplicación** | 2019-10-10 15:00 → 2019-10-11 09:00 (+1d) | 2019-12-02 13:00 → 2019-12-02 19:00 |  |  |  |
| 324 | Cargador de modelos | 2019-10-10 15:00 → 2019-10-11 09:00 (+1d) | 2019-12-02 13:00 → 2019-12-02 19:00 |  |  |  |
| 325 | Movimiento del modelo, de las luces y de la cámara | 2019-10-10 15:00 → 2019-10-11 09:00 (+1d) | 2019-12-02 13:00 → 2019-12-02 19:00 |  |  |  |
| 326 | Cambio de modelo, materiales y texturas | 2019-10-10 15:00 → 2019-10-11 09:00 (+1d) | 2019-12-02 13:00 → 2019-12-02 19:00 |  |  |  |
| 327 | Animaciones | 2019-10-10 15:00 → 2019-10-11 09:00 (+1d) | 2019-12-02 13:00 → 2019-12-02 19:00 |  |  |  |
| 328 | Integración con el motor | 2019-10-10 15:00 → 2019-10-11 09:00 (+1d) | 2019-12-02 13:00 → 2019-12-02 19:00 |  |  |  |
| 329 | Optimizaciones del motor | 2019-10-10 15:00 → 2019-10-11 09:00 (+1d) | 2019-12-02 13:00 → 2019-12-02 19:00 |  |  |  |
| 330 | Efectos visuales | 2019-10-10 15:00 → 2019-10-11 09:00 (+1d) | 2019-12-02 13:00 → 2019-12-02 19:00 |  |  |  |
| 331 | **SMA** | 2019-10-10 15:00 → 2019-10-11 09:00 (+1d) | 2019-12-02 13:00 → 2019-12-02 19:00 |  |  |  |
| 332 | Documento de pruebas donde se documenta las pruebas de las funcionalidades principales (por lo menos las interfaces principales) | 2019-10-10 15:00 → 2019-10-11 09:00 (+1d) | 2019-12-02 13:00 → 2019-12-02 19:00 |  |  |  |
| 333 | Pruebas de la aplicación demostrando que no hay errores (falta de librerías, archivos que no se descargan, errores javascript) | 2019-10-10 15:00 → 2019-10-11 09:00 (+1d) | 2019-12-02 13:00 → 2019-12-02 19:00 |  |  |  |
| 334 | Pruebas de seguridad de front end | 2019-10-10 15:00 → 2019-10-11 09:00 (+1d) | 2019-12-02 13:00 → 2019-12-02 19:00 |  |  |  |
| 335 | Pruebas de rendimiento (velocidad de carga, que todo carga y no hay errores) | 2019-10-10 15:00 → 2019-10-11 09:00 (+1d) | 2019-12-02 13:00 → 2019-12-02 19:00 |  |  |  |
| 336 | Validar las funcionalidades (comprobar que realmente han sido implementadas), las funcionalidades han quedado recogidas en las interfaces implementadas | 2019-10-10 15:00 → 2019-10-11 09:00 (+1d) | 2019-12-02 13:00 → 2019-12-02 19:00 |  |  |  |
| 337 | Informe | 2019-10-10 15:00 → 2019-10-11 09:00 (+1d) | 2019-12-02 13:00 → 2019-12-02 19:00 |  |  |  |
| 338 | **NM** | 2019-10-10 15:00 → 2019-10-11 09:00 (+1d) | 2019-12-02 13:00 → 2019-12-02 19:00 |  |  |  |
| 339 | Validación del funcionamiento | 2019-10-10 15:00 → 2019-10-11 09:00 (+1d) | 2019-12-02 13:00 → 2019-12-02 19:00 |  |  |  |
| 340 | Informe | 2019-10-10 15:00 → 2019-10-11 09:00 (+1d) | 2019-12-02 13:00 → 2019-12-02 19:00 |  |  |  |
| 341 | **ELE** | 2019-10-10 15:00 → 2019-10-11 09:00 (+1d) | 2019-10-11 17:00 → 2019-10-14 11:00 (+3d) |  |  |  |
| 342 | **Tarea 5** | 2019-10-10 15:00 → 2019-10-11 09:00 (+1d) | 2019-10-11 17:00 → 2019-10-14 11:00 (+3d) |  |  |  |
| 343 | Grabar audio | 2019-10-10 15:00 → 2019-10-11 09:00 (+1d) | 2019-10-11 17:00 → 2019-10-14 11:00 (+3d) |  |  |  |
| 344 | **Tarea 6** | 2019-10-10 15:00 → 2019-10-11 09:00 (+1d) | 2019-10-11 17:00 → 2019-10-14 11:00 (+3d) |  |  |  |
| 345 | Hacer montaje | 2019-10-10 15:00 → 2019-10-11 09:00 (+1d) | 2019-10-11 17:00 → 2019-10-14 11:00 (+3d) |  |  |  |

## Version 4 (saved 2017-02-14)

Note of the change: Hecho iteracion 2 Hito 3

Last finish 2019-12-02 → 2017-09-11 (-812d).

Added:

| ID | Task | Duration | Start | Finish | Predecessors | Constraint | Resources |
| --- | --- | --- | --- | --- | --- | --- | --- |
| 177 | Implementar back-en | 1d? | 2017-01-09 10:30 | 2017-01-10 12:30 |  |  |  |
| 230 | **NM** | 0.2d | 2017-02-03 09:00 | 2017-02-03 11:00 |  |  |  |
| 231 | **Definición de KPI's implementación** | 0.2d | 2017-02-03 09:00 | 2017-02-03 11:00 |  |  |  |
| 232 | Definir KPI's | 2h | 2017-02-03 09:00 | 2017-02-03 11:00 |  | start no earlier than 2017-02-03 09:00 | Antonio |
| 234 | **SMBI** | 6d | 2017-02-13 09:00 | 2017-02-22 13:00 |  |  |  |
| 235 | Hacer GET BY de todas las entidades | 2d | 2017-02-13 09:00 | 2017-02-15 13:00 |  |  | Manuel |
| 236 | Hacer DELETE BY de todas las entidades | 2d | 2017-02-15 15:00 | 2017-02-17 19:00 | 235 |  | Manuel |
| 237 | Conseguir atributos de una entidad a partir de un GET a otra entidad | 2d | 2017-02-20 09:00 | 2017-02-22 13:00 | 236 |  | Manuel |
| 238 | **SMA** | 4.6d | 2017-02-13 09:00 | 2017-02-20 17:00 |  |  |  |
| 239 | Definir interfaces | 2.6d | 2017-02-13 09:00 | 2017-02-16 11:00 |  |  | Nahiara; Ricardo |
| 240 | Crear interfaces para front-end | 2.6d | 2017-02-15 15:00 | 2017-02-20 17:00 |  |  | Nahiara; Ricardo |
| 244 | Editar video | 2d? | 2017-02-21 11:00 | 2017-02-23 17:00 | 243 |  | Jorge; Antonio |
| 246 | Crear creditos | 1.5d? | 2017-02-16 17:00 | 2017-02-20 16:00 | 243 |  | Antonio |
| 265 | **PD** | 2d? | 2017-02-23 17:00 | 2017-02-28 11:00 |  |  |  |
| 269 | Implementar KPI's | 1d? | 2017-02-23 17:00 | 2017-02-24 19:00 |  |  |  |

Removed: 264 Definir KPI's implementados

Changed:

| ID | Task | Start | Finish | Duration | Total float | Predecessors | Other |
| --- | --- | --- | --- | --- | --- | --- | --- |
| 176 | **SMBI** |  | 2017-01-09 10:30 → 2017-01-10 12:30 (+1d) | 0d? → 1d? | 548.45d → 81.35d |  |  |
| 198 | **HITO 3** | 2017-01-30 19:00 → 2017-02-01 09:00 (+2d) | 2019-10-10 19:00 → 2017-07-20 11:00 (-812d) | 562.4d → 97d? | none → 0d |  |  |
| 233 | **Iteración 2** |  | 2017-02-21 11:00 → 2017-02-23 17:00 (+2d) | 5d? → 7d? | 529d → 63d |  |  |
| 241 | **PD** | 2017-02-16 17:00 → 2017-02-13 09:00 (-3d) | 2017-02-17 19:00 → 2017-02-23 17:00 (+6d) | 1d? → 7d? | 530.7d → 63.1d |  |  |
| 242 | **Trailer del proyecto** | 2017-02-16 17:00 → 2017-02-13 09:00 (-3d) | 2017-02-17 19:00 → 2017-02-23 17:00 (+6d) | 1d? → 7d? | 530.7d → 63.1d |  |  |
| 243 | Grabar video | 2017-02-16 17:00 → 2017-02-13 09:00 (-3d) | 2017-02-17 19:00 → 2017-02-16 17:00 (-1d) | 1d? → 3d? | 530.7d → 63.1d | none → 221 | resources Jorge → Jorge; Antonio |
| 245 | **Creditos** | 2017-02-13 09:00 → 2017-02-16 17:00 (+3d) | 2017-02-15 13:00 → 2017-02-20 16:00 (+5d) | 2d? → 1.5d? | 530.7d → 65.6d | 197 → none | constraint start no earlier than 2017-02-13 09:00 → none; resources Jorge → none |
| 247 | **NM** |  | 2017-02-21 11:00 → 2017-02-23 17:00 (+2d) | 5d? → 7d? | 529d → 63d |  |  |
| 250 | **Definición de cuadros de mando e implementación** | 2017-02-14 11:00 → 2017-02-16 17:00 (+2d) | 2017-02-21 11:00 → 2017-02-23 17:00 (+2d) |  | 529d → 63d |  |  |
| 251 | Definir cuadros de mando | 2017-02-14 11:00 → 2017-02-16 17:00 (+2d) | 2017-02-16 17:00 → 2017-02-21 11:00 (+5d) |  | 529d → 63d |  |  |
| 252 | Implementar cuadros de mando | 2017-02-20 09:00 → 2017-02-22 15:00 (+2d) | 2017-02-21 11:00 → 2017-02-23 17:00 (+2d) |  | 529.7d → 63.1d |  |  |
| 253 | **ELE** |  | 2017-02-16 17:00 → 2017-02-20 19:00 (+4d) | 3d? → 4.8d? | 531.7d → 65.3d |  |  |
| 254 | **Tarea 2** |  | 2017-02-15 13:00 → 2017-02-13 17:00 (-2d) | 2d? → 0.6d? | 531.7d → 65.3d |  |  |
| 255 | Hacer guión |  | 2017-02-14 11:00 → 2017-02-13 12:00 (-1d) | 1d? → 3h? | 531.7d → 65.3d |  |  |
| 256 | Hacer guión gráfico | 2017-02-14 11:00 → 2017-02-13 12:00 (-1d) | 2017-02-15 13:00 → 2017-02-13 17:00 (-2d) | 1d? → 3h? | 531.7d → 65.3d |  |  |
| 257 | **Tarea 3** | 2017-02-15 15:00 → 2017-02-20 17:00 (+5d) | 2017-02-16 17:00 → 2017-02-20 19:00 (+4d) | 1d? → 0.2d? | 531.7d → 65.3d |  |  |
| 258 | Definir tecnologias | 2017-02-15 15:00 → 2017-02-20 17:00 (+5d) | 2017-02-16 17:00 → 2017-02-20 19:00 (+4d) | 1d? → 2h? | 531.7d → 65.3d |  |  |
| 259 | **TAG** | 2017-02-13 09:00 → 2017-02-15 15:00 (+2d) | 2017-02-13 17:00 → 2017-02-22 13:00 (+9d) | 0.6d? → 4d? | 534.1d → 64.1d |  |  |
| 260 | **Árbol de la escena** | 2017-02-13 09:00 → 2017-02-15 15:00 (+2d) | 2017-02-13 17:00 → 2017-02-22 13:00 (+9d) | 0.6d? → 4d? | 534.1d → 64.1d |  |  |
| 261 | **Tipos de datos para entidades de tipo transformación (5)** | 2017-02-13 09:00 → 2017-02-15 15:00 (+2d) | 2017-02-13 11:00 → 2017-02-22 13:00 (+9d) | 0.2d? → 4d? | 534.5d → 64.1d |  |  |
| 262 | Definir tipos de datos para entidades de tipo transformación (traslación, rotación y escalado relativos y absolutos. Otras transformaciones) | 2017-02-13 09:00 → 2017-02-15 15:00 (+2d) | 2017-02-13 11:00 → 2017-02-22 11:00 (+9d) | 2h? → 23h? | 534.5d → 64.3d |  | resources none → Antonio |
| 263 | Implementar salida en modo texto | 2017-02-13 09:00 → 2017-02-22 11:00 (+9d) | 2017-02-13 11:00 → 2017-02-22 13:00 (+9d) |  | 534.5d → 64.1d |  | resources none → Antonio |
| 264 | **Iteracion 3** | 2017-02-21 11:00 → 2017-02-23 17:00 (+2d) | 2017-02-23 17:00 → 2017-02-28 11:00 (+5d) |  | 529.7d → 63.1d |  |  |
| 266 | Making of del proyecto | 2017-02-15 15:00 → 2017-02-23 17:00 (+8d) | 2017-02-17 19:00 → 2017-02-28 11:00 (+11d) |  | 530.7d → 63.1d |  |  |
| 267 | **NM** | 2017-02-21 11:00 → 2017-02-23 17:00 (+2d) | 2017-02-22 13:00 → 2017-02-24 19:00 (+2d) |  | 530.7d → 64.1d |  |  |
| 268 | **Definición de KPI's implementación** | 2017-02-21 11:00 → 2017-02-23 17:00 (+2d) | 2017-02-22 13:00 → 2017-02-24 19:00 (+2d) |  | 530.7d → 64.1d |  |  |
| 270 | **TAG** | 2017-02-21 11:00 → 2017-02-23 17:00 (+2d) | 2017-02-23 17:00 → 2017-02-28 11:00 (+5d) |  | 529.7d → 63.1d |  |  |
| 271 | **Tipos de datos para entidades de tipo cámara y luz (6)** | 2017-02-13 09:00 → 2017-02-23 17:00 (+10d) | 2017-02-13 11:00 → 2017-02-23 19:00 (+10d) |  | 534.5d → 64.9d |  |  |
| 272 | Definir tipos de datos para entidades de tipo cámara y luz (cámaras y luces de dos tipos). | 2017-02-13 09:00 → 2017-02-23 17:00 (+10d) | 2017-02-13 11:00 → 2017-02-23 19:00 (+10d) |  | 534.5d → 64.9d |  |  |
| 273 | Implementar salida en modo texto | 2017-02-13 09:00 → 2017-02-23 17:00 (+10d) | 2017-02-13 11:00 → 2017-02-23 19:00 (+10d) |  | 534.5d → 64.9d |  |  |
| 274 | **Tipos de datos para entidades de tipo malla (7)** | 2017-02-13 09:00 → 2017-02-23 17:00 (+10d) | 2017-02-13 17:00 → 2017-02-24 13:00 (+11d) |  | 534.1d → 64.5d |  |  |
| 275 | Definir tipos de datos para entidades de tipo malla | 2017-02-13 09:00 → 2017-02-23 17:00 (+10d) | 2017-02-13 17:00 → 2017-02-24 13:00 (+11d) |  | 534.1d → 64.5d |  |  |
| 276 | Implementar salida en modo texto | 2017-02-13 09:00 → 2017-02-23 17:00 (+10d) | 2017-02-13 11:00 → 2017-02-23 19:00 (+10d) |  | 534.5d → 64.9d |  |  |
| 277 | **Tipos de datos para entidades de tipo animación (8)** | 2017-02-13 09:00 → 2017-02-23 17:00 (+10d) | 2017-02-13 12:00 → 2017-02-24 10:00 (+11d) |  | 534.4d → 64.8d |  |  |
| 278 | Definir tipos de datos para entidades de tipo animación (cuadro a cuadro) | 2017-02-13 09:00 → 2017-02-23 17:00 (+10d) | 2017-02-13 12:00 → 2017-02-24 10:00 (+11d) |  | 534.4d → 64.8d |  |  |
| 279 | Implementar salida en modo texto | 2017-02-13 09:00 → 2017-02-23 17:00 (+10d) | 2017-02-13 11:00 → 2017-02-23 19:00 (+10d) |  | 534.5d → 64.9d |  |  |
| 280 | **Gestor de recursos (9)** | 2017-02-21 11:00 → 2017-02-23 17:00 (+2d) | 2017-02-22 12:00 → 2017-02-24 18:00 (+2d) |  | 530.8d → 64.2d |  |  |
| 281 | Cargar modelos en formato múltiple en las entidades de tipo malla | 2017-02-21 11:00 → 2017-02-23 17:00 (+2d) | 2017-02-22 12:00 → 2017-02-24 18:00 (+2d) |  | 530.8d → 64.2d |  |  |
| 282 | Cargar varios ficheros para animación | 2017-02-21 11:00 → 2017-02-23 17:00 (+2d) | 2017-02-22 12:00 → 2017-02-24 18:00 (+2d) |  | 530.8d → 64.2d |  |  |
| 283 | Implementar salida en modo texto | 2017-02-21 11:00 → 2017-02-23 17:00 (+2d) | 2017-02-21 13:00 → 2017-02-23 19:00 (+2d) |  | 531.5d → 64.9d |  |  |
| 284 | **Visualización (10,11)** | 2017-02-21 11:00 → 2017-02-23 17:00 (+2d) | 2017-02-23 17:00 → 2017-02-28 11:00 (+5d) |  | 529.7d → 63.1d |  |  |
| 285 | Realizar visualizador OpenGL 4.X de las entidades tipo malla. Shader básico. Integración con el motor. Sin materiales, texturas, cámara ni luces | 2017-02-21 11:00 → 2017-02-23 17:00 (+2d) | 2017-02-22 13:00 → 2017-02-24 19:00 (+2d) |  | 530.7d → 64.1d |  |  |
| 286 | Realizar visualizador OpenGL 4.X de las entidades tipo malla. Shader básico. Con cámaras y luces de varios tipos. Visualización con registro de cámaras y luces. | 2017-02-21 11:00 → 2017-02-23 17:00 (+2d) | 2017-02-23 17:00 → 2017-02-28 11:00 (+5d) |  | 529.7d → 63.1d |  |  |
| 287 | **Iteracion 4** | 2017-02-23 17:00 → 2017-02-28 11:00 (+5d) | 2017-03-23 17:00 → 2017-03-24 19:00 (+1d) | 16d? → 15d? | 528.7d → 63.1d |  |  |
| 288 | **NM** | 2017-02-27 09:00 → 2017-02-28 11:00 (+1d) | 2017-03-23 17:00 → 2017-03-24 19:00 (+1d) |  | 528.7d → 63.1d |  |  |
| 289 | **Valoración de los cuadros de mando** | 2017-02-27 09:00 → 2017-02-28 11:00 (+1d) | 2017-03-12 19:00 → 2017-03-14 11:00 (+2d) |  | 528.7d → 63.1d |  |  |
| 290 | Valorar los cuadros de mando | 2017-02-27 09:00 → 2017-02-28 11:00 (+1d) | 2017-03-12 19:00 → 2017-03-14 11:00 (+2d) |  | 528.7d → 63.1d |  |  |
| 291 | **Valoración KPI's definidos** | 2017-03-13 09:00 → 2017-03-14 11:00 (+1d) | 2017-03-23 17:00 → 2017-03-24 19:00 (+1d) |  | 528.7d → 63.1d |  |  |
| 292 | Valorar KPI's definidos | 2017-03-13 09:00 → 2017-03-14 11:00 (+1d) | 2017-03-23 17:00 → 2017-03-24 19:00 (+1d) |  | 528.7d → 63.1d |  |  |
| 293 | **TAG** | 2017-02-23 17:00 → 2017-02-28 11:00 (+5d) | 2017-02-28 11:00 → 2017-03-02 17:00 (+2d) |  | 542.7d → 76.1d |  |  |
| 294 | **Gestor de recursos (12)** | 2017-02-23 17:00 → 2017-02-28 11:00 (+5d) | 2017-02-28 11:00 → 2017-03-02 17:00 (+2d) |  | 542.7d → 76.1d |  |  |
| 295 | Cargar materiales y texturas. Salida en modo texto | 2017-02-23 17:00 → 2017-02-28 11:00 (+5d) | 2017-02-28 11:00 → 2017-03-02 17:00 (+2d) |  | 542.7d → 76.1d |  |  |
| 296 | **Visualización (13)** | 2017-02-23 17:00 → 2017-02-28 11:00 (+5d) | 2017-02-28 11:00 → 2017-03-02 17:00 (+2d) |  | 542.7d → 76.1d |  |  |
| 297 | Realizar visualizador OpenGL 4.X de las entidades tipo malla. Shader básico. Añadiendo materiales y texturas. | 2017-02-23 17:00 → 2017-02-28 11:00 (+5d) | 2017-02-28 11:00 → 2017-03-02 17:00 (+2d) |  | 542.7d → 76.1d |  |  |
| 298 | **Iteracion 5** | 2017-03-23 17:00 → 2017-03-24 19:00 (+1d) |  | 67.6d? → 66.6d? | 464.6d → 0d |  |  |
| 299 | **PM** | 2017-03-23 17:00 → 2017-03-24 19:00 (+1d) | 2017-03-23 17:00 → 2017-03-24 19:00 (+1d) |  | 532.2d → 66.6d |  |  |
| 300 | **Seguimiento** | 2017-03-23 17:00 → 2017-03-24 19:00 (+1d) | 2017-03-23 17:00 → 2017-03-24 19:00 (+1d) |  | 532.2d → 66.6d |  |  |
| 301 | Registrar de tiempos y % de realización de tareas en Project | 2017-03-23 17:00 → 2017-03-24 19:00 (+1d) | 2017-03-23 17:00 → 2017-03-24 19:00 (+1d) |  | 532.2d → 66.6d |  |  |
| 302 | Comparar la planificación prevista y real en Project hito 3 | 2017-03-23 17:00 → 2017-03-24 19:00 (+1d) | 2017-03-23 17:00 → 2017-03-24 19:00 (+1d) |  | 532.2d → 66.6d |  |  |
| 303 | Confeccionar Informes de iteración e informe resumen de Hito 3 | 2017-03-23 17:00 → 2017-03-24 19:00 (+1d) | 2017-03-23 17:00 → 2017-03-24 19:00 (+1d) |  | 532.2d → 66.6d |  |  |
| 304 | **Presentación** | 2017-03-23 17:00 → 2017-03-24 19:00 (+1d) | 2017-03-23 17:00 → 2017-03-24 19:00 (+1d) |  | 532.2d → 66.6d |  |  |
| 305 | Elaborar la presentación del Hito 3 | 2017-03-23 17:00 → 2017-03-24 19:00 (+1d) | 2017-03-23 17:00 → 2017-03-24 19:00 (+1d) |  | 532.2d → 66.6d |  |  |
| 306 | **SMA** | 2017-03-23 17:00 → 2017-03-27 09:00 (+4d) | 2017-03-24 19:00 → 2017-03-28 11:00 (+4d) |  | 531.2d → 65.6d |  |  |
| 307 | **Implementación front-end** | 2017-03-23 17:00 → 2017-03-27 09:00 (+4d) | 2017-03-24 19:00 → 2017-03-28 11:00 (+4d) |  | 531.2d → 65.6d |  |  |
| 308 | Implementar funcionalidades de front-end | 2017-03-23 17:00 → 2017-03-27 09:00 (+4d) | 2017-03-24 19:00 → 2017-03-28 11:00 (+4d) |  | 531.2d → 65.6d |  |  |
| 309 | **Documentación front-end** | 2017-03-23 17:00 → 2017-03-27 09:00 (+4d) | 2017-03-24 19:00 → 2017-03-28 11:00 (+4d) |  | 531.2d → 65.6d |  |  |
| 310 | Hacer documentación de esctructura de código y particularidades especiales | 2017-03-23 17:00 → 2017-03-27 09:00 (+4d) | 2017-03-24 19:00 → 2017-03-28 11:00 (+4d) |  | 531.2d → 65.6d |  |  |
| 314 | **ELE** | 2017-03-23 17:00 → 2017-03-27 09:00 (+4d) | 2017-03-24 19:00 → 2017-03-28 11:00 (+4d) |  | 531.2d → 65.6d |  |  |
| 315 | **Tarea 4** | 2017-03-23 17:00 → 2017-03-27 09:00 (+4d) | 2017-03-24 19:00 → 2017-03-28 11:00 (+4d) |  | 531.2d → 65.6d |  |  |
| 316 | Crear video | 2017-03-23 17:00 → 2017-03-27 09:00 (+4d) | 2017-03-24 19:00 → 2017-03-28 11:00 (+4d) |  | 531.2d → 65.6d |  |  |

| ID | Task | Start | Finish | Total float |
| --- | --- | --- | --- | --- |
| 317 | **TAG** | 2017-03-23 17:00 → 2017-03-27 09:00 (+4d) | 2017-03-30 10:00 → 2017-03-31 12:00 (+1d) | 528.7d → 63.1d |
| 318 | **Fachada (14)** | 2017-03-23 17:00 → 2017-03-27 09:00 (+4d) | 2017-03-28 18:00 → 2017-03-30 10:00 (+2d) | 529.7d → 64.1d |
| 319 | Crear fachada entre el motor y la aplicación | 2017-03-23 17:00 → 2017-03-27 09:00 (+4d) | 2017-03-28 18:00 → 2017-03-30 10:00 (+2d) | 529.7d → 64.1d |
| 320 | **Visualización (15)** | 2017-03-23 17:00 → 2017-03-27 09:00 (+4d) | 2017-03-30 10:00 → 2017-03-31 12:00 (+1d) | 528.7d → 63.1d |
| 321 | Realizar visualizador OpenGL 4.X con tres shaders avanzados | 2017-03-23 17:00 → 2017-03-27 09:00 (+4d) | 2017-03-30 10:00 → 2017-03-31 12:00 (+1d) | 528.7d → 63.1d |
| 322 | **HITO 4** | 2019-10-11 09:00 → 2017-07-20 11:00 (-813d) | 2019-12-02 19:00 → 2017-09-11 11:00 (-812d) |  |
| 323 | **PM** | 2019-10-11 09:00 → 2017-07-20 11:00 (-813d) | 2019-12-02 19:00 → 2017-09-11 11:00 (-812d) |  |
| 324 | **Planificación** | 2019-10-11 09:00 → 2017-07-20 11:00 (-813d) | 2019-12-02 19:00 → 2017-09-11 11:00 (-812d) |  |
| 325 | **Detallar plan iteraciones del mes de Abril-Mayo** | 2019-10-11 09:00 → 2017-07-20 11:00 (-813d) | 2019-12-02 19:00 → 2017-09-11 11:00 (-812d) |  |
| 326 | Creación Subtareas y precedencias en Project | 2019-10-11 09:00 → 2017-07-20 11:00 (-813d) | 2019-12-02 19:00 → 2017-09-11 11:00 (-812d) |  |
| 327 | Asignar recursos a las tareas en Project | 2019-10-11 09:00 → 2017-07-20 11:00 (-813d) | 2019-12-02 19:00 → 2017-09-11 11:00 (-812d) |  |
| 328 | **Seguimiento** | 2019-10-11 09:00 → 2017-07-20 11:00 (-813d) | 2019-12-02 19:00 → 2017-09-11 11:00 (-812d) |  |
| 329 | Registrar de tiempos y % de realización de tareas en Project | 2019-10-11 09:00 → 2017-07-20 11:00 (-813d) | 2019-12-02 19:00 → 2017-09-11 11:00 (-812d) |  |
| 330 | Comparar la planificación prevista y real en Project hito 4 | 2019-10-11 09:00 → 2017-07-20 11:00 (-813d) | 2019-12-02 19:00 → 2017-09-11 11:00 (-812d) |  |
| 331 | Confeccionar Informes de iteración e informe resumen de Hito 4 | 2019-10-11 09:00 → 2017-07-20 11:00 (-813d) | 2019-12-02 19:00 → 2017-09-11 11:00 (-812d) |  |
| 332 | **Presentación** | 2019-10-11 09:00 → 2017-07-20 11:00 (-813d) | 2019-12-02 19:00 → 2017-09-11 11:00 (-812d) |  |
| 333 | Elaborar la presentación del Hito 4 | 2019-10-11 09:00 → 2017-07-20 11:00 (-813d) | 2019-12-02 19:00 → 2017-09-11 11:00 (-812d) |  |
| 334 | Exponer la presentación del Hito 4 | 2019-10-11 09:00 → 2017-07-20 11:00 (-813d) | 2019-12-02 19:00 → 2017-09-11 11:00 (-812d) |  |
| 335 | **TAG** | 2019-10-11 09:00 → 2017-07-20 11:00 (-813d) | 2019-12-02 19:00 → 2017-09-11 11:00 (-812d) |  |
| 336 | **IGC** | 2019-10-11 09:00 → 2017-07-20 11:00 (-813d) | 2019-12-02 19:00 → 2017-09-11 11:00 (-812d) |  |
| 337 | **Aplicación** | 2019-10-11 09:00 → 2017-07-20 11:00 (-813d) | 2019-12-02 19:00 → 2017-09-11 11:00 (-812d) |  |
| 338 | Cargador de modelos | 2019-10-11 09:00 → 2017-07-20 11:00 (-813d) | 2019-12-02 19:00 → 2017-09-11 11:00 (-812d) |  |
| 339 | Movimiento del modelo, de las luces y de la cámara | 2019-10-11 09:00 → 2017-07-20 11:00 (-813d) | 2019-12-02 19:00 → 2017-09-11 11:00 (-812d) |  |
| 340 | Cambio de modelo, materiales y texturas | 2019-10-11 09:00 → 2017-07-20 11:00 (-813d) | 2019-12-02 19:00 → 2017-09-11 11:00 (-812d) |  |
| 341 | Animaciones | 2019-10-11 09:00 → 2017-07-20 11:00 (-813d) | 2019-12-02 19:00 → 2017-09-11 11:00 (-812d) |  |
| 342 | Integración con el motor | 2019-10-11 09:00 → 2017-07-20 11:00 (-813d) | 2019-12-02 19:00 → 2017-09-11 11:00 (-812d) |  |
| 343 | Optimizaciones del motor | 2019-10-11 09:00 → 2017-07-20 11:00 (-813d) | 2019-12-02 19:00 → 2017-09-11 11:00 (-812d) |  |
| 344 | Efectos visuales | 2019-10-11 09:00 → 2017-07-20 11:00 (-813d) | 2019-12-02 19:00 → 2017-09-11 11:00 (-812d) |  |
| 345 | **SMA** | 2019-10-11 09:00 → 2017-07-20 11:00 (-813d) | 2019-12-02 19:00 → 2017-09-11 11:00 (-812d) |  |
| 346 | Documento de pruebas donde se documenta las pruebas de las funcionalidades principales (por lo menos las interfaces principales) | 2019-10-11 09:00 → 2017-07-20 11:00 (-813d) | 2019-12-02 19:00 → 2017-09-11 11:00 (-812d) |  |
| 347 | Pruebas de la aplicación demostrando que no hay errores (falta de librerías, archivos que no se descargan, errores javascript) | 2019-10-11 09:00 → 2017-07-20 11:00 (-813d) | 2019-12-02 19:00 → 2017-09-11 11:00 (-812d) |  |
| 348 | Pruebas de seguridad de front end | 2019-10-11 09:00 → 2017-07-20 11:00 (-813d) | 2019-12-02 19:00 → 2017-09-11 11:00 (-812d) |  |
| 349 | Pruebas de rendimiento (velocidad de carga, que todo carga y no hay errores) | 2019-10-11 09:00 → 2017-07-20 11:00 (-813d) | 2019-12-02 19:00 → 2017-09-11 11:00 (-812d) |  |
| 350 | Validar las funcionalidades (comprobar que realmente han sido implementadas), las funcionalidades han quedado recogidas en las interfaces implementadas | 2019-10-11 09:00 → 2017-07-20 11:00 (-813d) | 2019-12-02 19:00 → 2017-09-11 11:00 (-812d) |  |
| 351 | Informe | 2019-10-11 09:00 → 2017-07-20 11:00 (-813d) | 2019-12-02 19:00 → 2017-09-11 11:00 (-812d) |  |
| 352 | **NM** | 2019-10-11 09:00 → 2017-07-20 11:00 (-813d) | 2019-12-02 19:00 → 2017-09-11 11:00 (-812d) |  |
| 353 | Validación del funcionamiento | 2019-10-11 09:00 → 2017-07-20 11:00 (-813d) | 2019-12-02 19:00 → 2017-09-11 11:00 (-812d) |  |
| 354 | Informe | 2019-10-11 09:00 → 2017-07-20 11:00 (-813d) | 2019-12-02 19:00 → 2017-09-11 11:00 (-812d) |  |
| 355 | **ELE** | 2019-10-11 09:00 → 2017-07-20 11:00 (-813d) | 2019-10-14 11:00 → 2017-07-21 13:00 (-815d) |  |
| 356 | **Tarea 5** | 2019-10-11 09:00 → 2017-07-20 11:00 (-813d) | 2019-10-14 11:00 → 2017-07-21 13:00 (-815d) |  |
| 357 | Grabar audio | 2019-10-11 09:00 → 2017-07-20 11:00 (-813d) | 2019-10-14 11:00 → 2017-07-21 13:00 (-815d) |  |
| 358 | **Tarea 6** | 2019-10-11 09:00 → 2017-07-20 11:00 (-813d) | 2019-10-14 11:00 → 2017-07-21 13:00 (-815d) |  |
| 359 | Hacer montaje | 2019-10-11 09:00 → 2017-07-20 11:00 (-813d) | 2019-10-14 11:00 → 2017-07-21 13:00 (-815d) |  |

## Version 5 (saved 2017-02-15)

Note of the change: cambio entregable 4 de SMA a carpeta Entrega

Last finish stays 2017-09-11.

Added:

| ID | Task | Duration | Start | Finish | Predecessors | Constraint | Resources |
| --- | --- | --- | --- | --- | --- | --- | --- |
| 223 | **Definición de KPI's e implementación** | 0.2d | 2017-02-03 09:00 | 2017-02-03 11:00 |  |  |  |
| 231 | **Integración Front-Back** | 0.8d? | 2017-02-13 09:00 | 2017-02-13 19:00 |  |  |  |
| 243 | Implementar KPI's | 3d? | 2017-02-20 11:00 | 2017-02-23 19:00 | 238 | start no earlier than 2017-02-20 09:00 | Jorge |
| 256 | **ELE** | 0.2d? | 2017-02-28 15:00 | 2017-02-28 17:00 |  |  |  |
| 319 | **SMBI** | 0d? | 2017-03-29 17:00 | 2017-03-29 17:00 |  |  |  |

Changed:

| ID | Task | Start | Finish | Duration | Total float | Predecessors | Other |
| --- | --- | --- | --- | --- | --- | --- | --- |
| 145 | **Iteración 2** |  |  | 13.75d? → 13.75d | 68.6d → 67.7d |  |  |
| 176 | **SMBI** | 2017-01-09 10:30 → 2017-01-11 09:00 (+2d) | 2017-01-10 12:30 → 2017-01-16 17:00 (+6d) | 1d? → 3d | 81.35d → 77d |  |  |
| 177 | Implementar back-end | 2017-01-09 10:30 → 2017-01-11 09:00 (+2d) | 2017-01-10 12:30 → 2017-01-16 17:00 (+6d) | 1d? → 3d | 81.35d → 77d |  | was named Implementar back-en; constraint none → start no earlier than 2017-01-11 09:00; resources none → Manuel |
| 185 | **SMA** |  | 2017-01-27 19:00 → 2017-01-09 13:00 (-18d) | 11.85d → 0.25d | 70.5d → 81.2d |  |  |
| 192 | **PM** |  | 2017-02-01 19:00 → 2017-02-02 10:00 (+1d) | 0.8d → 0.9d | 68.2d → 67.2d |  |  |
| 193 | **Planificación** |  | 2017-02-01 19:00 → 2017-02-02 10:00 (+1d) | 0.8d → 0.9d | 68.2d → 67.2d |  |  |
| 194 | **Detallar plan iteraciones del mes de Febrero-Marzo** |  | 2017-02-01 19:00 → 2017-02-02 10:00 (+1d) | 0.8d → 0.9d | 68.2d → 67.2d |  |  |
| 195 | Crear Subtareas y precedencias en Project |  | 2017-02-01 16:00 → 2017-02-01 17:00 | 5h → 6h | 68.2d → 67.2d |  |  |
| 196 | Asignar recursos a las tareas en Project. | 2017-02-01 16:00 → 2017-02-01 17:00 | 2017-02-01 19:00 → 2017-02-02 10:00 (+1d) |  | 68.2d → 67.2d |  |  |
| 204 | **SMA** | 2017-02-02 09:00 → 2017-02-02 10:00 |  | 5.6d → 5.5d | 63d → 62.1d |  |  |
| 205 | **Guía de estilos** | 2017-02-02 09:00 → 2017-02-02 10:00 | 2017-02-02 13:00 → 2017-02-02 16:00 |  | 68.2d → 67.2d |  |  |
| 206 | Hacer documento de guia de estilos | 2017-02-02 09:00 → 2017-02-02 10:00 | 2017-02-02 13:00 → 2017-02-02 16:00 |  | 68.2d → 67.2d |  | was named Crear guia de estilos |
| 208 | Implementar Panel de Administrador |  |  |  | 63d → 62.1d |  | was named Implementar Pane de Administrador |
| 215 | **Desarrollo Backend** |  |  |  | 67.3d → 66.6d |  | was named Implementación |
| 219 | **Pruebas funcionamiento** |  |  |  | 67.5d → 66.6d |  | was named Pruebas funciones |
| 220 | Probar PUT |  |  |  | 67.7d → 66.6d | 217 → 218 |  |
| 221 | Probar DELETE |  |  |  | 67.5d → 66.6d | 218 → 220 |  |
| 225 | **Iteración 2** |  | 2017-02-23 17:00 → 2017-02-28 13:00 (+5d) | 7d? → 9.2d? | 63d → 60.9d |  |  |
| 226 | **SMBI** | 2017-02-13 09:00 → 2017-02-15 09:00 (+2d) | 2017-02-22 13:00 → 2017-02-24 13:00 (+2d) | 6d → 6d? | 64.1d → 62.5d |  |  |
| 227 | Hacer GET BY de todas las entidades | 2017-02-13 09:00 → 2017-02-15 09:00 (+2d) | 2017-02-15 13:00 → 2017-02-17 13:00 (+2d) | 2d → 2d? | 64.1d → 62.5d |  | constraint none → start no earlier than 2017-02-15 09:00 |
| 228 | Hacer DELETE BY de todas las entidades | 2017-02-15 15:00 → 2017-02-17 15:00 (+2d) | 2017-02-17 19:00 → 2017-02-21 19:00 (+4d) | 2d → 2d? | 64.1d → 62.5d |  |  |
| 229 | Conseguir atributos de una entidad a partir de un GET a otra entidad | 2017-02-20 09:00 → 2017-02-22 09:00 (+2d) | 2017-02-22 13:00 → 2017-02-24 13:00 (+2d) | 2d → 2d? | 64.1d → 62.5d |  |  |
| 230 | **SMA** |  | 2017-02-20 17:00 → 2017-02-15 16:00 (-5d) | 4.6d → 2.1d? | 65.5d → 68d |  |  |
| 232 | Hacer documento de relación entre back-end y front-end (detalle desde dónde se llama a la API en el front-end) | 2017-01-27 09:00 → 2017-02-13 09:00 (+17d) | 2017-01-27 19:00 → 2017-02-13 19:00 (+17d) | 8h → 8h? | 70.5d → 69.3d |  | was named Integración Front-Back: documento de relación entre back-end y front-end; resources Ricardo → Manuel |
| 233 | Definir interfaces |  | 2017-02-16 11:00 → 2017-02-13 10:00 (-3d) | 2.6d → 1h? | 67.5d → 68d |  | resources Nahiara; Ricardo → Nahiara; Ricardo; Antonio |
| 234 | Crear interfaces para front-end | 2017-02-15 15:00 → 2017-02-13 10:00 (-2d) | 2017-02-20 17:00 → 2017-02-15 16:00 (-5d) | 2.6d → 2d? | 65.5d → 68d | none → 233 | resources Nahiara; Ricardo → Nahiara; Ricardo; Antonio |
| 235 | **PD** |  | 2017-02-23 17:00 → 2017-02-23 18:00 | 7d? → 7.1d? | 63.1d → 62.1d |  |  |
| 236 | **Trailer del proyecto** |  | 2017-02-23 17:00 → 2017-02-20 11:00 (-3d) | 7d? → 4.2d? | 63.1d → 60.9d |  |  |
| 237 | Grabar video |  | 2017-02-16 17:00 → 2017-02-15 13:00 (-1d) | 3d? → 2d? | 63.1d → 62.1d |  | resources Jorge; Antonio → Jorge |
| 238 | Editar video | 2017-02-21 11:00 → 2017-02-17 09:00 (-4d) | 2017-02-23 17:00 → 2017-02-20 11:00 (-3d) | 2d? → 1d? | 63.1d → 60.9d |  | constraint none → start no earlier than 2017-02-17 09:00; resources Jorge; Antonio → Jorge |
| 239 | **Creditos** | 2017-02-16 17:00 → 2017-02-22 09:00 (+6d) | 2017-02-20 16:00 → 2017-02-23 18:00 (+3d) |  | 65.6d → 63d |  |  |
| 240 | Crear creditos | 2017-02-16 17:00 → 2017-02-22 09:00 (+6d) | 2017-02-20 16:00 → 2017-02-23 18:00 (+3d) |  | 65.6d → 63d | 237 → none | constraint none → start no earlier than 2017-02-22 09:00 |
| 241 | **NM** | 2017-02-13 09:00 → 2017-02-20 11:00 (+7d) | 2017-02-23 17:00 → 2017-02-28 13:00 (+5d) | 7d? → 5d? | 63d → 60.9d |  |  |
| 242 | **Definición de KPI's implementación** | 2017-02-03 09:00 → 2017-02-20 11:00 (+17d) | 2017-02-03 11:00 → 2017-02-23 19:00 (+20d) | 0.2d → 3d? | 67.6d → 60.9d |  |  |
| 244 | **Definición de cuadros de mando e implementación** | 2017-02-16 17:00 → 2017-02-24 09:00 (+8d) | 2017-02-23 17:00 → 2017-02-28 13:00 (+5d) | 4d? → 2d? | 63d → 60.9d |  |  |
| 245 | Definir cuadros de mando | 2017-02-16 17:00 → 2017-02-24 09:00 (+8d) | 2017-02-21 11:00 → 2017-02-28 13:00 (+7d) |  | 63d → 60.9d | 263 → 243 |  |
| 246 | **ELE** | 2017-02-13 09:00 → 2017-02-20 09:00 (+7d) | 2017-02-20 19:00 → 2017-02-20 17:00 | 4.8d? → 0.6d? | 65.3d → 65.5d |  |  |
| 247 | **Tarea 2** | 2017-02-13 09:00 → 2017-02-20 09:00 (+7d) | 2017-02-13 17:00 → 2017-02-20 17:00 (+7d) |  | 65.3d → 65.5d |  |  |
| 248 | Hacer guión | 2017-02-13 09:00 → 2017-02-20 09:00 (+7d) | 2017-02-13 12:00 → 2017-02-20 12:00 (+7d) |  | 65.3d → 65.5d |  | constraint none → start no earlier than 2017-02-20 09:00 |
| 249 | Hacer guión gráfico | 2017-02-13 12:00 → 2017-02-20 12:00 (+7d) | 2017-02-13 17:00 → 2017-02-20 17:00 (+7d) |  | 65.3d → 65.5d |  |  |
| 250 | **TAG** | 2017-02-15 15:00 → 2017-02-16 09:00 (+1d) | 2017-02-22 13:00 → 2017-02-21 10:00 (-1d) | 4d? → 2.5d? | 64.1d → 65.2d |  |  |
| 251 | **Árbol de la escena** | 2017-02-15 15:00 → 2017-02-16 09:00 (+1d) | 2017-02-22 13:00 → 2017-02-21 10:00 (-1d) | 4d? → 2.5d? | 64.1d → 65.2d |  |  |
| 252 | **Tipos de datos para entidades de tipo transformación (5)** | 2017-02-15 15:00 → 2017-02-16 09:00 (+1d) | 2017-02-22 13:00 → 2017-02-21 10:00 (-1d) | 4d? → 2.5d? | 64.1d → 65.2d |  |  |
| 253 | Definir tipos de datos para entidades de tipo transformación (traslación, rotación y escalado relativos y absolutos. Otras transformaciones) | 2017-02-15 15:00 → 2017-02-16 09:00 (+1d) | 2017-02-22 11:00 → 2017-02-20 18:00 (-2d) |  | 64.3d → 65.2d |  | constraint none → start no earlier than 2017-02-16 09:00; resources Antonio → Antonio; Nahiara |
| 254 | Implementar salida en modo texto | 2017-02-22 11:00 → 2017-02-20 18:00 (-2d) | 2017-02-22 13:00 → 2017-02-21 10:00 (-1d) |  | 64.1d → 65.2d | none → 253 | resources Antonio → Antonio; Nahiara |
| 255 | **Iteracion 3** | 2017-02-23 17:00 → 2017-02-28 15:00 (+5d) | 2017-02-28 11:00 → 2017-03-02 19:00 (+2d) |  | 63.1d → 60.9d |  |  |
| 257 | **Tarea 3** | 2017-02-20 17:00 → 2017-02-28 15:00 (+8d) | 2017-02-20 19:00 → 2017-02-28 17:00 (+8d) |  | 65.3d → 62.7d |  |  |
| 258 | Definir tecnologias | 2017-02-20 17:00 → 2017-02-28 15:00 (+8d) | 2017-02-20 19:00 → 2017-02-28 17:00 (+8d) |  | 65.3d → 62.7d |  |  |
| 259 | **PD** | 2017-02-23 17:00 → 2017-02-28 15:00 (+5d) | 2017-02-28 11:00 → 2017-03-02 19:00 (+2d) |  | 63.1d → 60.9d |  |  |
| 260 | Making of del proyecto | 2017-02-23 17:00 → 2017-02-28 15:00 (+5d) | 2017-02-28 11:00 → 2017-03-02 19:00 (+2d) |  | 63.1d → 60.9d |  | resources Jorge → Antonio |
| 261 | **NM** | 2017-02-23 17:00 → 2017-02-28 15:00 (+5d) | 2017-02-24 19:00 → 2017-03-01 17:00 (+5d) |  | 64.1d → 61.9d |  |  |
| 262 | **Despliegue de la infraestructura del proyecto** | 2017-02-13 09:00 → 2017-02-28 15:00 (+15d) | 2017-02-14 11:00 → 2017-03-01 17:00 (+15d) |  | 63d → 61.9d |  |  |
| 263 | Desplegar infraestructura del proyecto | 2017-02-13 09:00 → 2017-02-28 15:00 (+15d) | 2017-02-14 11:00 → 2017-03-01 17:00 (+15d) |  | 63d → 61.9d |  |  |
| 264 | Implementar cuadros de mando | 2017-02-22 15:00 → 2017-02-28 15:00 (+6d) | 2017-02-23 17:00 → 2017-03-01 17:00 (+6d) |  | 63.1d → 61.9d | 245 → none | resources Jorge → none |
| 265 | **Definición de KPI's implementación** | 2017-02-23 17:00 → 2017-02-28 15:00 (+5d) | 2017-02-24 19:00 → 2017-03-01 17:00 (+5d) |  | 64.1d → 61.9d |  |  |
| 266 | Implementar KPI's | 2017-02-23 17:00 → 2017-02-28 15:00 (+5d) | 2017-02-24 19:00 → 2017-03-01 17:00 (+5d) |  | 64.1d → 61.9d |  |  |
| 267 | **TAG** | 2017-02-23 17:00 → 2017-02-28 15:00 (+5d) | 2017-02-28 11:00 → 2017-02-28 17:00 | 2d? → 0.2d? | 63.1d → 62.7d |  |  |
| 268 | **Tipos de datos para entidades de tipo cámara y luz (6)** | 2017-02-23 17:00 → 2017-02-28 15:00 (+5d) | 2017-02-23 19:00 → 2017-02-28 17:00 (+5d) |  | 64.9d → 62.7d |  |  |
| 269 | Definir tipos de datos para entidades de tipo cámara y luz (cámaras y luces de dos tipos). | 2017-02-23 17:00 → 2017-02-28 15:00 (+5d) | 2017-02-23 19:00 → 2017-02-28 17:00 (+5d) |  | 64.9d → 62.7d |  |  |
| 270 | Implementar salida en modo texto | 2017-02-23 17:00 → 2017-02-28 15:00 (+5d) | 2017-02-23 19:00 → 2017-02-28 17:00 (+5d) |  | 64.9d → 62.7d |  |  |
| 271 | **Iteracion 4** | 2017-02-28 11:00 → 2017-03-03 09:00 (+3d) | 2017-03-24 19:00 → 2017-03-29 17:00 (+5d) |  | 63.1d → 60.9d |  |  |
| 272 | **NM** | 2017-02-28 11:00 → 2017-03-03 09:00 (+3d) | 2017-03-24 19:00 → 2017-03-29 17:00 (+5d) |  | 63.1d → 60.9d |  |  |
| 273 | **Valoración de los cuadros de mando** | 2017-02-28 11:00 → 2017-03-03 09:00 (+3d) | 2017-03-14 11:00 → 2017-03-16 19:00 (+2d) |  | 63.1d → 60.9d |  |  |
| 274 | Valorar los cuadros de mando | 2017-02-28 11:00 → 2017-03-03 09:00 (+3d) | 2017-03-14 11:00 → 2017-03-16 19:00 (+2d) |  | 63.1d → 60.9d |  |  |
| 275 | **Valoración KPI's definidos** | 2017-03-14 11:00 → 2017-03-17 09:00 (+3d) | 2017-03-24 19:00 → 2017-03-29 17:00 (+5d) |  | 63.1d → 60.9d |  |  |
| 276 | Valorar KPI's definidos | 2017-03-14 11:00 → 2017-03-17 09:00 (+3d) | 2017-03-24 19:00 → 2017-03-29 17:00 (+5d) |  | 63.1d → 60.9d |  |  |
| 277 | **TAG** | 2017-02-28 11:00 → 2017-03-03 09:00 (+3d) | 2017-03-02 17:00 → 2017-03-06 10:00 (+4d) | 2d? → 0.9d? | 76.1d → 75d |  |  |
| 278 | **Tipos de datos para entidades de tipo malla (7)** | 2017-02-23 17:00 → 2017-03-03 09:00 (+8d) | 2017-02-24 13:00 → 2017-03-03 17:00 (+7d) |  | 64.5d → 75.3d |  |  |
| 279 | Definir tipos de datos para entidades de tipo malla | 2017-02-23 17:00 → 2017-03-03 09:00 (+8d) | 2017-02-24 13:00 → 2017-03-03 17:00 (+7d) |  | 64.5d → 75.3d |  |  |
| 280 | Implementar salida en modo texto | 2017-02-23 17:00 → 2017-03-03 09:00 (+8d) | 2017-02-23 19:00 → 2017-03-03 11:00 (+8d) |  | 64.9d → 75.7d |  |  |

| ID | Task | Start | Finish | Duration | Total float |
| --- | --- | --- | --- | --- | --- |
| 281 | **Tipos de datos para entidades de tipo animación (8)** | 2017-02-23 17:00 → 2017-03-03 09:00 (+8d) | 2017-02-24 10:00 → 2017-03-03 12:00 (+7d) |  | 64.8d → 75.6d |
| 282 | Definir tipos de datos para entidades de tipo animación (cuadro a cuadro) | 2017-02-23 17:00 → 2017-03-03 09:00 (+8d) | 2017-02-24 10:00 → 2017-03-03 12:00 (+7d) |  | 64.8d → 75.6d |
| 283 | Implementar salida en modo texto | 2017-02-23 17:00 → 2017-03-03 09:00 (+8d) | 2017-02-23 19:00 → 2017-03-03 11:00 (+8d) |  | 64.9d → 75.7d |
| 284 | **Gestor de recursos (9)** | 2017-02-23 17:00 → 2017-03-03 09:00 (+8d) | 2017-02-24 18:00 → 2017-03-06 10:00 (+10d) |  | 64.2d → 75d |
| 285 | Cargar modelos en formato múltiple en las entidades de tipo malla | 2017-02-23 17:00 → 2017-03-03 09:00 (+8d) | 2017-02-24 18:00 → 2017-03-06 10:00 (+10d) |  | 64.2d → 75d |
| 286 | Cargar varios ficheros para animación | 2017-02-23 17:00 → 2017-03-03 09:00 (+8d) | 2017-02-24 18:00 → 2017-03-06 10:00 (+10d) |  | 64.2d → 75d |
| 287 | Implementar salida en modo texto | 2017-02-23 17:00 → 2017-03-03 09:00 (+8d) | 2017-02-23 19:00 → 2017-03-03 11:00 (+8d) |  | 64.9d → 75.7d |
| 288 | **Iteracion 5** | 2017-03-24 19:00 → 2017-03-29 17:00 (+5d) |  | 66.6d? → 64.4d? |  |
| 289 | **PM** | 2017-03-24 19:00 → 2017-03-29 17:00 (+5d) | 2017-03-24 19:00 → 2017-03-29 17:00 (+5d) |  | 66.6d → 64.4d |
| 290 | **Seguimiento** | 2017-03-24 19:00 → 2017-03-29 17:00 (+5d) | 2017-03-24 19:00 → 2017-03-29 17:00 (+5d) |  | 66.6d → 64.4d |
| 291 | Registrar de tiempos y % de realización de tareas en Project | 2017-03-24 19:00 → 2017-03-29 17:00 (+5d) | 2017-03-24 19:00 → 2017-03-29 17:00 (+5d) |  | 66.6d → 64.4d |
| 292 | Comparar la planificación prevista y real en Project hito 3 | 2017-03-24 19:00 → 2017-03-29 17:00 (+5d) | 2017-03-24 19:00 → 2017-03-29 17:00 (+5d) |  | 66.6d → 64.4d |
| 293 | Confeccionar Informes de iteración e informe resumen de Hito 3 | 2017-03-24 19:00 → 2017-03-29 17:00 (+5d) | 2017-03-24 19:00 → 2017-03-29 17:00 (+5d) |  | 66.6d → 64.4d |
| 294 | **Presentación** | 2017-03-24 19:00 → 2017-03-29 17:00 (+5d) | 2017-03-24 19:00 → 2017-03-29 17:00 (+5d) |  | 66.6d → 64.4d |
| 295 | Elaborar la presentación del Hito 3 | 2017-03-24 19:00 → 2017-03-29 17:00 (+5d) | 2017-03-24 19:00 → 2017-03-29 17:00 (+5d) |  | 66.6d → 64.4d |
| 296 | **SMA** | 2017-03-27 09:00 → 2017-03-29 17:00 (+2d) | 2017-03-28 11:00 → 2017-03-30 19:00 (+2d) |  | 65.6d → 63.4d |
| 297 | **Implementación front-end** | 2017-03-27 09:00 → 2017-03-29 17:00 (+2d) | 2017-03-28 11:00 → 2017-03-30 19:00 (+2d) |  | 65.6d → 63.4d |
| 298 | Implementar funcionalidades de front-end | 2017-03-27 09:00 → 2017-03-29 17:00 (+2d) | 2017-03-28 11:00 → 2017-03-30 19:00 (+2d) |  | 65.6d → 63.4d |
| 299 | **Documentación front-end** | 2017-03-27 09:00 → 2017-03-29 17:00 (+2d) | 2017-03-28 11:00 → 2017-03-30 19:00 (+2d) |  | 65.6d → 63.4d |
| 300 | Hacer documentación de esctructura de código y particularidades especiales | 2017-03-27 09:00 → 2017-03-29 17:00 (+2d) | 2017-03-28 11:00 → 2017-03-30 19:00 (+2d) |  | 65.6d → 63.4d |
| 304 | **ELE** | 2017-03-27 09:00 → 2017-03-29 17:00 (+2d) | 2017-03-28 11:00 → 2017-03-30 19:00 (+2d) |  | 65.6d → 63.4d |
| 305 | **Tarea 4** | 2017-03-27 09:00 → 2017-03-29 17:00 (+2d) | 2017-03-28 11:00 → 2017-03-30 19:00 (+2d) |  | 65.6d → 63.4d |
| 306 | Crear video | 2017-03-27 09:00 → 2017-03-29 17:00 (+2d) | 2017-03-28 11:00 → 2017-03-30 19:00 (+2d) |  | 65.6d → 63.4d |
| 307 | **TAG** | 2017-03-27 09:00 → 2017-03-29 17:00 (+2d) | 2017-03-31 12:00 → 2017-04-05 10:00 (+5d) |  | 63.1d → 60.9d |
| 308 | **Visualización (10,11)** | 2017-02-23 17:00 → 2017-03-29 17:00 (+34d) | 2017-02-28 11:00 → 2017-04-03 11:00 (+34d) |  | 63.1d → 62.4d |
| 309 | Realizar visualizador OpenGL 4.X de las entidades tipo malla. Shader básico. Integración con el motor. Sin materiales, texturas, cámara ni luces | 2017-02-23 17:00 → 2017-03-29 17:00 (+34d) | 2017-02-24 19:00 → 2017-03-30 19:00 (+34d) |  | 64.1d → 63.4d |
| 310 | Realizar visualizador OpenGL 4.X de las entidades tipo malla. Shader básico. Con cámaras y luces de varios tipos. Visualización con registro de cámaras y luces. | 2017-02-23 17:00 → 2017-03-29 17:00 (+34d) | 2017-02-28 11:00 → 2017-04-03 11:00 (+34d) |  | 63.1d → 62.4d |
| 311 | **Gestor de recursos (12)** | 2017-02-28 11:00 → 2017-03-29 17:00 (+29d) | 2017-03-02 17:00 → 2017-04-03 11:00 (+32d) |  | 76.1d → 62.4d |
| 312 | Cargar materiales y texturas. Salida en modo texto | 2017-02-28 11:00 → 2017-03-29 17:00 (+29d) | 2017-03-02 17:00 → 2017-04-03 11:00 (+32d) |  | 76.1d → 62.4d |
| 313 | **Visualización (13)** | 2017-02-28 11:00 → 2017-03-29 17:00 (+29d) | 2017-03-02 17:00 → 2017-04-03 11:00 (+32d) |  | 76.1d → 62.4d |
| 314 | Realizar visualizador OpenGL 4.X de las entidades tipo malla. Shader básico. Añadiendo materiales y texturas. | 2017-02-28 11:00 → 2017-03-29 17:00 (+29d) | 2017-03-02 17:00 → 2017-04-03 11:00 (+32d) |  | 76.1d → 62.4d |
| 315 | **Fachada (14)** | 2017-03-27 09:00 → 2017-03-29 17:00 (+2d) | 2017-03-30 10:00 → 2017-04-03 18:00 (+4d) |  | 64.1d → 61.9d |
| 316 | Crear fachada entre el motor y la aplicación | 2017-03-27 09:00 → 2017-03-29 17:00 (+2d) | 2017-03-30 10:00 → 2017-04-03 18:00 (+4d) |  | 64.1d → 61.9d |
| 317 | **Visualización (15)** | 2017-03-27 09:00 → 2017-03-29 17:00 (+2d) | 2017-03-31 12:00 → 2017-04-05 10:00 (+5d) |  | 63.1d → 60.9d |
| 318 | Realizar visualizador OpenGL 4.X con tres shaders avanzados | 2017-03-27 09:00 → 2017-03-29 17:00 (+2d) | 2017-03-31 12:00 → 2017-04-05 10:00 (+5d) |  | 63.1d → 60.9d |
| 320 | **Validación** | 2017-01-09 10:30 → 2017-03-29 17:00 (+79d) | 2017-01-09 10:30 → 2017-03-29 17:00 (+79d) | 0d → 0d? | 82.35d → 64.4d |
| 321 | Validar el funcionamiento del backend (Pruebas API Rest Full) | 2017-01-28 17:00 → 2017-03-29 17:00 (+60d) | 2017-01-30 19:00 → 2017-03-30 19:00 (+59d) |  | 68.9d → 63.4d |
| 322 | **Pruebas** | 2017-01-09 10:30 → 2017-03-29 17:00 (+79d) | 2017-01-09 10:30 → 2017-03-29 17:00 (+79d) |  | 82.35d → 64.4d |
| 323 | Hacer pruebas de integración | 2017-01-09 10:30 → 2017-03-29 17:00 (+79d) | 2017-01-11 09:30 → 2017-03-31 16:00 (+79d) |  | 79.35d → 61.4d |
| 324 | Hacer pruebas funcionales | 2017-01-11 09:30 → 2017-03-31 16:00 (+79d) | 2017-01-12 11:30 → 2017-04-03 18:00 (+81d) |  | 79.35d → 61.4d |
| 325 | Hacer pruebas de regresión | 2017-01-13 09:00 → 2017-04-03 18:00 (+80d) | 2017-01-13 16:00 → 2017-04-04 13:00 (+81d) |  | 78.8d → 61.4d |
| 326 | Hacer pruebas de carga y rendimiento | 2017-01-28 17:00 → 2017-03-29 17:00 (+60d) | 2017-01-30 19:00 → 2017-03-30 19:00 (+59d) |  | 68.9d → 63.4d |

## Version 6 (saved 2017-02-21)

Note of the change: Interfaces Version 1.0

Last finish stays 2017-09-11.

Added:

| ID | Task | Duration | Start | Finish | Constraint | Resources |
| --- | --- | --- | --- | --- | --- | --- |
| 235 | Diseñar Pagina Principal | 1d? | 2017-02-15 09:00 | 2017-02-21 12:00 | start no earlier than 2017-02-15 09:00 | Nahiara |
| 236 | Diseñar Página Login | 1d? | 2017-02-13 09:00 | 2017-02-14 11:00 |  |  |
| 237 | Diseñar Página Profesor | 1d? | 2017-02-13 09:00 | 2017-02-14 11:00 |  |  |
| 238 | Diseñar Página Padre | 1d? | 2017-02-13 09:00 | 2017-02-14 11:00 |  |  |
| 239 | Diseñar Página Alumno | 1d? | 2017-02-13 09:00 | 2017-02-14 11:00 |  |  |
| 240 | Diseñar Página Admin | 1d? | 2017-02-13 09:00 | 2017-02-14 11:00 |  |  |
| 241 | Diseñar Página Gestor | 1d? | 2017-02-13 09:00 | 2017-02-14 11:00 |  |  |
| 242 | Diseñar Página Sobre Nosotros | 1d? | 2017-02-13 09:00 | 2017-02-14 11:00 |  |  |
| 243 | Diseñar Página Contacto | 1d? | 2017-02-13 09:00 | 2017-02-14 11:00 |  |  |
| 244 | Diseñar Página Mapa | 1d? | 2017-02-13 09:00 | 2017-02-14 11:00 |  |  |
| 245 | Diseñar Página Ajustes | 1d? | 2017-02-13 09:00 | 2017-02-14 11:00 |  |  |
| 246 | Diseñar Página Seguimiento | 1d? | 2017-02-13 09:00 | 2017-02-14 11:00 |  |  |
| 247 | Diseñar Página Mensajes | 1d? | 2017-02-13 09:00 | 2017-02-14 11:00 |  |  |
| 248 | Diseñar Página Tareas | 1d? | 2017-02-13 09:00 | 2017-02-14 11:00 |  |  |
| 249 | Diseñar Página Materiales | 1d? | 2017-02-13 09:00 | 2017-02-14 11:00 |  |  |
| 250 | Diseñar Página Autorizaciones | 1d? | 2017-02-13 09:00 | 2017-02-14 11:00 |  |  |
| 251 | Diseñar Página Anuncios | 1d? | 2017-02-13 09:00 | 2017-02-14 11:00 |  |  |

Changed:

| ID | Task | Start | Finish | Duration | Total float | Predecessors | Other |
| --- | --- | --- | --- | --- | --- | --- | --- |
| 230 | **SMA** |  | 2017-02-15 16:00 → 2017-02-21 12:00 (+6d) | 2.1d? → 5.1d? | 68d → 65d |  |  |
| 234 | **Diseño de interfaces para front-end** | 2017-02-13 10:00 → 2017-02-13 09:00 | 2017-02-15 16:00 → 2017-02-21 12:00 (+6d) | 2d? → 5.1d? | 68d → 65d | 233 → none | was named Crear interfaces para front-end; resources Nahiara; Ricardo; Antonio → none |

## Version 7 (saved 2017-02-27)

Note of the change: Interfaces de Pagina de usuarios y actualizacion de Projects

Last finish stays 2017-09-11.

Added:

| ID | Task | Duration | Start | Finish | Predecessors | Constraint | Resources |
| --- | --- | --- | --- | --- | --- | --- | --- |
| 225 | **PM** | 0.4d | 2017-02-10 09:00 | 2017-02-10 13:00 |  |  |  |
| 226 | **Seguimiento** | 0.4d | 2017-02-10 09:00 | 2017-02-10 13:00 |  |  |  |
| 227 | Registrar de tiempos y % de realización de tareas en Project | 1h | 2017-02-10 09:00 | 2017-02-10 10:00 |  | start no earlier than 2017-02-10 09:00 | Nahiara |
| 228 | Comparar la planificación prevista y real en Project hito 3 | 1.5h | 2017-02-10 10:00 | 2017-02-10 11:30 | 227 |  | Nahiara |
| 229 | Confeccionar Informes de iteración e informe resumen de Hito 3 | 1.5h | 2017-02-10 11:30 | 2017-02-10 13:00 | 228 |  | Nahiara |
| 251 | Diseñar Página Mis datos | 1.5h | 2017-02-13 09:00 | 2017-02-13 10:30 |  |  | Nahaira |
| 258 | Diseñar Pagina Publicar Anuncio | 1d? | 2017-02-13 09:00 | 2017-02-14 11:00 |  |  |  |
| 259 | Diseñar Página Subir Material | 1d? | 2017-02-13 09:00 | 2017-02-14 11:00 |  |  |  |
| 267 | **Seguimiento** | 0.2d | 2017-02-24 09:00 | 2017-02-24 11:00 |  |  |  |
| 268 | Confeccionar Informes de iteración e informe resumen de Hito 3 | 2h | 2017-02-24 09:00 | 2017-02-24 11:00 |  | start no earlier than 2017-02-24 09:00 | Jorge |
| 278 | **PM** | 0.4d? | 2017-02-25 09:00 | 2017-02-25 13:00 |  |  |  |
| 279 | **Seguimiento** | 0.4d? | 2017-02-25 09:00 | 2017-02-25 13:00 |  |  |  |
| 280 | Registrar de tiempos y % de realización de tareas en Project | 1h? | 2017-02-25 09:00 | 2017-02-25 10:00 |  | start no earlier than 2017-02-25 09:00 | Nahiara |
| 281 | Comparar la planificación prevista y real en Project hito 3 | 1.5h? | 2017-02-25 10:00 | 2017-02-25 11:30 | 280 |  | Nahiara |
| 282 | Confeccionar Informes de iteración e informe resumen de Hito 3 | 1.5h? | 2017-02-25 11:30 | 2017-02-25 13:00 | 281 |  | Nahiara |
| 284 | **PM** | 1d? | 2017-02-27 09:00 | 2017-02-28 11:00 |  |  |  |
| 285 | **Planificación** | 1d? | 2017-02-27 09:00 | 2017-02-28 11:00 |  |  |  |
| 286 | **Detallar plan iteración** | 1d? | 2017-02-27 09:00 | 2017-02-28 11:00 |  |  |  |
| 287 | Crear Subtareas y precedencias en Project | 1d? | 2017-02-27 09:00 | 2017-02-28 11:00 |  | start no earlier than 2017-02-27 09:00 |  |
| 288 | Asignar recursos a las tareas en Project. | 1d? | 2017-02-27 09:00 | 2017-02-28 11:00 |  | start no earlier than 2017-02-27 09:00 |  |
| 308 | **PM** | 1d? | 2017-02-25 15:00 | 2017-02-27 17:00 |  |  |  |
| 309 | **Seguimiento** | 1d? | 2017-02-25 15:00 | 2017-02-27 17:00 |  |  |  |
| 310 | Registrar de tiempos y % de realización de tareas en Project | 1d? | 2017-02-25 15:00 | 2017-02-27 17:00 |  |  |  |
| 311 | Comparar la planificación prevista y real en Project hito 3 | 1d? | 2017-02-25 15:00 | 2017-02-27 17:00 |  |  |  |
| 312 | Confeccionar Informes de iteración e informe resumen de Hito 3 | 1d? | 2017-02-25 15:00 | 2017-02-27 17:00 |  |  |  |
| 330 | **PM** | 1d? | 2017-03-07 15:00 | 2017-03-08 17:00 |  |  |  |
| 331 | **Seguimiento** | 1d? | 2017-03-07 15:00 | 2017-03-08 17:00 |  |  |  |
| 332 | Registrar de tiempos y % de realización de tareas en Project | 1d? | 2017-03-07 15:00 | 2017-03-08 17:00 |  |  |  |
| 333 | Comparar la planificación prevista y real en Project hito 3 | 1d? | 2017-03-07 15:00 | 2017-03-08 17:00 |  |  |  |
| 334 | Confeccionar Informes de iteración e informe resumen de Hito 3 | 1d? | 2017-03-07 15:00 | 2017-03-08 17:00 |  |  |  |

Changed:

| ID | Task | Start | Finish | Duration | Total float | Predecessors | Other |
| --- | --- | --- | --- | --- | --- | --- | --- |
| 190 | **HITO 3** |  |  | 97d? → 97.8d? |  |  |  |
| 230 | **Iteración 2** |  | 2017-02-28 13:00 → 2017-02-25 13:00 (-3d) | 9.2d? → 8.4d? | 60.9d → 58.9d |  |  |
| 235 | **SMA** |  | 2017-02-21 12:00 → 2017-02-22 16:30 (+1d) | 5.1d? → 6.15d? | 65d → 61.15d |  |  |
| 239 | **Diseño de interfaces para front-end (Estructura de Pag)** |  | 2017-02-21 12:00 → 2017-02-22 16:30 (+1d) | 5.1d? → 6.15d? | 65d → 61.15d |  | was named Diseño de interfaces para front-end |
| 240 | Diseñar Pagina Principal |  | 2017-02-21 12:00 → 2017-02-15 12:00 (-6d) | 1d? → 3h? | 65d → 60.95d |  | resources Nahiara → Nahiara; Antonio |
| 241 | Diseñar Página Login | 2017-02-13 09:00 → 2017-02-15 12:00 (+2d) | 2017-02-14 11:00 → 2017-02-15 17:00 (+1d) | 1d? → 0.3d? | 69.1d → 60.95d | none → 240 | resources none → Ricardo |
| 242 | Diseñar Página Profesor | 2017-02-13 09:00 → 2017-02-15 17:00 (+2d) | 2017-02-14 11:00 → 2017-02-15 18:00 (+1d) | 1d? → 1h | 69.1d → 60.95d | none → 241 | resources none → Ricardo |
| 243 | Diseñar Página Padre | 2017-02-13 09:00 → 2017-02-15 18:00 (+2d) | 2017-02-14 11:00 → 2017-02-16 09:30 (+2d) | 1d? → 1.5h | 69.1d → 60.95d | none → 242 | resources none → Ricardo |
| 244 | Diseñar Página Alumno | 2017-02-13 09:00 → 2017-02-16 09:30 (+3d) | 2017-02-14 11:00 → 2017-02-16 12:00 (+2d) | 1d? → 2.5h | 69.1d → 60.95d | none → 243 | resources none → Ricardo |
| 245 | Diseñar Página Admin | 2017-02-13 09:00 → 2017-02-16 12:00 (+3d) | 2017-02-14 11:00 → 2017-02-16 16:00 (+2d) | 1d? → 2h | 69.1d → 60.95d | none → 244 | resources none → Ricardo |
| 246 | Diseñar Página Gestor | 2017-02-13 09:00 → 2017-02-16 16:00 (+3d) | 2017-02-14 11:00 → 2017-02-16 19:00 (+2d) | 1d? → 0.3d? | 69.1d → 60.95d | none → 245 | resources none → Ricardo |
| 247 | Diseñar Página Sobre Nosotros | 2017-02-13 09:00 → 2017-02-17 09:00 (+4d) | 2017-02-14 11:00 → 2017-02-17 11:00 (+3d) | 1d? → 2h | 69.1d → 60.95d | none → 246 | resources none → Antonio |
| 248 | Diseñar Página Contacto | 2017-02-13 09:00 → 2017-02-17 11:00 (+4d) | 2017-02-14 11:00 → 2017-02-17 12:30 (+3d) | 1d? → 1.5h | 69.1d → 60.95d | none → 247 | resources none → Nahiara |
| 249 | Diseñar Página Mapa | 2017-02-13 09:00 → 2017-02-17 12:30 (+4d) | 2017-02-14 11:00 → 2017-02-17 15:30 (+3d) | 1d? → 1h | 69.1d → 60.95d | none → 248 | resources none → Nahiara |
| 250 | Diseñar Página Ajustes | 2017-02-13 09:00 → 2017-02-17 15:30 (+4d) | 2017-02-14 11:00 → 2017-02-17 18:30 (+3d) | 1d? → 3h | 69.1d → 60.95d | none → 249 | resources none → Nahiara |
| 252 | Diseñar Página Seguimiento | 2017-02-13 09:00 → 2017-02-17 18:30 (+4d) | 2017-02-14 11:00 → 2017-02-20 11:30 (+6d) | 1d? → 0.3d? | 69.1d → 60.95d | none → 250 | resources none → Nahiara |
| 253 | Diseñar Página Mensajes | 2017-02-13 09:00 → 2017-02-20 11:30 (+7d) | 2017-02-14 11:00 → 2017-02-20 16:30 (+6d) | 1d? → 0.3d? | 69.1d → 60.95d | none → 252 | resources none → Nahiara |
| 254 | Diseñar Página Tareas | 2017-02-13 09:00 → 2017-02-20 16:30 (+7d) | 2017-02-14 11:00 → 2017-02-21 09:30 (+7d) | 1d? → 0.3d? | 69.1d → 60.95d | none → 253 | resources none → Ricardo |
| 255 | Diseñar Página Materiales | 2017-02-13 09:00 → 2017-02-21 09:30 (+8d) | 2017-02-14 11:00 → 2017-02-21 12:30 (+7d) | 1d? → 0.3d? | 69.1d → 60.95d | none → 254 | resources none → Ricardo |
| 256 | Diseñar Página Autorizaciones | 2017-02-13 09:00 → 2017-02-21 12:30 (+8d) | 2017-02-14 11:00 → 2017-02-21 17:30 (+7d) | 1d? → 0.3d? | 69.1d → 60.95d | none → 255 | resources none → Ricardo |
| 257 | Diseñar Página Anuncios | 2017-02-13 09:00 → 2017-02-22 11:30 (+9d) | 2017-02-14 11:00 → 2017-02-22 16:30 (+8d) | 1d? → 0.3d? | 69.1d → 61.15d | none → 256 | resources none → Nahiara |
| 260 | **PD** |  | 2017-02-23 18:00 → 2017-02-24 10:00 (+1d) | 7.1d? → 7.3d? | 62.1d → 60d |  |  |
| 264 | **Creditos** |  | 2017-02-23 18:00 → 2017-02-24 10:00 (+1d) | 1.5d? → 1.7d? | 63d → 60d |  |  |
| 265 | Crear creditos |  | 2017-02-23 18:00 → 2017-02-24 10:00 (+1d) |  | 63d → 60d |  |  |
| 266 | **NM** | 2017-02-20 11:00 → 2017-02-24 09:00 (+4d) | 2017-02-28 13:00 → 2017-02-24 11:00 (-4d) | 5d? → 0.2d | 60.9d → 59.9d |  |  |
| 269 | **ELE** | 2017-02-20 09:00 → 2017-02-13 09:00 (-7d) | 2017-02-20 17:00 → 2017-02-13 17:00 (-7d) |  | 65.5d → 66.7d |  |  |
| 270 | **Tarea 2** | 2017-02-20 09:00 → 2017-02-13 09:00 (-7d) | 2017-02-20 17:00 → 2017-02-13 17:00 (-7d) |  | 65.5d → 66.7d |  |  |
| 271 | Hacer guión | 2017-02-20 09:00 → 2017-02-13 09:00 (-7d) | 2017-02-20 12:00 → 2017-02-13 12:00 (-7d) |  | 65.5d → 66.7d |  | constraint start no earlier than 2017-02-20 09:00 → start no earlier than 2017-02-13 09:00 |
| 272 | Hacer guión gráfico | 2017-02-20 12:00 → 2017-02-13 12:00 (-7d) | 2017-02-20 17:00 → 2017-02-13 17:00 (-7d) |  | 65.5d → 66.7d |  |  |
| 273 | **TAG** |  | 2017-02-21 10:00 → 2017-02-22 15:30 (+1d) | 2.5d? → 3.65d? | 65.2d → 61.25d |  |  |
| 274 | **Árbol de la escena** |  | 2017-02-21 10:00 → 2017-02-22 15:30 (+1d) | 2.5d? → 3.65d? | 65.2d → 61.25d |  |  |
| 275 | **Tipos de datos para entidades de tipo transformación (5)** |  | 2017-02-21 10:00 → 2017-02-22 15:30 (+1d) | 2.5d? → 3.65d? | 65.2d → 61.25d |  |  |
| 276 | Definir tipos de datos para entidades de tipo transformación (traslación, rotación y escalado relativos y absolutos. Otras transformaciones) |  | 2017-02-20 18:00 → 2017-02-22 11:30 (+2d) | 23h? → 34.5h? | 65.2d → 61.25d |  |  |
| 277 | Implementar salida en modo texto | 2017-02-20 18:00 → 2017-02-22 11:30 (+2d) | 2017-02-21 10:00 → 2017-02-22 15:30 (+1d) |  | 65.2d → 61.25d |  |  |
| 283 | **Iteracion 3** | 2017-02-28 15:00 → 2017-02-25 15:00 (-3d) | 2017-03-02 19:00 → 2017-03-07 13:00 (+5d) | 2d? → 5.6d? | 60.9d → 58.9d |  |  |
| 289 | **ELE** | 2017-02-28 15:00 → 2017-02-25 15:00 (-3d) | 2017-02-28 17:00 → 2017-02-25 17:00 (-3d) |  | 62.7d → 64.3d |  |  |
| 290 | **Tarea 3** | 2017-02-28 15:00 → 2017-02-25 15:00 (-3d) | 2017-02-28 17:00 → 2017-02-25 17:00 (-3d) |  | 62.7d → 64.3d |  |  |
| 291 | Definir tecnologias | 2017-02-28 15:00 → 2017-02-25 15:00 (-3d) | 2017-02-28 17:00 → 2017-02-25 17:00 (-3d) |  | 62.7d → 64.3d |  |  |
| 292 | **PD** | 2017-02-28 15:00 → 2017-02-25 15:00 (-3d) | 2017-03-02 19:00 → 2017-02-28 19:00 (-2d) |  | 60.9d → 62.5d |  |  |
| 293 | Making of del proyecto | 2017-02-28 15:00 → 2017-02-25 15:00 (-3d) | 2017-03-02 19:00 → 2017-02-28 19:00 (-2d) |  | 60.9d → 62.5d |  |  |
| 294 | **NM** | 2017-02-28 15:00 → 2017-02-25 15:00 (-3d) | 2017-03-01 17:00 → 2017-03-07 13:00 (+6d) | 1d? → 5.6d? | 61.9d → 58.9d |  |  |
| 295 | **Definición de cuadros de mando e implementación** | 2017-02-24 09:00 → 2017-03-02 11:00 (+6d) | 2017-02-28 13:00 → 2017-03-06 17:00 (+6d) |  | 60.9d → 59.5d |  |  |
| 296 | Definir cuadros de mando | 2017-02-24 09:00 → 2017-03-02 11:00 (+6d) | 2017-02-28 13:00 → 2017-03-06 17:00 (+6d) |  | 60.9d → 59.5d |  |  |
| 297 | **Definición de KPI's implementación** | 2017-02-20 11:00 → 2017-02-25 15:00 (+5d) | 2017-02-23 19:00 → 2017-03-02 11:00 (+7d) |  | 60.9d → 59.5d |  |  |
| 298 | Implementar KPI's | 2017-02-20 11:00 → 2017-02-25 15:00 (+5d) | 2017-02-23 19:00 → 2017-03-02 11:00 (+7d) |  | 60.9d → 59.5d |  |  |
| 299 | **Despliegue de la infraestructura del proyecto** | 2017-02-28 15:00 → 2017-02-25 15:00 (-3d) | 2017-03-01 17:00 → 2017-03-07 13:00 (+6d) | 1d? → 5.6d? | 61.9d → 58.9d |  |  |
| 300 | Desplegar infraestructura del proyecto | 2017-02-28 15:00 → 2017-02-25 15:00 (-3d) | 2017-03-01 17:00 → 2017-03-07 13:00 (+6d) |  | 61.9d → 58.9d |  |  |
| 301 | Implementar cuadros de mando | 2017-02-28 15:00 → 2017-02-25 15:00 (-3d) | 2017-03-01 17:00 → 2017-02-27 17:00 (-2d) |  | 61.9d → 63.5d |  |  |
| 302 | **Definición de KPI's implementación** | 2017-02-28 15:00 → 2017-02-25 15:00 (-3d) | 2017-03-01 17:00 → 2017-02-27 17:00 (-2d) |  | 61.9d → 63.5d |  |  |
| 303 | Implementar KPI's | 2017-02-28 15:00 → 2017-02-25 15:00 (-3d) | 2017-03-01 17:00 → 2017-02-27 17:00 (-2d) |  | 61.9d → 63.5d |  |  |
| 304 | **TAG** | 2017-02-28 15:00 → 2017-02-25 15:00 (-3d) | 2017-02-28 17:00 → 2017-02-25 17:00 (-3d) |  | 62.7d → 64.3d |  |  |
| 305 | **Tipos de datos para entidades de tipo cámara y luz (6)** | 2017-02-28 15:00 → 2017-02-25 15:00 (-3d) | 2017-02-28 17:00 → 2017-02-25 17:00 (-3d) |  | 62.7d → 64.3d |  |  |
| 306 | Definir tipos de datos para entidades de tipo cámara y luz (cámaras y luces de dos tipos). | 2017-02-28 15:00 → 2017-02-25 15:00 (-3d) | 2017-02-28 17:00 → 2017-02-25 17:00 (-3d) |  | 62.7d → 64.3d |  |  |
| 307 | Implementar salida en modo texto | 2017-02-28 15:00 → 2017-02-25 15:00 (-3d) | 2017-02-28 17:00 → 2017-02-25 17:00 (-3d) |  | 62.7d → 64.3d |  |  |
| 313 | **Iteracion 4** | 2017-03-03 09:00 → 2017-03-07 15:00 (+4d) | 2017-03-29 17:00 → 2017-04-03 11:00 (+5d) |  | 60.9d → 58.9d |  |  |
| 314 | **NM** | 2017-03-03 09:00 → 2017-03-07 15:00 (+4d) | 2017-03-29 17:00 → 2017-04-03 11:00 (+5d) |  | 60.9d → 58.9d |  |  |
| 315 | **Valoración de los cuadros de mando** | 2017-03-03 09:00 → 2017-03-07 15:00 (+4d) | 2017-03-16 19:00 → 2017-03-21 13:00 (+5d) |  | 60.9d → 58.9d |  |  |
| 316 | Valorar los cuadros de mando | 2017-03-03 09:00 → 2017-03-07 15:00 (+4d) | 2017-03-16 19:00 → 2017-03-21 13:00 (+5d) |  | 60.9d → 58.9d |  |  |
| 317 | **Valoración KPI's definidos** | 2017-03-17 09:00 → 2017-03-21 15:00 (+4d) | 2017-03-29 17:00 → 2017-04-03 11:00 (+5d) |  | 60.9d → 58.9d |  |  |
| 318 | Valorar KPI's definidos | 2017-03-17 09:00 → 2017-03-21 15:00 (+4d) | 2017-03-29 17:00 → 2017-04-03 11:00 (+5d) |  | 60.9d → 58.9d |  |  |
| 319 | **TAG** | 2017-03-03 09:00 → 2017-03-07 15:00 (+4d) | 2017-03-06 10:00 → 2017-03-08 16:00 (+2d) |  | 75d → 73d |  |  |
| 320 | **Tipos de datos para entidades de tipo malla (7)** | 2017-03-03 09:00 → 2017-03-07 15:00 (+4d) | 2017-03-03 17:00 → 2017-03-08 11:00 (+5d) |  | 75.3d → 73.3d |  |  |
| 321 | Definir tipos de datos para entidades de tipo malla | 2017-03-03 09:00 → 2017-03-07 15:00 (+4d) | 2017-03-03 17:00 → 2017-03-08 11:00 (+5d) |  | 75.3d → 73.3d |  |  |
| 322 | Implementar salida en modo texto | 2017-03-03 09:00 → 2017-03-07 15:00 (+4d) | 2017-03-03 11:00 → 2017-03-07 17:00 (+4d) |  | 75.7d → 73.7d |  |  |
| 323 | **Tipos de datos para entidades de tipo animación (8)** | 2017-03-03 09:00 → 2017-03-07 15:00 (+4d) | 2017-03-03 12:00 → 2017-03-07 18:00 (+4d) |  | 75.6d → 73.6d |  |  |
| 324 | Definir tipos de datos para entidades de tipo animación (cuadro a cuadro) | 2017-03-03 09:00 → 2017-03-07 15:00 (+4d) | 2017-03-03 12:00 → 2017-03-07 18:00 (+4d) |  | 75.6d → 73.6d |  |  |
| 325 | Implementar salida en modo texto | 2017-03-03 09:00 → 2017-03-07 15:00 (+4d) | 2017-03-03 11:00 → 2017-03-07 17:00 (+4d) |  | 75.7d → 73.7d |  |  |
| 326 | **Gestor de recursos (9)** | 2017-03-03 09:00 → 2017-03-07 15:00 (+4d) | 2017-03-06 10:00 → 2017-03-08 16:00 (+2d) |  | 75d → 73d |  |  |
| 327 | Cargar modelos en formato múltiple en las entidades de tipo malla | 2017-03-03 09:00 → 2017-03-07 15:00 (+4d) | 2017-03-06 10:00 → 2017-03-08 16:00 (+2d) |  | 75d → 73d |  |  |
| 328 | Cargar varios ficheros para animación | 2017-03-03 09:00 → 2017-03-07 15:00 (+4d) | 2017-03-06 10:00 → 2017-03-08 16:00 (+2d) |  | 75d → 73d |  |  |

| ID | Task | Start | Finish | Duration | Total float |
| --- | --- | --- | --- | --- | --- |
| 329 | Implementar salida en modo texto | 2017-03-03 09:00 → 2017-03-07 15:00 (+4d) | 2017-03-03 11:00 → 2017-03-07 17:00 (+4d) |  | 75.7d → 73.7d |
| 335 | **Iteracion 5** | 2017-03-29 17:00 → 2017-04-03 11:00 (+5d) |  | 64.4d? → 62.4d? |  |
| 336 | **PM** | 2017-03-29 17:00 → 2017-04-03 11:00 (+5d) | 2017-03-29 17:00 → 2017-04-03 11:00 (+5d) |  | 64.4d → 62.4d |
| 337 | **Seguimiento** | 2017-03-29 17:00 → 2017-04-03 11:00 (+5d) | 2017-03-29 17:00 → 2017-04-03 11:00 (+5d) |  | 64.4d → 62.4d |
| 338 | Registrar de tiempos y % de realización de tareas en Project | 2017-03-29 17:00 → 2017-04-03 11:00 (+5d) | 2017-03-29 17:00 → 2017-04-03 11:00 (+5d) |  | 64.4d → 62.4d |
| 339 | Comparar la planificación prevista y real en Project hito 3 | 2017-03-29 17:00 → 2017-04-03 11:00 (+5d) | 2017-03-29 17:00 → 2017-04-03 11:00 (+5d) |  | 64.4d → 62.4d |
| 340 | Confeccionar Informes de iteración e informe resumen de Hito 3 | 2017-03-29 17:00 → 2017-04-03 11:00 (+5d) | 2017-03-29 17:00 → 2017-04-03 11:00 (+5d) |  | 64.4d → 62.4d |
| 341 | **Presentación** | 2017-03-29 17:00 → 2017-04-03 11:00 (+5d) | 2017-03-29 17:00 → 2017-04-03 11:00 (+5d) |  | 64.4d → 62.4d |
| 342 | Elaborar la presentación del Hito 3 | 2017-03-29 17:00 → 2017-04-03 11:00 (+5d) | 2017-03-29 17:00 → 2017-04-03 11:00 (+5d) |  | 64.4d → 62.4d |
| 343 | **SMA** | 2017-03-29 17:00 → 2017-04-03 11:00 (+5d) | 2017-03-30 19:00 → 2017-04-04 13:00 (+5d) |  | 63.4d → 61.4d |
| 344 | **Implementación front-end** | 2017-03-29 17:00 → 2017-04-03 11:00 (+5d) | 2017-03-30 19:00 → 2017-04-04 13:00 (+5d) |  | 63.4d → 61.4d |
| 345 | Implementar funcionalidades de front-end | 2017-03-29 17:00 → 2017-04-03 11:00 (+5d) | 2017-03-30 19:00 → 2017-04-04 13:00 (+5d) |  | 63.4d → 61.4d |
| 346 | **Documentación front-end** | 2017-03-29 17:00 → 2017-04-03 11:00 (+5d) | 2017-03-30 19:00 → 2017-04-04 13:00 (+5d) |  | 63.4d → 61.4d |
| 347 | Hacer documentación de esctructura de código y particularidades especiales | 2017-03-29 17:00 → 2017-04-03 11:00 (+5d) | 2017-03-30 19:00 → 2017-04-04 13:00 (+5d) |  | 63.4d → 61.4d |
| 351 | **ELE** | 2017-03-29 17:00 → 2017-04-03 11:00 (+5d) | 2017-03-30 19:00 → 2017-04-04 13:00 (+5d) |  | 63.4d → 61.4d |
| 352 | **Tarea 4** | 2017-03-29 17:00 → 2017-04-03 11:00 (+5d) | 2017-03-30 19:00 → 2017-04-04 13:00 (+5d) |  | 63.4d → 61.4d |
| 353 | Crear video | 2017-03-29 17:00 → 2017-04-03 11:00 (+5d) | 2017-03-30 19:00 → 2017-04-04 13:00 (+5d) |  | 63.4d → 61.4d |
| 354 | **TAG** | 2017-03-29 17:00 → 2017-04-03 11:00 (+5d) | 2017-04-05 10:00 → 2017-04-07 16:00 (+2d) |  | 60.9d → 58.9d |
| 355 | **Visualización (10,11)** | 2017-03-29 17:00 → 2017-04-03 11:00 (+5d) | 2017-04-03 11:00 → 2017-04-05 17:00 (+2d) |  | 62.4d → 60.4d |
| 356 | Realizar visualizador OpenGL 4.X de las entidades tipo malla. Shader básico. Integración con el motor. Sin materiales, texturas, cámara ni luces | 2017-03-29 17:00 → 2017-04-03 11:00 (+5d) | 2017-03-30 19:00 → 2017-04-04 13:00 (+5d) |  | 63.4d → 61.4d |
| 357 | Realizar visualizador OpenGL 4.X de las entidades tipo malla. Shader básico. Con cámaras y luces de varios tipos. Visualización con registro de cámaras y luces. | 2017-03-29 17:00 → 2017-04-03 11:00 (+5d) | 2017-04-03 11:00 → 2017-04-05 17:00 (+2d) |  | 62.4d → 60.4d |
| 358 | **Gestor de recursos (12)** | 2017-03-29 17:00 → 2017-04-03 11:00 (+5d) | 2017-04-03 11:00 → 2017-04-05 17:00 (+2d) |  | 62.4d → 60.4d |
| 359 | Cargar materiales y texturas. Salida en modo texto | 2017-03-29 17:00 → 2017-04-03 11:00 (+5d) | 2017-04-03 11:00 → 2017-04-05 17:00 (+2d) |  | 62.4d → 60.4d |
| 360 | **Visualización (13)** | 2017-03-29 17:00 → 2017-04-03 11:00 (+5d) | 2017-04-03 11:00 → 2017-04-05 17:00 (+2d) |  | 62.4d → 60.4d |
| 361 | Realizar visualizador OpenGL 4.X de las entidades tipo malla. Shader básico. Añadiendo materiales y texturas. | 2017-03-29 17:00 → 2017-04-03 11:00 (+5d) | 2017-04-03 11:00 → 2017-04-05 17:00 (+2d) |  | 62.4d → 60.4d |
| 362 | **Fachada (14)** | 2017-03-29 17:00 → 2017-04-03 11:00 (+5d) | 2017-04-03 18:00 → 2017-04-06 12:00 (+3d) |  | 61.9d → 59.9d |
| 363 | Crear fachada entre el motor y la aplicación | 2017-03-29 17:00 → 2017-04-03 11:00 (+5d) | 2017-04-03 18:00 → 2017-04-06 12:00 (+3d) |  | 61.9d → 59.9d |
| 364 | **Visualización (15)** | 2017-03-29 17:00 → 2017-04-03 11:00 (+5d) | 2017-04-05 10:00 → 2017-04-07 16:00 (+2d) |  | 60.9d → 58.9d |
| 365 | Realizar visualizador OpenGL 4.X con tres shaders avanzados | 2017-03-29 17:00 → 2017-04-03 11:00 (+5d) | 2017-04-05 10:00 → 2017-04-07 16:00 (+2d) |  | 60.9d → 58.9d |
| 366 | **SMBI** | 2017-03-29 17:00 → 2017-04-03 11:00 (+5d) | 2017-03-29 17:00 → 2017-04-03 11:00 (+5d) |  | 64.4d → 62.4d |
| 367 | **Validación** | 2017-03-29 17:00 → 2017-04-03 11:00 (+5d) | 2017-03-29 17:00 → 2017-04-03 11:00 (+5d) |  | 64.4d → 62.4d |
| 368 | Validar el funcionamiento del backend (Pruebas API Rest Full) | 2017-03-29 17:00 → 2017-04-03 11:00 (+5d) | 2017-03-30 19:00 → 2017-04-04 13:00 (+5d) |  | 63.4d → 61.4d |
| 369 | **Pruebas** | 2017-03-29 17:00 → 2017-04-03 11:00 (+5d) | 2017-03-29 17:00 → 2017-04-03 11:00 (+5d) |  | 64.4d → 62.4d |
| 370 | Hacer pruebas de integración | 2017-03-29 17:00 → 2017-04-03 11:00 (+5d) | 2017-03-31 16:00 → 2017-04-05 10:00 (+5d) |  | 61.4d → 59.4d |
| 371 | Hacer pruebas funcionales | 2017-03-31 16:00 → 2017-04-05 10:00 (+5d) | 2017-04-03 18:00 → 2017-04-06 12:00 (+3d) |  | 61.4d → 59.4d |
| 372 | Hacer pruebas de regresión | 2017-04-03 18:00 → 2017-04-06 12:00 (+3d) | 2017-04-04 13:00 → 2017-04-06 19:00 (+2d) |  | 61.4d → 59.4d |
| 373 | Hacer pruebas de carga y rendimiento | 2017-03-29 17:00 → 2017-04-03 11:00 (+5d) | 2017-03-30 19:00 → 2017-04-04 13:00 (+5d) |  | 63.4d → 61.4d |

## Version 8 (saved 2017-03-01)

Note of the change: Terminado Iteracion 2 Hito 3

Last finish stays 2017-09-11. Complete tasks 0 → 4.

Added:

| ID | Task | Duration | Start | Finish | Predecessors | Constraint | Resources |
| --- | --- | --- | --- | --- | --- | --- | --- |
| 235 | **PM** | 0.5d | 2017-02-13 09:00 | 2017-02-13 16:00 |  |  |  |
| 236 | **Planificación** | 0.5d | 2017-02-13 09:00 | 2017-02-13 16:00 |  |  |  |
| 237 | **Detallar plan iteración** | 0.5d | 2017-02-13 09:00 | 2017-02-13 16:00 |  |  |  |
| 238 | Crear Subtareas y precedencias en Project | 3h | 2017-02-13 09:00 | 2017-02-13 12:00 |  | start no earlier than 2017-02-13 09:00 | Nahiara |
| 239 | Asignar recursos a las tareas en Project. | 2h | 2017-02-13 12:00 | 2017-02-13 16:00 | 238 | start no earlier than 2017-02-13 09:00 | Nahiara |
| 241 | GET BY de todas las entidades | 1d | 2017-03-13 09:00 | 2017-03-14 11:00 |  | start no earlier than 2017-03-13 09:00 | Manuel |
| 242 | DELETE BY de todas las entidades | 1d | 2017-03-14 11:00 | 2017-03-15 13:00 | 241 | start no earlier than 2017-02-14 09:00 | Manuel |
| 243 | Conseguir atributos de una entidad a partir de un get a otra entidad | 2d | 2017-03-15 15:00 | 2017-03-17 19:00 | 242 |  | Manuel |
| 244 | CRUD's | 2d | 2017-03-20 09:00 | 2017-03-22 13:00 | 243 |  | Manuel |
| 260 | Diseñar Página Mensajes Recibidos | 5h? | 2017-02-20 10:00 A | 2017-02-23 16:30 | 259 |  | Nahiara |
| 261 | Diseñar Página Ver Mensajes | 5h? | 2017-02-20 12:00 A | 2017-02-24 11:30 | 260 |  | Nahiara |
| 262 | Diseñar Pagina Principal | 5h | 2017-02-15 16:00 | 2017-02-16 11:00 |  | start no earlier than 2017-02-15 09:00 | Nahiara |
| 263 | Diseñar Pagina Alumno | 4h | 2017-02-16 11:00 | 2017-02-16 17:00 | 262 |  | Nahiara |
| 264 | Diseñar Pagina Padre | 3h | 2017-02-16 17:00 | 2017-02-17 10:00 | 263 |  | Nahiara |
| 265 | Diseñar Pagina Profesor | 2.5h | 2017-02-17 10:00 | 2017-02-17 12:30 | 264 |  | Nahiara |
| 266 | Diseñar Pagina Ajustes | 2.5h | 2017-02-18 09:00 | 2017-02-18 11:30 |  | start no earlier than 2017-02-18 09:00 | Nahiara |
| 267 | Diseñar Página Mensajes Enviados | 1.5h | 2017-02-18 11:30 | 2017-02-18 13:00 | 266 |  | Nahiara |
| 268 | Diseñar Página Mensajes Eliminados | 1.5h | 2017-02-18 15:00 | 2017-02-18 16:30 | 267 |  | Nahiara |
| 269 | Diseñar Página Mensaje Nuevo | 3h | 2017-02-18 16:30 | 2017-02-20 09:30 | 268 |  | Nahiara |
| 274 | Crear Storyboard | 3h | 2017-02-13 09:00 | 2017-02-13 12:00 |  |  | Jorge |
| 299 | **SMA** | 5.5d? | 2017-03-22 15:00 | 2017-03-31 12:00 |  |  |  |
| 300 | **Diseño de interfaces para front-end (Estructura de Pag)** | 5.5d? | 2017-03-22 15:00 | 2017-03-31 12:00 |  |  |  |
| 301 | Diseñar Pagina Expediente | 1d? | 2017-03-28 18:00 | 2017-03-30 10:00 |  |  | Antonio |
| 302 | Diseñar Página Publicar Anuncio | 1d? | 2017-03-30 10:00 | 2017-03-31 12:00 |  |  | Antonio |

Removed: 241 Diseñar Página Login; 253 Diseñar Página Mensajes; 263 Editar video

Changed:

| ID | Task | Start | Finish | Duration | Complete | Total float | Predecessors | Other |
| --- | --- | --- | --- | --- | --- | --- | --- | --- |
| 190 | **HITO 3** | 2017-02-01 09:00 A |  | 97.8d? → 98.6d? | 0% → 12% |  |  |  |
| 230 | **Iteración 2** | 2017-02-13 09:00 A | 2017-02-25 13:00 → 2017-03-22 13:00 (+25d) | 8.4d? → 23.6d? | 0% → 38% | 58.9d → 44.5d |  |  |
| 231 | **SMBI** | 2017-02-15 09:00 A | 2017-02-24 13:00 → 2017-02-25 17:00 A (+1d) | 6d? → 7.8d? | 0% → 100% | 59.7d → none |  |  |
| 232 | Hacer GET BY de todas las entidades | 2017-02-15 09:00 A | 2017-02-17 13:00 → 2017-02-20 17:00 A (+3d) | 2d? → 3d? | 0% → 100% | 59.7d → none |  |  |
| 233 | Hacer DELETE BY de todas las entidades | 2017-02-17 15:00 A | 2017-02-21 19:00 → 2017-02-23 11:00 A (+2d) |  | 0% → 100% | 59.7d → none |  |  |
| 234 | Conseguir atributos de una entidad a partir de un GET a otra entidad | 2017-02-22 09:00 A | 2017-02-24 13:00 → 2017-02-25 17:00 A (+1d) | 2d? → 3d? | 0% → 100% | 59.7d → none |  |  |
| 240 | **SMBI** | 2017-02-13 09:00 → 2017-03-13 09:00 (+28d) | 2017-02-13 19:00 → 2017-03-22 13:00 (+37d) | 8h? → 6d |  | 66.5d → 44.5d |  | was named Hacer documento de relación entre back-end y front-end (detalle desde dónde se llama a la API en el front-end); constraint finish no earlier than 2017-01-27 19:00 → none; resources Manuel → none |
| 245 | **SMA** | 2017-02-13 09:00 A | 2017-02-22 16:30 → 2017-02-24 11:30 (+2d) | 6.15d? → 8.25d? | 0% → 30% | 61.15d → 59.85d |  |  |
| 246 | Integración Front-Back | 2017-02-13 09:00 → 2017-02-14 09:00 (+1d) | 2017-02-13 19:00 → 2017-02-14 19:00 (+1d) | 0.8d? → 8h |  |  |  | constraint none → finish no earlier than 2017-02-14 19:00; resources none → Manuel |
| 248 | **Diseño de interfaces para front-end (Estructura de Pag)** | 2017-02-13 09:00 → 2017-02-15 09:00 A (+2d) | 2017-02-22 16:30 → 2017-02-24 11:30 (+2d) | 6.15d? → 6.65d? | 0% → 34% | 61.15d → 59.85d |  |  |
| 249 | Diseñar Pagina Principal | 2017-02-15 09:00 A | 2017-02-15 12:00 → 2017-02-15 16:00 A | 3h? → 0.5d? | 0% → 100% | 60.95d → none |  |  |
| 250 | Diseñar Página Profesor | 2017-02-15 17:00 A | 2017-02-15 18:00 → 2017-02-15 19:00 | 1h → 5h? | 0% → 80% | 60.95d → 0d | Diseñar Página Login → none |  |
| 251 | Diseñar Página Padre | 2017-02-15 18:00 A | 2017-02-16 09:30 → 2017-02-16 16:00 | 1.5h → 5h? | 0% → 40% | 60.95d → 0.15d |  |  |
| 252 | Diseñar Página Alumno | 2017-02-16 09:30 → 2017-02-16 16:00 | 2017-02-16 12:00 → 2017-02-16 18:30 | 2.5h → 2.5h? |  | 60.95d → 0.15d |  |  |
| 253 | Diseñar Página Admin | 2017-02-16 12:00 A | 2017-02-16 16:00 → 2017-02-17 15:30 (+1d) | 2h → 5h? | 0% → 30% | 60.95d → 0.1d |  |  |
| 254 | Diseñar Página Gestor | 2017-02-16 16:00 A | 2017-02-16 19:00 → 2017-02-17 18:00 (+1d) | 0.3d? → 2.5h? | 0% → 40% | 60.95d → 1d |  | resources Ricardo → Nahiara |
| 255 | Diseñar Página Sobre Nosotros | 2017-02-17 09:00 A | 2017-02-17 11:00 → 2017-02-20 13:00 (+3d) | 2h → 5h? | 0% → 40% | 60.95d → 0.25d |  |  |
| 256 | Diseñar Página Contacto | 2017-02-17 11:00 A | 2017-02-17 12:30 → 2017-02-21 10:30 (+4d) | 1.5h → 5.5h? | 0% → 45% | 60.95d → 0.15d |  |  |
| 257 | Diseñar Página Mapa | 2017-02-17 12:30 A | 2017-02-17 15:30 → 2017-02-21 17:30 (+4d) | 1h → 5h? | 0% → 30% | 60.95d → 0.3d |  |  |
| 258 | Diseñar Página Ajustes | 2017-02-17 15:30 A | 2017-02-17 18:30 → 2017-02-22 12:30 (+5d) | 3h → 5h? | 0% → 60% | 60.95d → 0.2d |  |  |
| 259 | Diseñar Página Mis datos | 2017-02-13 09:00 → 2017-02-17 18:30 A (+4d) | 2017-02-13 10:30 → 2017-02-23 09:30 (+10d) | 1.5h → 5h? | 0% → 40% | 67.15d → 0.35d | none → 258 |  |
| 270 | Diseñar Página Autorizaciones | 2017-02-21 12:30 → 2017-02-20 09:30 (-1d) | 2017-02-21 17:30 → 2017-02-20 12:00 (-1d) | 0.3d? → 2.5h |  | 60.95d → 62.65d | 304 → 269 |  |
| 271 | Diseñar Página Anuncios | 2017-02-22 11:30 → 2017-02-20 12:00 (-2d) | 2017-02-22 16:30 → 2017-02-20 16:00 (-2d) | 0.3d? → 2h |  | 61.15d → 62.8d |  |  |
| 272 | **PD** |  | 2017-02-24 10:00 → 2017-02-14 16:00 (-10d) | 7.3d? → 1.3d |  | 60d → 66.8d |  |  |
| 273 | **Trailer del proyecto** |  | 2017-02-20 11:00 → 2017-02-14 16:00 (-6d) | 4.2d? → 1.3d |  | 63.1d → 66.8d |  |  |
| 275 | Grabar video | 2017-02-13 09:00 → 2017-02-13 12:00 | 2017-02-15 13:00 → 2017-02-14 16:00 (-1d) | 2d? → 1d |  | 64.3d → 66.8d | 213 → 274 |  |
| 279 | **ELE** | 2017-02-13 09:00 → 2017-02-20 12:00 (+7d) | 2017-02-13 17:00 → 2017-02-20 17:30 (+7d) | 0.6d? → 0.35d |  | 66.7d → 62.65d |  |  |
| 280 | **Tarea 2** | 2017-02-13 09:00 → 2017-02-20 12:00 (+7d) | 2017-02-13 17:00 → 2017-02-20 17:30 (+7d) | 0.6d? → 0.35d |  | 66.7d → 62.65d |  |  |
| 281 | Hacer guión | 2017-02-13 09:00 → 2017-02-20 12:00 (+7d) | 2017-02-13 12:00 → 2017-02-20 15:30 (+7d) | 3h? → 1.5h |  | 66.7d → 62.65d | none → 270 |  |
| 282 | Hacer guión gráfico | 2017-02-13 12:00 → 2017-02-20 15:30 (+7d) | 2017-02-13 17:00 → 2017-02-20 17:30 (+7d) | 3h? → 2h |  | 66.7d → 62.65d |  |  |
| 283 | **TAG** |  | 2017-02-22 15:30 → 2017-02-20 12:00 (-2d) | 3.65d? → 2.7d |  | 61.25d → 63d |  |  |
| 284 | **Árbol de la escena** |  | 2017-02-22 15:30 → 2017-02-20 12:00 (-2d) | 3.65d? → 2.7d |  | 61.25d → 63d |  |  |
| 285 | **Tipos de datos para entidades de tipo transformación (5)** |  | 2017-02-22 15:30 → 2017-02-20 12:00 (-2d) | 3.65d? → 2.7d |  | 61.25d → 63d |  |  |
| 286 | Definir tipos de datos para entidades de tipo transformación (traslación, rotación y escalado relativos y absolutos. Otras transformaciones) |  | 2017-02-22 11:30 → 2017-02-20 11:00 (-2d) | 34.5h? → 25h |  | 61.25d → 63d |  | resources Antonio; Nahiara → Antonio |
| 287 | Implementar salida en modo texto | 2017-02-22 11:30 → 2017-02-20 11:00 (-2d) | 2017-02-22 15:30 → 2017-02-20 12:00 (-2d) | 2h? → 1h |  | 61.25d → 63d |  | resources Antonio; Nahiara → Antonio |
| 288 | **PM** |  | 2017-02-25 13:00 → 2017-02-25 15:30 | 0.4d? → 0.45d |  | 58.9d → 58.85d |  |  |
| 289 | **Seguimiento** |  | 2017-02-25 13:00 → 2017-02-25 15:30 | 0.4d? → 0.45d |  | 58.9d → 58.85d |  |  |
| 290 | Registrar de tiempos y % de realización de tareas en Project |  | 2017-02-25 10:00 → 2017-02-25 11:00 | 1h? → 2h |  | 58.9d → 58.85d |  |  |
| 291 | Comparar la planificación prevista y real en Project hito 3 | 2017-02-25 10:00 → 2017-02-25 11:00 | 2017-02-25 11:30 → 2017-02-25 12:30 | 1.5h? → 1.5h |  | 58.9d → 58.85d |  |  |
| 292 | Confeccionar Informes de iteración e informe resumen de Hito 3 | 2017-02-25 11:30 → 2017-02-25 12:30 | 2017-02-25 13:00 → 2017-02-25 15:30 | 1.5h? → 1h |  | 58.9d → 58.85d |  |  |
| 293 | **Iteracion 3** | 2017-02-25 15:00 → 2017-03-22 15:00 (+25d) | 2017-03-07 13:00 → 2017-03-31 13:00 (+24d) |  |  | 58.9d → 44.5d |  |  |
| 294 | **PM** | 2017-02-27 09:00 → 2017-03-22 15:00 (+23d) | 2017-02-28 11:00 → 2017-03-23 17:00 (+23d) |  |  | 63.1d → 49.1d |  |  |
| 295 | **Planificación** | 2017-02-27 09:00 → 2017-03-22 15:00 (+23d) | 2017-02-28 11:00 → 2017-03-23 17:00 (+23d) |  |  | 63.1d → 49.1d |  |  |
| 296 | **Detallar plan iteración** | 2017-02-27 09:00 → 2017-03-22 15:00 (+23d) | 2017-02-28 11:00 → 2017-03-23 17:00 (+23d) |  |  | 63.1d → 49.1d |  |  |
| 297 | Crear Subtareas y precedencias en Project | 2017-02-27 09:00 → 2017-03-22 15:00 (+23d) | 2017-02-28 11:00 → 2017-03-23 17:00 (+23d) |  |  | 63.1d → 49.1d |  |  |
| 298 | Asignar recursos a las tareas en Project. | 2017-02-27 09:00 → 2017-03-22 15:00 (+23d) | 2017-02-28 11:00 → 2017-03-23 17:00 (+23d) |  |  | 63.1d → 49.1d |  |  |
| 303 | Diseñar Página Tareas | 2017-02-20 16:30 → 2017-03-22 15:00 (+30d) | 2017-02-21 09:30 → 2017-03-22 18:00 (+29d) |  |  | 60.95d → 49.8d | Diseñar Página Mensajes → none | constraint none → start no earlier than 2017-02-20 09:00; resources Ricardo → none |
| 304 | Diseñar Página Materiales | 2017-02-21 09:30 → 2017-03-22 15:00 (+29d) | 2017-02-21 12:30 → 2017-03-22 18:00 (+29d) |  |  | 60.95d → 49.8d | 303 → none | resources Ricardo → none |
| 305 | Diseñar Página Subir Material | 2017-02-13 09:00 → 2017-03-22 15:00 (+37d) | 2017-02-14 11:00 → 2017-03-23 17:00 (+37d) |  |  | 66.3d → 49.1d |  |  |
| 306 | Diseñar Pagina Publicar Anuncio | 2017-02-13 09:00 → 2017-03-22 15:00 (+37d) | 2017-02-14 11:00 → 2017-03-23 17:00 (+37d) |  |  | 66.3d → 49.1d |  |  |
| 307 | Diseñar Página Seguimiento | 2017-02-17 18:30 → 2017-03-22 15:00 (+33d) | 2017-02-20 11:30 → 2017-03-22 18:00 (+30d) |  |  | 60.95d → 49.8d | 258 → none | constraint none → start no earlier than 2017-03-01 09:00; resources Nahiara → none |
| 308 | **ELE** | 2017-02-25 15:00 → 2017-03-22 15:00 (+25d) | 2017-02-25 17:00 → 2017-03-22 17:00 (+25d) |  |  | 64.3d → 49.9d |  |  |
| 309 | **Tarea 3** | 2017-02-25 15:00 → 2017-03-22 15:00 (+25d) | 2017-02-25 17:00 → 2017-03-22 17:00 (+25d) |  |  | 64.3d → 49.9d |  |  |
| 310 | Definir tecnologias | 2017-02-25 15:00 → 2017-03-22 15:00 (+25d) | 2017-02-25 17:00 → 2017-03-22 17:00 (+25d) |  |  | 64.3d → 49.9d |  |  |
| 311 | **PD** | 2017-02-25 15:00 → 2017-03-22 15:00 (+25d) | 2017-02-28 19:00 → 2017-03-28 18:00 (+28d) | 2d? → 3.5d? |  | 62.5d → 46.6d |  |  |
| 312 | **Creditos** | 2017-02-22 09:00 → 2017-03-22 15:00 (+28d) | 2017-02-24 10:00 → 2017-03-24 12:00 (+28d) | 1.7d? → 1.5d? |  | 60d → 46.6d |  |  |
| 313 | Crear creditos | 2017-02-22 09:00 → 2017-03-22 15:00 (+28d) | 2017-02-24 10:00 → 2017-03-24 12:00 (+28d) |  |  | 60d → 46.6d |  |  |
| 314 | Making of del proyecto | 2017-02-25 15:00 → 2017-03-24 12:00 (+27d) | 2017-02-28 19:00 → 2017-03-28 18:00 (+28d) |  |  | 62.5d → 46.6d |  |  |
| 315 | **NM** | 2017-02-25 15:00 → 2017-03-22 15:00 (+25d) | 2017-03-07 13:00 → 2017-03-31 13:00 (+24d) |  |  | 58.9d → 44.5d |  |  |
| 316 | **Definición de cuadros de mando e implementación** | 2017-03-02 11:00 → 2017-03-28 11:00 (+26d) | 2017-03-06 17:00 → 2017-03-30 17:00 (+24d) |  |  | 59.5d → 45.1d |  |  |
| 317 | Definir cuadros de mando | 2017-03-02 11:00 → 2017-03-28 11:00 (+26d) | 2017-03-06 17:00 → 2017-03-30 17:00 (+24d) |  |  | 59.5d → 45.1d |  |  |
| 318 | **Definición de KPI's implementación** | 2017-02-25 15:00 → 2017-03-22 15:00 (+25d) | 2017-03-02 11:00 → 2017-03-28 11:00 (+26d) |  |  | 59.5d → 45.1d |  |  |
| 319 | Implementar KPI's | 2017-02-25 15:00 → 2017-03-22 15:00 (+25d) | 2017-03-02 11:00 → 2017-03-28 11:00 (+26d) |  |  | 59.5d → 45.1d | Editar video → none |  |
| 320 | **Despliegue de la infraestructura del proyecto** | 2017-02-25 15:00 → 2017-03-22 15:00 (+25d) | 2017-03-07 13:00 → 2017-03-31 13:00 (+24d) |  |  | 58.9d → 44.5d |  |  |
| 321 | Desplegar infraestructura del proyecto | 2017-02-25 15:00 → 2017-03-22 15:00 (+25d) | 2017-03-07 13:00 → 2017-03-31 13:00 (+24d) |  |  | 58.9d → 44.5d |  |  |
| 322 | Implementar cuadros de mando | 2017-02-25 15:00 → 2017-03-22 15:00 (+25d) | 2017-02-27 17:00 → 2017-03-23 17:00 (+24d) |  |  | 63.5d → 49.1d |  |  |
| 323 | **Definición de KPI's implementación** | 2017-02-25 15:00 → 2017-03-22 15:00 (+25d) | 2017-02-27 17:00 → 2017-03-23 17:00 (+24d) |  |  | 63.5d → 49.1d |  |  |
| 324 | Implementar KPI's | 2017-02-25 15:00 → 2017-03-22 15:00 (+25d) | 2017-02-27 17:00 → 2017-03-23 17:00 (+24d) |  |  | 63.5d → 49.1d |  |  |
| 325 | **TAG** | 2017-02-25 15:00 → 2017-03-22 15:00 (+25d) | 2017-02-25 17:00 → 2017-03-22 17:00 (+25d) |  |  | 64.3d → 49.9d |  |  |
| 326 | **Tipos de datos para entidades de tipo cámara y luz (6)** | 2017-02-25 15:00 → 2017-03-22 15:00 (+25d) | 2017-02-25 17:00 → 2017-03-22 17:00 (+25d) |  |  | 64.3d → 49.9d |  |  |

| ID | Task | Start | Finish | Duration | Total float |
| --- | --- | --- | --- | --- | --- |
| 327 | Definir tipos de datos para entidades de tipo cámara y luz (cámaras y luces de dos tipos). | 2017-02-25 15:00 → 2017-03-22 15:00 (+25d) | 2017-02-25 17:00 → 2017-03-22 17:00 (+25d) |  | 64.3d → 49.9d |
| 328 | Implementar salida en modo texto | 2017-02-25 15:00 → 2017-03-22 15:00 (+25d) | 2017-02-25 17:00 → 2017-03-22 17:00 (+25d) |  | 64.3d → 49.9d |
| 329 | **PM** | 2017-02-25 15:00 → 2017-03-22 15:00 (+25d) | 2017-02-27 17:00 → 2017-03-23 17:00 (+24d) |  | 63.5d → 49.1d |
| 330 | **Seguimiento** | 2017-02-25 15:00 → 2017-03-22 15:00 (+25d) | 2017-02-27 17:00 → 2017-03-23 17:00 (+24d) |  | 63.5d → 49.1d |
| 331 | Registrar de tiempos y % de realización de tareas en Project | 2017-02-25 15:00 → 2017-03-22 15:00 (+25d) | 2017-02-27 17:00 → 2017-03-23 17:00 (+24d) |  | 63.5d → 49.1d |
| 332 | Comparar la planificación prevista y real en Project hito 3 | 2017-02-25 15:00 → 2017-03-22 15:00 (+25d) | 2017-02-27 17:00 → 2017-03-23 17:00 (+24d) |  | 63.5d → 49.1d |
| 333 | Confeccionar Informes de iteración e informe resumen de Hito 3 | 2017-02-25 15:00 → 2017-03-22 15:00 (+25d) | 2017-02-27 17:00 → 2017-03-23 17:00 (+24d) |  | 63.5d → 49.1d |
| 334 | **Iteracion 4** | 2017-03-07 15:00 → 2017-03-31 15:00 (+24d) | 2017-04-03 11:00 → 2017-04-27 11:00 (+24d) |  | 58.9d → 44.5d |
| 335 | **NM** | 2017-03-07 15:00 → 2017-03-31 15:00 (+24d) | 2017-04-03 11:00 → 2017-04-27 11:00 (+24d) |  | 58.9d → 44.5d |
| 336 | **Valoración de los cuadros de mando** | 2017-03-07 15:00 → 2017-03-31 15:00 (+24d) | 2017-03-21 13:00 → 2017-04-14 13:00 (+24d) |  | 58.9d → 44.5d |
| 337 | Valorar los cuadros de mando | 2017-03-07 15:00 → 2017-03-31 15:00 (+24d) | 2017-03-21 13:00 → 2017-04-14 13:00 (+24d) |  | 58.9d → 44.5d |
| 338 | **Valoración KPI's definidos** | 2017-03-21 15:00 → 2017-04-14 15:00 (+24d) | 2017-04-03 11:00 → 2017-04-27 11:00 (+24d) |  | 58.9d → 44.5d |
| 339 | Valorar KPI's definidos | 2017-03-21 15:00 → 2017-04-14 15:00 (+24d) | 2017-04-03 11:00 → 2017-04-27 11:00 (+24d) |  | 58.9d → 44.5d |
| 340 | **TAG** | 2017-03-07 15:00 → 2017-03-31 15:00 (+24d) | 2017-03-08 16:00 → 2017-04-03 16:00 (+26d) |  | 73d → 58.6d |
| 341 | **Tipos de datos para entidades de tipo malla (7)** | 2017-03-07 15:00 → 2017-03-31 15:00 (+24d) | 2017-03-08 11:00 → 2017-04-03 11:00 (+26d) |  | 73.3d → 58.9d |
| 342 | Definir tipos de datos para entidades de tipo malla | 2017-03-07 15:00 → 2017-03-31 15:00 (+24d) | 2017-03-08 11:00 → 2017-04-03 11:00 (+26d) |  | 73.3d → 58.9d |
| 343 | Implementar salida en modo texto | 2017-03-07 15:00 → 2017-03-31 15:00 (+24d) | 2017-03-07 17:00 → 2017-03-31 17:00 (+24d) |  | 73.7d → 59.3d |
| 344 | **Tipos de datos para entidades de tipo animación (8)** | 2017-03-07 15:00 → 2017-03-31 15:00 (+24d) | 2017-03-07 18:00 → 2017-03-31 18:00 (+24d) |  | 73.6d → 59.2d |
| 345 | Definir tipos de datos para entidades de tipo animación (cuadro a cuadro) | 2017-03-07 15:00 → 2017-03-31 15:00 (+24d) | 2017-03-07 18:00 → 2017-03-31 18:00 (+24d) |  | 73.6d → 59.2d |
| 346 | Implementar salida en modo texto | 2017-03-07 15:00 → 2017-03-31 15:00 (+24d) | 2017-03-07 17:00 → 2017-03-31 17:00 (+24d) |  | 73.7d → 59.3d |
| 347 | **Gestor de recursos (9)** | 2017-03-07 15:00 → 2017-03-31 15:00 (+24d) | 2017-03-08 16:00 → 2017-04-03 16:00 (+26d) |  | 73d → 58.6d |
| 348 | Cargar modelos en formato múltiple en las entidades de tipo malla | 2017-03-07 15:00 → 2017-03-31 15:00 (+24d) | 2017-03-08 16:00 → 2017-04-03 16:00 (+26d) |  | 73d → 58.6d |
| 349 | Cargar varios ficheros para animación | 2017-03-07 15:00 → 2017-03-31 15:00 (+24d) | 2017-03-08 16:00 → 2017-04-03 16:00 (+26d) |  | 73d → 58.6d |
| 350 | Implementar salida en modo texto | 2017-03-07 15:00 → 2017-03-31 15:00 (+24d) | 2017-03-07 17:00 → 2017-03-31 17:00 (+24d) |  | 73.7d → 59.3d |
| 351 | **PM** | 2017-03-07 15:00 → 2017-03-31 15:00 (+24d) | 2017-03-08 17:00 → 2017-04-03 17:00 (+26d) |  | 72.9d → 58.5d |
| 352 | **Seguimiento** | 2017-03-07 15:00 → 2017-03-31 15:00 (+24d) | 2017-03-08 17:00 → 2017-04-03 17:00 (+26d) |  | 72.9d → 58.5d |
| 353 | Registrar de tiempos y % de realización de tareas en Project | 2017-03-07 15:00 → 2017-03-31 15:00 (+24d) | 2017-03-08 17:00 → 2017-04-03 17:00 (+26d) |  | 72.9d → 58.5d |
| 354 | Comparar la planificación prevista y real en Project hito 3 | 2017-03-07 15:00 → 2017-03-31 15:00 (+24d) | 2017-03-08 17:00 → 2017-04-03 17:00 (+26d) |  | 72.9d → 58.5d |
| 355 | Confeccionar Informes de iteración e informe resumen de Hito 3 | 2017-03-07 15:00 → 2017-03-31 15:00 (+24d) | 2017-03-08 17:00 → 2017-04-03 17:00 (+26d) |  | 72.9d → 58.5d |
| 356 | **Iteracion 5** | 2017-04-03 11:00 → 2017-04-27 11:00 (+24d) |  | 62.4d? → 48d? |  |
| 357 | **PM** | 2017-04-03 11:00 → 2017-04-27 11:00 (+24d) | 2017-04-03 11:00 → 2017-04-27 11:00 (+24d) |  | 62.4d → 48d |
| 358 | **Seguimiento** | 2017-04-03 11:00 → 2017-04-27 11:00 (+24d) | 2017-04-03 11:00 → 2017-04-27 11:00 (+24d) |  | 62.4d → 48d |
| 359 | Registrar de tiempos y % de realización de tareas en Project | 2017-04-03 11:00 → 2017-04-27 11:00 (+24d) | 2017-04-03 11:00 → 2017-04-27 11:00 (+24d) |  | 62.4d → 48d |
| 360 | Comparar la planificación prevista y real en Project hito 3 | 2017-04-03 11:00 → 2017-04-27 11:00 (+24d) | 2017-04-03 11:00 → 2017-04-27 11:00 (+24d) |  | 62.4d → 48d |
| 361 | Confeccionar Informes de iteración e informe resumen de Hito 3 | 2017-04-03 11:00 → 2017-04-27 11:00 (+24d) | 2017-04-03 11:00 → 2017-04-27 11:00 (+24d) |  | 62.4d → 48d |
| 362 | **Presentación** | 2017-04-03 11:00 → 2017-04-27 11:00 (+24d) | 2017-04-03 11:00 → 2017-04-27 11:00 (+24d) |  | 62.4d → 48d |
| 363 | Elaborar la presentación del Hito 3 | 2017-04-03 11:00 → 2017-04-27 11:00 (+24d) | 2017-04-03 11:00 → 2017-04-27 11:00 (+24d) |  | 62.4d → 48d |
| 364 | **SMA** | 2017-04-03 11:00 → 2017-04-27 11:00 (+24d) | 2017-04-04 13:00 → 2017-04-28 13:00 (+24d) |  | 61.4d → 47d |
| 365 | **Implementación front-end** | 2017-04-03 11:00 → 2017-04-27 11:00 (+24d) | 2017-04-04 13:00 → 2017-04-28 13:00 (+24d) |  | 61.4d → 47d |
| 366 | Implementar funcionalidades de front-end | 2017-04-03 11:00 → 2017-04-27 11:00 (+24d) | 2017-04-04 13:00 → 2017-04-28 13:00 (+24d) |  | 61.4d → 47d |
| 367 | **Documentación front-end** | 2017-04-03 11:00 → 2017-04-27 11:00 (+24d) | 2017-04-04 13:00 → 2017-04-28 13:00 (+24d) |  | 61.4d → 47d |
| 368 | Hacer documentación de esctructura de código y particularidades especiales | 2017-04-03 11:00 → 2017-04-27 11:00 (+24d) | 2017-04-04 13:00 → 2017-04-28 13:00 (+24d) |  | 61.4d → 47d |
| 372 | **ELE** | 2017-04-03 11:00 → 2017-04-27 11:00 (+24d) | 2017-04-04 13:00 → 2017-04-28 13:00 (+24d) |  | 61.4d → 47d |
| 373 | **Tarea 4** | 2017-04-03 11:00 → 2017-04-27 11:00 (+24d) | 2017-04-04 13:00 → 2017-04-28 13:00 (+24d) |  | 61.4d → 47d |
| 374 | Crear video | 2017-04-03 11:00 → 2017-04-27 11:00 (+24d) | 2017-04-04 13:00 → 2017-04-28 13:00 (+24d) |  | 61.4d → 47d |
| 375 | **TAG** | 2017-04-03 11:00 → 2017-04-27 11:00 (+24d) | 2017-04-07 16:00 → 2017-05-03 16:00 (+26d) |  | 58.9d → 44.5d |
| 376 | **Visualización (10,11)** | 2017-04-03 11:00 → 2017-04-27 11:00 (+24d) | 2017-04-05 17:00 → 2017-05-01 17:00 (+26d) |  | 60.4d → 46d |
| 377 | Realizar visualizador OpenGL 4.X de las entidades tipo malla. Shader básico. Integración con el motor. Sin materiales, texturas, cámara ni luces | 2017-04-03 11:00 → 2017-04-27 11:00 (+24d) | 2017-04-04 13:00 → 2017-04-28 13:00 (+24d) |  | 61.4d → 47d |
| 378 | Realizar visualizador OpenGL 4.X de las entidades tipo malla. Shader básico. Con cámaras y luces de varios tipos. Visualización con registro de cámaras y luces. | 2017-04-03 11:00 → 2017-04-27 11:00 (+24d) | 2017-04-05 17:00 → 2017-05-01 17:00 (+26d) |  | 60.4d → 46d |
| 379 | **Gestor de recursos (12)** | 2017-04-03 11:00 → 2017-04-27 11:00 (+24d) | 2017-04-05 17:00 → 2017-05-01 17:00 (+26d) |  | 60.4d → 46d |
| 380 | Cargar materiales y texturas. Salida en modo texto | 2017-04-03 11:00 → 2017-04-27 11:00 (+24d) | 2017-04-05 17:00 → 2017-05-01 17:00 (+26d) |  | 60.4d → 46d |
| 381 | **Visualización (13)** | 2017-04-03 11:00 → 2017-04-27 11:00 (+24d) | 2017-04-05 17:00 → 2017-05-01 17:00 (+26d) |  | 60.4d → 46d |
| 382 | Realizar visualizador OpenGL 4.X de las entidades tipo malla. Shader básico. Añadiendo materiales y texturas. | 2017-04-03 11:00 → 2017-04-27 11:00 (+24d) | 2017-04-05 17:00 → 2017-05-01 17:00 (+26d) |  | 60.4d → 46d |
| 383 | **Fachada (14)** | 2017-04-03 11:00 → 2017-04-27 11:00 (+24d) | 2017-04-06 12:00 → 2017-05-02 12:00 (+26d) |  | 59.9d → 45.5d |
| 384 | Crear fachada entre el motor y la aplicación | 2017-04-03 11:00 → 2017-04-27 11:00 (+24d) | 2017-04-06 12:00 → 2017-05-02 12:00 (+26d) |  | 59.9d → 45.5d |
| 385 | **Visualización (15)** | 2017-04-03 11:00 → 2017-04-27 11:00 (+24d) | 2017-04-07 16:00 → 2017-05-03 16:00 (+26d) |  | 58.9d → 44.5d |
| 386 | Realizar visualizador OpenGL 4.X con tres shaders avanzados | 2017-04-03 11:00 → 2017-04-27 11:00 (+24d) | 2017-04-07 16:00 → 2017-05-03 16:00 (+26d) |  | 58.9d → 44.5d |
| 387 | **SMBI** | 2017-04-03 11:00 → 2017-04-27 11:00 (+24d) | 2017-04-03 11:00 → 2017-04-27 11:00 (+24d) |  | 62.4d → 48d |
| 388 | **Validación** | 2017-04-03 11:00 → 2017-04-27 11:00 (+24d) | 2017-04-03 11:00 → 2017-04-27 11:00 (+24d) |  | 62.4d → 48d |
| 389 | Validar el funcionamiento del backend (Pruebas API Rest Full) | 2017-04-03 11:00 → 2017-04-27 11:00 (+24d) | 2017-04-04 13:00 → 2017-04-28 13:00 (+24d) |  | 61.4d → 47d |
| 390 | **Pruebas** | 2017-04-03 11:00 → 2017-04-27 11:00 (+24d) | 2017-04-03 11:00 → 2017-04-27 11:00 (+24d) |  | 62.4d → 48d |
| 391 | Hacer pruebas de integración | 2017-04-03 11:00 → 2017-04-27 11:00 (+24d) | 2017-04-05 10:00 → 2017-05-01 10:00 (+26d) |  | 59.4d → 45d |
| 392 | Hacer pruebas funcionales | 2017-04-05 10:00 → 2017-05-01 10:00 (+26d) | 2017-04-06 12:00 → 2017-05-02 12:00 (+26d) |  | 59.4d → 45d |
| 393 | Hacer pruebas de regresión | 2017-04-06 12:00 → 2017-05-02 12:00 (+26d) | 2017-04-06 19:00 → 2017-05-02 19:00 (+26d) |  | 59.4d → 45d |
| 394 | Hacer pruebas de carga y rendimiento | 2017-04-03 11:00 → 2017-04-27 11:00 (+24d) | 2017-04-04 13:00 → 2017-04-28 13:00 (+24d) |  | 61.4d → 47d |

## Version 9 (saved 2017-03-03)

Note of the change: Informe de iteracion 2 y Project terminado

Last finish stays 2017-09-11.

Added:

| ID | Task | Duration | Start | Finish | Predecessors | Constraint | Resources |
| --- | --- | --- | --- | --- | --- | --- | --- |
| 265 | Diseñar Pagina Admin | 2h? | 2017-02-16 09:00 | 2017-02-16 11:00 | 264 |  | Nahiara |
| 267 | Diseñar Página Mensajes Recibidos | 2h? | 2017-02-18 11:00 | 2017-02-18 13:00 | 266 |  | Nahiara |
| 284 | **Visualización(15)** | 2.5d? | 2017-02-13 09:00 | 2017-02-16 10:00 |  |  |  |
| 286 | **Optimizaciones del motor (17)** | 2.4d? | 2017-02-18 09:00 | 2017-02-21 19:00 |  |  |  |
| 287 | Optimizar motor | 20h? | 2017-02-18 09:00 | 2017-02-21 19:00 | 285 | finish no earlier than 2017-02-18 19:00 | Antonio |
| 288 | **Giro automático de los anillos, rotar esferas y zoom (19)** | 3d? | 2017-02-22 09:00 | 2017-02-25 17:00 |  |  |  |
| 289 | Implementar giro automático de los anillos | 15h? | 2017-02-22 09:00 | 2017-02-23 18:00 | 287 |  | Antonio |
| 290 | Implementar rotación de las esferas | 10h? | 2017-02-23 18:00 | 2017-02-25 10:00 | 289 |  | Antonio |
| 291 | Implementar zoom | 5h? | 2017-02-25 10:00 | 2017-02-25 17:00 | 290 |  | Antonio |
| 313 | **Tarea 2** | 0.2d | 2017-03-23 10:00 | 2017-03-23 12:00 |  |  |  |
| 338 | **Tipos de datos para entidades de tipo malla (7)** | 1d? | 2017-03-23 10:00 | 2017-03-24 12:00 |  |  |  |
| 339 | Definir tipos de datos para entidades de tipo malla | 1d? | 2017-03-23 10:00 | 2017-03-24 12:00 |  |  |  |

Removed: 213 Hacer Storyboard; 385 Visualización (15)

Changed:

| ID | Task | Start | Finish | Duration | Complete | Total float | Predecessors | Other |
| --- | --- | --- | --- | --- | --- | --- | --- | --- |
| 175 | Confeccionar Informes de iteración e informe resumen de Hito 2 | 2017-01-30 09:00 → 2017-01-28 19:00 (-2d) | 2017-01-30 11:00 → 2017-01-28 19:00 (-2d) | 2h → 0h |  | 8.1d → 1.6d |  |  |
| 191 | **Iteracion 1** | 2017-02-01 09:00 A | 2017-02-10 19:00 → 2017-02-10 16:00 | 6.4d → 6.1d? | 0% → 12% | 1.6d → 1.9d |  |  |
| 192 | **PM** | 2017-02-01 09:00 A |  | 0.9d → 0.9d? | 0% → 95% | 6.7d → 6.6d |  |  |
| 193 | **Planificación** | 2017-02-01 09:00 A |  | 0.9d → 0.9d? | 0% → 95% | 6.7d → 6.6d |  |  |
| 194 | **Detallar plan iteraciones del mes de Febrero-Marzo** | 2017-02-01 09:00 A |  | 0.9d → 0.9d? | 0% → 95% | 6.7d → 6.6d |  |  |
| 195 | Crear Subtareas y precedencias en Project | 2017-02-01 09:00 A | 2017-02-01 17:00 → 2017-02-01 12:00 | 6h → 3h? | 0% → 95% | 6.7d → 0.59d | none → 175 |  |
| 196 | Asignar recursos a las tareas en Project. | 2017-02-01 17:00 → 2017-02-01 18:00 A |  | 3h → 2h? | 0% → 95% | 6.7d → 6.6d |  |  |
| 197 | **TAG** |  | 2017-02-07 11:30 → 2017-02-07 10:00 | 1.05d → 0.9d? |  | 4.55d → 4.5d |  |  |
| 198 | **Arbol de la escena** |  | 2017-02-07 11:30 → 2017-02-07 10:00 | 1.05d → 0.9d? |  | 4.55d → 4.5d |  |  |
| 199 | **Tipos de datos para nodos y entidades (4)** |  | 2017-02-07 11:30 → 2017-02-07 10:00 | 1.05d → 0.9d? |  | 4.55d → 4.5d |  |  |
| 200 | Definir tipos de datos para nodos (completo) y entidades (sólo clase padre; clases hijas sin contenido) |  | 2017-02-06 17:00 → 2017-02-06 13:00 | 6h → 4h? |  | 4.55d → 4.5d | none → 189 |  |
| 201 | Construir árbol | 2017-02-06 17:00 → 2017-02-06 15:00 | 2017-02-06 19:00 → 2017-02-06 17:00 | 2h → 2h? |  | 4.55d → 4.5d |  |  |
| 202 | Definir recorrido del arbol | 2017-02-07 09:00 → 2017-02-06 17:00 (-1d) | 2017-02-07 10:30 → 2017-02-06 19:00 (-1d) | 1.5h → 2h? |  | 4.55d → 4.5d |  |  |
| 203 | Implementar salida en modo texto | 2017-02-07 10:30 → 2017-02-07 09:00 | 2017-02-07 11:30 → 2017-02-07 10:00 | 1h → 1h? |  | 4.55d → 4.5d |  |  |
| 204 | **SMA** |  | 2017-02-10 19:00 → 2017-02-10 16:00 | 5.5d → 5.2d? |  | 1.6d → 1.9d |  |  |
| 205 | **Guía de estilos** |  | 2017-02-02 16:00 → 2017-02-02 12:00 | 0.4d → 0.2d? |  | 6.7d → 6.6d |  |  |
| 206 | Hacer documento de guia de estilos |  | 2017-02-02 16:00 → 2017-02-02 12:00 | 4h → 2h? |  | 6.7d → 6.6d |  |  |
| 207 | **Creación de Interfaces** |  | 2017-02-10 19:00 → 2017-02-10 16:00 | 0.8d → 0.5d? |  | 1.6d → 1.9d |  |  |
| 208 | Implementar Panel de Administrador |  | 2017-02-10 16:00 → 2017-02-10 12:00 | 5h → 3h? |  | 1.6d → 1.9d | none → 184 |  |
| 209 | Implementar Login | 2017-02-10 16:00 → 2017-02-10 12:00 | 2017-02-10 19:00 → 2017-02-10 16:00 | 3h → 2h? |  | 1.6d → 1.9d |  |  |
| 210 | **PD** |  | 2017-02-07 15:30 → 2017-02-07 11:00 | 0.45d → 0.2d? |  | 4.35d → 4.6d |  |  |
| 211 | **Trailer del proyecto** |  | 2017-02-07 15:30 → 2017-02-07 11:00 | 0.45d → 0.2d? |  | 4.35d → 4.6d |  |  |
| 212 | Escribir guión |  |  | 2h → 2h? |  | 4.35d → 4.6d | none → 189 |  |
| 213 | **SMBI** |  | 2017-02-03 12:00 → 2017-02-03 11:30 | 1.1d → 1.05d? |  | 6.1d → 6.15d |  |  |
| 214 | **Desarrollo Backend** |  | 2017-02-02 18:00 → 2017-02-02 17:30 | 0.7d → 0.65d? |  | 6.1d → 6.15d |  |  |
| 215 | Implementar funciones GET |  |  | 2h → 2h? |  | 6.1d → 6.15d | none → 177 |  |
| 216 | Implementar funciones PUT |  | 2017-02-02 16:00 → 2017-02-02 15:30 | 3h → 2.5h? |  | 6.1d → 6.15d |  |  |
| 217 | Implementar funciones DELETE | 2017-02-02 16:00 → 2017-02-02 15:30 | 2017-02-02 18:00 → 2017-02-02 17:30 | 2h → 2h? |  | 6.1d → 6.15d |  |  |
| 218 | **Pruebas funcionamiento** | 2017-02-02 18:00 → 2017-02-02 17:30 | 2017-02-03 12:00 → 2017-02-03 11:30 | 0.4d → 0.4d? |  | 6.1d → 6.15d |  |  |
| 219 | Probar PUT | 2017-02-02 18:00 → 2017-02-02 17:30 | 2017-02-03 10:00 → 2017-02-03 09:30 | 2h → 2h? |  | 6.1d → 6.15d |  |  |
| 220 | Probar DELETE | 2017-02-03 10:00 → 2017-02-03 09:30 | 2017-02-03 12:00 → 2017-02-03 11:30 | 2h → 2h? |  | 6.1d → 6.15d |  |  |
| 221 | **NM** | 2017-02-03 09:00 → 2017-02-07 10:00 (+4d) | 2017-02-03 11:00 → 2017-02-07 12:00 (+4d) | 0.2d → 0.2d? |  | 6.2d → 4.5d |  |  |
| 222 | **Definición de KPI's e implementación** | 2017-02-03 09:00 → 2017-02-07 10:00 (+4d) | 2017-02-03 11:00 → 2017-02-07 12:00 (+4d) | 0.2d → 0.2d? |  | 6.2d → 4.5d |  |  |
| 223 | Definir KPI's | 2017-02-03 09:00 → 2017-02-07 10:00 (+4d) | 2017-02-03 11:00 → 2017-02-07 12:00 (+4d) | 2h → 2h? |  | 6.2d → 4.5d | none → 203 |  |
| 224 | **PM** |  | 2017-02-10 13:00 → 2017-02-10 12:00 | 0.4d → 0.3d? |  | 2d → 2.1d |  |  |
| 225 | **Seguimiento** |  | 2017-02-10 13:00 → 2017-02-10 12:00 | 0.4d → 0.3d? |  | 2d → 2.1d |  |  |
| 226 | Registrar de tiempos y % de realización de tareas en Project |  |  | 1h → 1h? |  | 2d → 2.1d | none → 206 |  |
| 227 | Comparar la planificación prevista y real en Project hito 3 |  | 2017-02-10 11:30 → 2017-02-10 11:00 | 1.5h → 1h? |  | 2d → 2.1d |  |  |
| 228 | Confeccionar Informes de iteración e informe resumen de Hito 3 | 2017-02-10 11:30 → 2017-02-10 11:00 | 2017-02-10 13:00 → 2017-02-10 12:00 | 1.5h → 1h? |  | 2d → 2.1d |  |  |
| 229 | **Iteración 2** | 2017-02-13 09:00 A → 2017-02-10 16:00 A (-3d) | 2017-03-22 13:00 → 2017-03-23 10:00 (+1d) | 23.6d? → 24.4d? | 38% → 34% | 44.5d → 45.6d |  |  |
| 234 | **PM** |  | 2017-02-13 16:00 → 2017-02-13 13:00 | 0.5d → 0.4d |  | 67.6d → 69.3d |  |  |
| 235 | **Planificación** |  | 2017-02-13 16:00 → 2017-02-13 13:00 | 0.5d → 0.4d |  | 67.6d → 69.3d |  |  |
| 236 | **Detallar plan iteración** |  | 2017-02-13 16:00 → 2017-02-13 13:00 | 0.5d → 0.4d |  | 67.6d → 69.3d |  |  |
| 237 | Crear Subtareas y precedencias en Project |  |  |  |  | 67.6d → 69.3d | none → 228 |  |
| 238 | Asignar recursos a las tareas en Project. |  | 2017-02-13 16:00 → 2017-02-13 13:00 | 2h → 1h |  | 67.6d → 69.3d |  |  |
| 240 | GET BY de todas las entidades |  |  |  |  | 44.5d → 45.6d | none → 220 |  |
| 244 | **SMA** | 2017-02-13 09:00 A → 2017-02-10 16:00 A (-3d) | 2017-02-24 11:30 → 2017-03-23 10:00 (+27d) | 8.25d? → 24.4d? | 30% → 31% | 59.85d → 45.6d |  |  |
| 245 | Integración Front-Back | 2017-02-14 09:00 → 2017-03-22 15:00 (+36d) | 2017-02-14 19:00 → 2017-03-23 10:00 (+37d) | 8h → 5h |  | 66.5d → 45.6d | none → 243 |  |
| 246 | Definir interfaces | 2017-02-13 09:00 → 2017-02-10 16:00 (-3d) | 2017-02-13 10:00 → 2017-02-10 17:00 (-3d) |  |  | 68d → 69.9d |  |  |
| 247 | **Diseño de interfaces para front-end (Estructura de Pag)** | 2017-02-15 09:00 A → 2017-02-14 09:00 A (-1d) |  | 6.65d? → 7.45d? | 34% → 33% | 59.85d → 61.45d |  |  |
| 261 | Diseñar Pagina Principal | 2017-02-15 16:00 → 2017-02-14 09:00 (-1d) | 2017-02-16 11:00 → 2017-02-14 12:00 (-2d) | 5h → 3h? |  | 64.55d → 65.2d | none → 228 | constraint start no earlier than 2017-02-15 09:00 → start no earlier than 2017-02-14 09:00 |
| 262 | Diseñar Pagina Alumno | 2017-02-16 11:00 → 2017-02-14 12:00 (-2d) | 2017-02-16 17:00 → 2017-02-14 17:00 (-2d) | 4h → 0.3d? |  | 64.55d → 65.2d |  |  |
| 263 | Diseñar Pagina Padre | 2017-02-16 17:00 → 2017-02-15 09:00 (-1d) | 2017-02-17 10:00 → 2017-02-15 12:00 (-2d) | 3h → 0.3d? |  | 64.55d → 65d |  | constraint none → start no earlier than 2017-02-15 09:00 |
| 264 | Diseñar Pagina Profesor | 2017-02-17 10:00 → 2017-02-15 12:00 (-2d) | 2017-02-17 12:30 → 2017-02-15 17:00 (-2d) | 2.5h → 0.3d? |  | 64.55d → 65d |  |  |
| 266 | Diseñar Pagina Ajustes |  | 2017-02-18 11:30 → 2017-02-18 11:00 | 2.5h → 2h? |  | 62.65d → 63.85d | none → 265 |  |
| 268 | Diseñar Página Mensajes Enviados | 2017-02-18 11:30 → 2017-02-18 15:00 | 2017-02-18 13:00 → 2017-02-18 17:00 | 1.5h → 0.2d? |  | 62.65d → 63.85d | 266 → 267 |  |
| 269 | Diseñar Página Mensajes Eliminados | 2017-02-18 15:00 → 2017-02-18 17:00 | 2017-02-18 16:30 → 2017-02-18 19:00 | 1.5h → 0.2d? |  | 62.65d → 63.85d |  |  |
| 270 | Diseñar Página Mensaje Nuevo | 2017-02-18 16:30 → 2017-02-20 09:00 (+2d) | 2017-02-20 09:30 → 2017-02-20 11:00 | 3h → 0.2d? |  | 62.65d → 63.85d |  |  |
| 271 | Diseñar Página Autorizaciones | 2017-02-20 09:30 → 2017-02-20 11:00 | 2017-02-20 12:00 → 2017-02-20 13:00 | 2.5h → 0.2d? |  | 62.65d → 63.85d |  |  |
| 272 | Diseñar Página Anuncios | 2017-02-20 12:00 → 2017-02-20 15:00 | 2017-02-20 16:00 → 2017-02-20 17:00 | 2h → 0.2d? |  | 62.8d → 63.85d |  |  |
| 273 | **PD** | 2017-02-13 09:00 → 2017-02-10 16:00 (-3d) | 2017-02-14 16:00 → 2017-02-13 13:00 (-1d) | 1.3d → 0.7d? |  | 66.8d → 69.3d |  |  |
| 274 | **Trailer del proyecto** | 2017-02-13 09:00 → 2017-02-10 16:00 (-3d) | 2017-02-14 16:00 → 2017-02-13 13:00 (-1d) | 1.3d → 0.7d? |  | 66.8d → 69.3d |  |  |
| 275 | Crear Storyboard | 2017-02-13 09:00 → 2017-02-10 16:00 (-3d) | 2017-02-13 12:00 → 2017-02-10 19:00 (-3d) | 3h → 3h? |  | 66.8d → 69.3d | none → 189 |  |
| 276 | Grabar video Parte 1 | 2017-02-13 12:00 → 2017-02-13 09:00 | 2017-02-14 16:00 → 2017-02-13 13:00 (-1d) | 1d → 4h? |  | 66.8d → 69.3d |  | was named Grabar video |
| 277 | **NM** |  | 2017-02-24 11:00 → 2017-02-24 10:00 | 0.2d → 0.1d? |  | 59.9d → 61.6d |  |  |
| 278 | **Seguimiento** |  | 2017-02-24 11:00 → 2017-02-24 10:00 | 0.2d → 0.1d? |  | 59.9d → 61.6d |  |  |
| 279 | Confeccionar Informes de iteración e informe resumen de Hito 3 |  | 2017-02-24 11:00 → 2017-02-24 10:00 | 2h → 1h? |  | 59.9d → 61.6d | none → 275 |  |
| 280 | **ELE** | 2017-02-20 12:00 → 2017-02-20 15:00 | 2017-02-20 17:30 → 2017-02-20 16:00 | 0.35d → 0.1d? |  | 62.65d → 64.4d |  |  |
| 281 | **Tarea 2** | 2017-02-20 12:00 → 2017-02-20 15:00 | 2017-02-20 17:30 → 2017-02-20 16:00 | 0.35d → 0.1d? |  | 62.65d → 64.4d |  |  |
| 282 | Hacer guión | 2017-02-20 12:00 → 2017-02-20 15:00 | 2017-02-20 15:30 → 2017-02-20 16:00 | 1.5h → 1h? |  | 62.65d → 64.4d |  |  |

| ID | Task | Start | Finish | Duration | Total float | Predecessors | Other |
| --- | --- | --- | --- | --- | --- | --- | --- |
| 283 | **TAG** | 2017-02-16 09:00 → 2017-02-13 09:00 (-3d) | 2017-02-20 12:00 → 2017-02-25 17:00 (+5d) | 2.7d → 9.4d? | 63d → 60.3d |  |  |
| 285 | Realizar visualizador OpenGL 4.X con tres shaders avanzados | 2017-04-27 11:00 → 2017-02-13 09:00 (-73d) | 2017-05-03 16:00 → 2017-02-16 10:00 (-76d) | 35h? → 20h? | 44.5d → 60.6d | none → 203 | constraint none → start no earlier than 2017-02-13 09:00; resources none → Antonio |
| 292 | **PM** |  |  | 0.45d → 0.45d? | 58.85d → 60.45d |  |  |
| 293 | **Seguimiento** |  |  | 0.45d → 0.45d? | 58.85d → 60.45d |  |  |
| 294 | Registrar de tiempos y % de realización de tareas en Project |  |  | 2h → 2h? | 58.85d → 60.45d | none → 272 |  |
| 295 | Comparar la planificación prevista y real en Project hito 3 |  |  | 1.5h → 1.5h? | 58.85d → 60.45d |  |  |
| 296 | Confeccionar Informes de iteración e informe resumen de Hito 3 |  |  | 1h → 1h? | 58.85d → 60.45d |  |  |
| 297 | **Iteracion 3** | 2017-03-22 15:00 → 2017-03-23 10:00 (+1d) | 2017-03-31 13:00 → 2017-04-06 17:00 (+6d) | 5.6d? → 8.5d? | 44.5d → 42.1d |  |  |
| 298 | **PM** | 2017-03-22 15:00 → 2017-03-23 10:00 (+1d) | 2017-03-23 17:00 → 2017-03-24 12:00 (+1d) |  | 49.1d → 49.6d |  |  |
| 299 | **Planificación** | 2017-03-22 15:00 → 2017-03-23 10:00 (+1d) | 2017-03-23 17:00 → 2017-03-24 12:00 (+1d) |  | 49.1d → 49.6d |  |  |
| 300 | **Detallar plan iteración** | 2017-03-22 15:00 → 2017-03-23 10:00 (+1d) | 2017-03-23 17:00 → 2017-03-24 12:00 (+1d) |  | 49.1d → 49.6d |  |  |
| 301 | Crear Subtareas y precedencias en Project | 2017-03-22 15:00 → 2017-03-23 10:00 (+1d) | 2017-03-23 17:00 → 2017-03-24 12:00 (+1d) |  | 49.1d → 49.6d |  |  |
| 302 | Asignar recursos a las tareas en Project. | 2017-03-22 15:00 → 2017-03-23 10:00 (+1d) | 2017-03-23 17:00 → 2017-03-24 12:00 (+1d) |  | 49.1d → 49.6d |  |  |
| 303 | **SMA** | 2017-03-22 15:00 → 2017-03-23 10:00 (+1d) | 2017-03-31 12:00 → 2017-04-06 17:00 (+6d) | 5.5d? → 8.5d? | 44.6d → 42.1d |  |  |
| 304 | **Diseño de interfaces para front-end (Estructura de Pag)** | 2017-03-22 15:00 → 2017-03-23 10:00 (+1d) | 2017-03-31 12:00 → 2017-04-06 17:00 (+6d) | 5.5d? → 8.5d? | 44.6d → 42.1d |  |  |
| 305 | Diseñar Pagina Expediente | 2017-03-28 18:00 → 2017-04-03 09:00 (+6d) | 2017-03-30 10:00 → 2017-04-04 11:00 (+5d) |  | 45.6d → 44.1d |  |  |
| 306 | Diseñar Página Publicar Anuncio | 2017-03-30 10:00 → 2017-04-04 11:00 (+5d) | 2017-03-31 12:00 → 2017-04-05 13:00 (+5d) |  | 44.6d → 43.1d |  |  |
| 307 | Diseñar Página Tareas | 2017-03-22 15:00 → 2017-03-23 10:00 (+1d) | 2017-03-22 18:00 → 2017-03-23 13:00 (+1d) |  | 49.8d → 50.3d |  |  |
| 308 | Diseñar Página Materiales | 2017-03-22 15:00 → 2017-03-23 10:00 (+1d) | 2017-03-22 18:00 → 2017-03-23 13:00 (+1d) |  | 49.8d → 50.3d |  |  |
| 309 | Diseñar Página Subir Material | 2017-03-22 15:00 → 2017-03-23 10:00 (+1d) | 2017-03-23 17:00 → 2017-03-24 12:00 (+1d) |  | 49.1d → 49.6d |  |  |
| 310 | Diseñar Pagina Publicar Anuncio | 2017-03-22 15:00 → 2017-04-05 15:00 (+14d) | 2017-03-23 17:00 → 2017-04-06 17:00 (+14d) |  | 49.1d → 42.1d |  | resources none → Antonio |
| 311 | Diseñar Página Seguimiento | 2017-03-22 15:00 → 2017-03-23 10:00 (+1d) | 2017-03-22 18:00 → 2017-03-23 13:00 (+1d) |  | 49.8d → 50.3d |  |  |
| 312 | **ELE** | 2017-03-22 15:00 → 2017-03-23 10:00 (+1d) | 2017-03-22 17:00 → 2017-03-23 16:00 (+1d) | 0.2d? → 0.4d? | 49.9d → 50.2d |  |  |
| 314 | Hacer guión gráfico | 2017-02-20 15:30 → 2017-03-23 10:00 (+31d) | 2017-02-20 17:30 → 2017-03-23 12:00 (+31d) |  | 62.65d → 50.2d |  |  |
| 315 | **Tarea 3** | 2017-03-22 15:00 → 2017-03-23 12:00 (+1d) | 2017-03-22 17:00 → 2017-03-23 16:00 (+1d) |  | 49.9d → 50.2d |  |  |
| 316 | Definir tecnologias | 2017-03-22 15:00 → 2017-03-23 12:00 (+1d) | 2017-03-22 17:00 → 2017-03-23 16:00 (+1d) |  | 49.9d → 50.2d |  |  |
| 317 | **PD** | 2017-03-22 15:00 → 2017-03-23 10:00 (+1d) | 2017-03-28 18:00 → 2017-03-29 13:00 (+1d) |  | 46.6d → 47.1d |  |  |
| 318 | **Creditos** | 2017-03-22 15:00 → 2017-03-23 10:00 (+1d) | 2017-03-24 12:00 → 2017-03-24 19:00 |  | 46.6d → 47.1d |  |  |
| 319 | Crear creditos | 2017-03-22 15:00 → 2017-03-23 10:00 (+1d) | 2017-03-24 12:00 → 2017-03-24 19:00 |  | 46.6d → 47.1d |  |  |
| 320 | Making of del proyecto | 2017-03-24 12:00 → 2017-03-27 09:00 (+3d) | 2017-03-28 18:00 → 2017-03-29 13:00 (+1d) |  | 46.6d → 47.1d |  |  |
| 321 | **NM** | 2017-03-22 15:00 → 2017-03-23 10:00 (+1d) | 2017-03-31 13:00 → 2017-04-03 16:00 (+3d) | 5.6d? → 6d? | 44.5d → 44.6d |  |  |
| 322 | **Definición de cuadros de mando e implementación** | 2017-03-28 11:00 → 2017-03-28 18:00 | 2017-03-30 17:00 → 2017-03-31 12:00 (+1d) |  | 45.1d → 45.6d |  |  |
| 323 | Definir cuadros de mando | 2017-03-28 11:00 → 2017-03-28 18:00 | 2017-03-30 17:00 → 2017-03-31 12:00 (+1d) |  | 45.1d → 45.6d |  |  |
| 324 | **Definición de KPI's implementación** | 2017-03-22 15:00 → 2017-03-23 10:00 (+1d) | 2017-03-28 11:00 → 2017-03-28 18:00 |  | 45.1d → 45.6d |  |  |
| 325 | Implementar KPI's | 2017-03-22 15:00 → 2017-03-23 10:00 (+1d) | 2017-03-28 11:00 → 2017-03-28 18:00 |  | 45.1d → 45.6d |  |  |
| 326 | **Despliegue de la infraestructura del proyecto** | 2017-03-22 15:00 → 2017-03-23 10:00 (+1d) | 2017-03-31 13:00 → 2017-04-03 16:00 (+3d) | 5.6d? → 6d? | 44.5d → 44.6d |  |  |
| 327 | Desplegar infraestructura del proyecto | 2017-03-22 15:00 → 2017-03-31 12:00 (+9d) | 2017-03-31 13:00 → 2017-04-03 16:00 (+3d) |  | 44.5d → 44.6d |  |  |
| 328 | Implementar cuadros de mando | 2017-03-22 15:00 → 2017-03-23 10:00 (+1d) | 2017-03-23 17:00 → 2017-03-24 12:00 (+1d) |  | 49.1d → 49.6d |  |  |
| 329 | **Definición de KPI's implementación** | 2017-03-22 15:00 → 2017-03-23 10:00 (+1d) | 2017-03-23 17:00 → 2017-03-24 12:00 (+1d) |  | 49.1d → 49.6d |  |  |
| 330 | Implementar KPI's | 2017-03-22 15:00 → 2017-03-23 10:00 (+1d) | 2017-03-23 17:00 → 2017-03-24 12:00 (+1d) |  | 49.1d → 49.6d |  |  |
| 331 | **TAG** | 2017-03-22 15:00 → 2017-03-23 10:00 (+1d) | 2017-03-22 17:00 → 2017-03-31 19:00 (+9d) | 0.2d? → 5.5d? | 49.9d → 45.1d |  |  |
| 332 | **Árbol de la escena** | 2017-02-16 09:00 → 2017-03-23 10:00 (+35d) | 2017-02-20 12:00 → 2017-03-31 19:00 (+39d) | 2.7d → 5.5d? | 63d → 45.1d |  |  |
| 333 | **Tipos de datos para entidades de tipo transformación (5)** | 2017-02-16 09:00 → 2017-03-29 15:00 (+41d) | 2017-02-20 12:00 → 2017-03-31 19:00 (+39d) | 2.7d → 2d? | 63d → 45.1d |  |  |
| 334 | Definir tipos de datos para entidades de tipo transformación (traslación, rotación y escalado relativos y absolutos. Otras transformaciones) | 2017-02-16 09:00 → 2017-03-29 15:00 (+41d) | 2017-02-20 11:00 → 2017-03-31 19:00 (+39d) | 25h → 20h? | 63d → 45.1d |  | constraint start no earlier than 2017-02-16 09:00 → none |
| 335 | **Tipos de datos para entidades de tipo cámara y luz (6)** | 2017-03-22 15:00 → 2017-03-23 10:00 (+1d) | 2017-03-22 17:00 → 2017-03-23 12:00 (+1d) |  | 49.9d → 50.4d |  |  |
| 336 | Definir tipos de datos para entidades de tipo cámara y luz (cámaras y luces de dos tipos). | 2017-03-22 15:00 → 2017-03-23 10:00 (+1d) | 2017-03-22 17:00 → 2017-03-23 12:00 (+1d) |  | 49.9d → 50.4d |  |  |
| 337 | Implementar salida en modo texto | 2017-03-22 15:00 → 2017-03-23 10:00 (+1d) | 2017-03-22 17:00 → 2017-03-23 12:00 (+1d) |  | 49.9d → 50.4d |  |  |
| 340 | Implementar salida en modo texto | 2017-02-20 11:00 → 2017-03-23 10:00 (+31d) | 2017-02-20 12:00 → 2017-03-24 12:00 (+32d) | 1h → 1d? | 63d → 49.6d | 334 → none | resources Antonio → none |
| 341 | **PM** | 2017-03-22 15:00 → 2017-03-23 10:00 (+1d) | 2017-03-23 17:00 → 2017-03-24 12:00 (+1d) |  | 49.1d → 49.6d |  |  |
| 342 | **Seguimiento** | 2017-03-22 15:00 → 2017-03-23 10:00 (+1d) | 2017-03-23 17:00 → 2017-03-24 12:00 (+1d) |  | 49.1d → 49.6d |  |  |
| 343 | Registrar de tiempos y % de realización de tareas en Project | 2017-03-22 15:00 → 2017-03-23 10:00 (+1d) | 2017-03-23 17:00 → 2017-03-24 12:00 (+1d) |  | 49.1d → 49.6d |  |  |
| 344 | Comparar la planificación prevista y real en Project hito 3 | 2017-03-22 15:00 → 2017-03-23 10:00 (+1d) | 2017-03-23 17:00 → 2017-03-24 12:00 (+1d) |  | 49.1d → 49.6d |  |  |
| 345 | Confeccionar Informes de iteración e informe resumen de Hito 3 | 2017-03-22 15:00 → 2017-03-23 10:00 (+1d) | 2017-03-23 17:00 → 2017-03-24 12:00 (+1d) |  | 49.1d → 49.6d |  |  |
| 346 | **Iteracion 4** | 2017-03-31 15:00 → 2017-04-06 17:00 (+6d) | 2017-04-27 11:00 → 2017-05-03 13:00 (+6d) |  | 44.5d → 42.1d |  |  |
| 347 | **NM** | 2017-03-31 15:00 → 2017-04-06 17:00 (+6d) | 2017-04-27 11:00 → 2017-05-03 13:00 (+6d) |  | 44.5d → 42.1d |  |  |
| 348 | **Valoración de los cuadros de mando** | 2017-03-31 15:00 → 2017-04-06 17:00 (+6d) | 2017-04-14 13:00 → 2017-04-20 17:00 (+6d) |  | 44.5d → 42.1d |  |  |
| 349 | Valorar los cuadros de mando | 2017-03-31 15:00 → 2017-04-06 17:00 (+6d) | 2017-04-14 13:00 → 2017-04-20 17:00 (+6d) |  | 44.5d → 42.1d |  |  |
| 350 | **Valoración KPI's definidos** | 2017-04-14 15:00 → 2017-04-20 17:00 (+6d) | 2017-04-27 11:00 → 2017-05-03 13:00 (+6d) |  | 44.5d → 42.1d |  |  |
| 351 | Valorar KPI's definidos | 2017-04-14 15:00 → 2017-04-20 17:00 (+6d) | 2017-04-27 11:00 → 2017-05-03 13:00 (+6d) |  | 44.5d → 42.1d |  |  |
| 352 | **TAG** | 2017-03-31 15:00 → 2017-04-06 17:00 (+6d) | 2017-04-03 16:00 → 2017-04-07 18:00 (+4d) |  | 58.6d → 56.2d |  |  |
| 353 | **Tipos de datos para entidades de tipo malla (7)** | 2017-03-31 15:00 → 2017-04-06 17:00 (+6d) | 2017-04-03 11:00 → 2017-04-07 13:00 (+4d) |  | 58.9d → 56.5d |  |  |
| 354 | Definir tipos de datos para entidades de tipo malla | 2017-03-31 15:00 → 2017-04-06 17:00 (+6d) | 2017-04-03 11:00 → 2017-04-07 13:00 (+4d) |  | 58.9d → 56.5d |  |  |
| 355 | Implementar salida en modo texto | 2017-03-31 15:00 → 2017-04-06 17:00 (+6d) | 2017-03-31 17:00 → 2017-04-06 19:00 (+6d) |  | 59.3d → 56.9d |  |  |
| 356 | **Tipos de datos para entidades de tipo animación (8)** | 2017-03-31 15:00 → 2017-04-06 17:00 (+6d) | 2017-03-31 18:00 → 2017-04-07 10:00 (+7d) |  | 59.2d → 56.8d |  |  |
| 357 | Definir tipos de datos para entidades de tipo animación (cuadro a cuadro) | 2017-03-31 15:00 → 2017-04-06 17:00 (+6d) | 2017-03-31 18:00 → 2017-04-07 10:00 (+7d) |  | 59.2d → 56.8d |  |  |
| 358 | Implementar salida en modo texto | 2017-03-31 15:00 → 2017-04-06 17:00 (+6d) | 2017-03-31 17:00 → 2017-04-06 19:00 (+6d) |  | 59.3d → 56.9d |  |  |
| 359 | **Gestor de recursos (9)** | 2017-03-31 15:00 → 2017-04-06 17:00 (+6d) | 2017-04-03 16:00 → 2017-04-07 18:00 (+4d) |  | 58.6d → 56.2d |  |  |
| 360 | Cargar modelos en formato múltiple en las entidades de tipo malla | 2017-03-31 15:00 → 2017-04-06 17:00 (+6d) | 2017-04-03 16:00 → 2017-04-07 18:00 (+4d) |  | 58.6d → 56.2d |  |  |
| 361 | Cargar varios ficheros para animación | 2017-03-31 15:00 → 2017-04-06 17:00 (+6d) | 2017-04-03 16:00 → 2017-04-07 18:00 (+4d) |  | 58.6d → 56.2d |  |  |
| 362 | Implementar salida en modo texto | 2017-03-31 15:00 → 2017-04-06 17:00 (+6d) | 2017-03-31 17:00 → 2017-04-06 19:00 (+6d) |  | 59.3d → 56.9d |  |  |

| ID | Task | Start | Finish | Duration | Total float |
| --- | --- | --- | --- | --- | --- |
| 363 | **PM** | 2017-03-31 15:00 → 2017-04-06 17:00 (+6d) | 2017-04-03 17:00 → 2017-04-07 19:00 (+4d) |  | 58.5d → 56.1d |
| 364 | **Seguimiento** | 2017-03-31 15:00 → 2017-04-06 17:00 (+6d) | 2017-04-03 17:00 → 2017-04-07 19:00 (+4d) |  | 58.5d → 56.1d |
| 365 | Registrar de tiempos y % de realización de tareas en Project | 2017-03-31 15:00 → 2017-04-06 17:00 (+6d) | 2017-04-03 17:00 → 2017-04-07 19:00 (+4d) |  | 58.5d → 56.1d |
| 366 | Comparar la planificación prevista y real en Project hito 3 | 2017-03-31 15:00 → 2017-04-06 17:00 (+6d) | 2017-04-03 17:00 → 2017-04-07 19:00 (+4d) |  | 58.5d → 56.1d |
| 367 | Confeccionar Informes de iteración e informe resumen de Hito 3 | 2017-03-31 15:00 → 2017-04-06 17:00 (+6d) | 2017-04-03 17:00 → 2017-04-07 19:00 (+4d) |  | 58.5d → 56.1d |
| 368 | **Iteracion 5** | 2017-04-27 11:00 → 2017-05-03 13:00 (+6d) |  | 48d? → 44.6d? |  |
| 369 | **PM** | 2017-04-27 11:00 → 2017-05-03 13:00 (+6d) | 2017-04-27 11:00 → 2017-05-03 13:00 (+6d) |  | 48d → 44.6d |
| 370 | **Seguimiento** | 2017-04-27 11:00 → 2017-05-03 13:00 (+6d) | 2017-04-27 11:00 → 2017-05-03 13:00 (+6d) |  | 48d → 44.6d |
| 371 | Registrar de tiempos y % de realización de tareas en Project | 2017-04-27 11:00 → 2017-05-03 13:00 (+6d) | 2017-04-27 11:00 → 2017-05-03 13:00 (+6d) |  | 48d → 44.6d |
| 372 | Comparar la planificación prevista y real en Project hito 3 | 2017-04-27 11:00 → 2017-05-03 13:00 (+6d) | 2017-04-27 11:00 → 2017-05-03 13:00 (+6d) |  | 48d → 44.6d |
| 373 | Confeccionar Informes de iteración e informe resumen de Hito 3 | 2017-04-27 11:00 → 2017-05-03 13:00 (+6d) | 2017-04-27 11:00 → 2017-05-03 13:00 (+6d) |  | 48d → 44.6d |
| 374 | **Presentación** | 2017-04-27 11:00 → 2017-05-03 13:00 (+6d) | 2017-04-27 11:00 → 2017-05-03 13:00 (+6d) |  | 48d → 44.6d |
| 375 | Elaborar la presentación del Hito 3 | 2017-04-27 11:00 → 2017-05-03 13:00 (+6d) | 2017-04-27 11:00 → 2017-05-03 13:00 (+6d) |  | 48d → 44.6d |
| 376 | **SMA** | 2017-04-27 11:00 → 2017-05-03 15:00 (+6d) | 2017-04-28 13:00 → 2017-05-04 17:00 (+6d) |  | 47d → 43.6d |
| 377 | **Implementación front-end** | 2017-04-27 11:00 → 2017-05-03 15:00 (+6d) | 2017-04-28 13:00 → 2017-05-04 17:00 (+6d) |  | 47d → 43.6d |
| 378 | Implementar funcionalidades de front-end | 2017-04-27 11:00 → 2017-05-03 15:00 (+6d) | 2017-04-28 13:00 → 2017-05-04 17:00 (+6d) |  | 47d → 43.6d |
| 379 | **Documentación front-end** | 2017-04-27 11:00 → 2017-05-03 15:00 (+6d) | 2017-04-28 13:00 → 2017-05-04 17:00 (+6d) |  | 47d → 43.6d |
| 380 | Hacer documentación de esctructura de código y particularidades especiales | 2017-04-27 11:00 → 2017-05-03 15:00 (+6d) | 2017-04-28 13:00 → 2017-05-04 17:00 (+6d) |  | 47d → 43.6d |
| 384 | **ELE** | 2017-04-27 11:00 → 2017-05-03 15:00 (+6d) | 2017-04-28 13:00 → 2017-05-04 17:00 (+6d) |  | 47d → 43.6d |
| 385 | **Tarea 4** | 2017-04-27 11:00 → 2017-05-03 15:00 (+6d) | 2017-04-28 13:00 → 2017-05-04 17:00 (+6d) |  | 47d → 43.6d |
| 386 | Crear video | 2017-04-27 11:00 → 2017-05-03 15:00 (+6d) | 2017-04-28 13:00 → 2017-05-04 17:00 (+6d) |  | 47d → 43.6d |
| 387 | **TAG** | 2017-04-27 11:00 → 2017-05-03 15:00 (+6d) | 2017-05-03 16:00 → 2017-05-08 16:00 (+5d) | 3.5d? → 2.5d? | 44.5d → 42.1d |
| 388 | **Visualización (10,11)** | 2017-04-27 11:00 → 2017-05-03 15:00 (+6d) | 2017-05-01 17:00 → 2017-05-05 19:00 (+4d) |  | 46d → 42.6d |
| 389 | Realizar visualizador OpenGL 4.X de las entidades tipo malla. Shader básico. Integración con el motor. Sin materiales, texturas, cámara ni luces | 2017-04-27 11:00 → 2017-05-03 15:00 (+6d) | 2017-04-28 13:00 → 2017-05-04 17:00 (+6d) |  | 47d → 43.6d |
| 390 | Realizar visualizador OpenGL 4.X de las entidades tipo malla. Shader básico. Con cámaras y luces de varios tipos. Visualización con registro de cámaras y luces. | 2017-04-27 11:00 → 2017-05-03 15:00 (+6d) | 2017-05-01 17:00 → 2017-05-05 19:00 (+4d) |  | 46d → 42.6d |
| 391 | **Gestor de recursos (12)** | 2017-04-27 11:00 → 2017-05-03 15:00 (+6d) | 2017-05-01 17:00 → 2017-05-05 19:00 (+4d) |  | 46d → 42.6d |
| 392 | Cargar materiales y texturas. Salida en modo texto | 2017-04-27 11:00 → 2017-05-03 15:00 (+6d) | 2017-05-01 17:00 → 2017-05-05 19:00 (+4d) |  | 46d → 42.6d |
| 393 | **Visualización (13)** | 2017-04-27 11:00 → 2017-05-03 15:00 (+6d) | 2017-05-01 17:00 → 2017-05-05 19:00 (+4d) |  | 46d → 42.6d |
| 394 | Realizar visualizador OpenGL 4.X de las entidades tipo malla. Shader básico. Añadiendo materiales y texturas. | 2017-04-27 11:00 → 2017-05-03 15:00 (+6d) | 2017-05-01 17:00 → 2017-05-05 19:00 (+4d) |  | 46d → 42.6d |
| 395 | **Fachada (14)** | 2017-04-27 11:00 → 2017-05-03 15:00 (+6d) | 2017-05-02 12:00 → 2017-05-08 16:00 (+6d) |  | 45.5d → 42.1d |
| 396 | Crear fachada entre el motor y la aplicación | 2017-04-27 11:00 → 2017-05-03 15:00 (+6d) | 2017-05-02 12:00 → 2017-05-08 16:00 (+6d) |  | 45.5d → 42.1d |
| 397 | **SMBI** | 2017-04-27 11:00 → 2017-05-03 13:00 (+6d) | 2017-04-27 11:00 → 2017-05-03 13:00 (+6d) |  | 48d → 44.6d |
| 398 | **Validación** | 2017-04-27 11:00 → 2017-05-03 13:00 (+6d) | 2017-04-27 11:00 → 2017-05-03 13:00 (+6d) |  | 48d → 44.6d |
| 399 | Validar el funcionamiento del backend (Pruebas API Rest Full) | 2017-04-27 11:00 → 2017-05-03 15:00 (+6d) | 2017-04-28 13:00 → 2017-05-04 17:00 (+6d) |  | 47d → 43.6d |
| 400 | **Pruebas** | 2017-04-27 11:00 → 2017-05-03 13:00 (+6d) | 2017-04-27 11:00 → 2017-05-03 13:00 (+6d) |  | 48d → 44.6d |
| 401 | Hacer pruebas de integración | 2017-04-27 11:00 → 2017-05-03 15:00 (+6d) | 2017-05-01 10:00 → 2017-05-05 12:00 (+4d) |  | 45d → 41.6d |
| 402 | Hacer pruebas funcionales | 2017-05-01 10:00 → 2017-05-05 12:00 (+4d) | 2017-05-02 12:00 → 2017-05-08 16:00 (+6d) |  | 45d → 41.6d |
| 403 | Hacer pruebas de regresión | 2017-05-02 12:00 → 2017-05-08 16:00 (+6d) | 2017-05-02 19:00 → 2017-05-09 11:00 (+7d) |  | 45d → 41.6d |
| 404 | Hacer pruebas de carga y rendimiento | 2017-04-27 11:00 → 2017-05-03 15:00 (+6d) | 2017-04-28 13:00 → 2017-05-04 17:00 (+6d) |  | 47d → 43.6d |

## Version 10 (saved 2017-03-14)

Note of the change: Projects completado Iteración 3 y empezado iteracion 4

Last finish 2017-09-11 → 2017-05-26 (-108d). Complete tasks 4 → 172.

Added:

| ID | Task | Duration | Start | Finish | Predecessors | Resources |
| --- | --- | --- | --- | --- | --- | --- |
| 292 | Corregir, mantener y mejorar la BD | 1d? | 2017-02-25 11:00 A | 2017-02-27 13:00 | 240 | Manuel |
| 293 | Adaptar las funciones del backend a las necesidades de las interfaces de la aplicación | 1d? | 2017-02-27 15:00 A | 2017-02-28 17:00 | 292 | Manuel |
| 296 | **Interfaces Alumno** | 1d? | 2017-02-27 15:00 A | 2017-02-28 17:00 A |  |  |
| 298 | Diseñar Página Tareas Hechas | 0.2d? | 2017-02-27 17:00 A | 2017-02-27 19:00 A | 297 | Nahiara |
| 300 | Modificar Página Expediente | 0.2d? | 2017-02-28 11:00 A | 2017-02-28 13:00 A | 299 | Nahiara |
| 302 | **Interfaces Profesores** | 1.4d? | 2017-02-28 17:00 A | 2017-03-02 13:00 A |  |  |
| 304 | Diseñar Pagina Subir Material | 0.2d? | 2017-03-01 09:00 A | 2017-03-01 11:00 A | 303 | Manuel |
| 305 | Diseñar Página Crear Tareas | 0.2d? | 2017-03-01 11:00 A | 2017-03-01 13:00 A | 304 | Manuel |
| 306 | Diseñar Pagina Evaluar | 0.2d? | 2017-03-01 15:00 A | 2017-03-01 17:00 A | 305 | Manuel |
| 307 | Diseñar Página Poner Falta de Asistencia | 0.2d? | 2017-03-01 17:00 A | 2017-03-01 19:00 A | 306 | Manuel |
| 308 | Diseñar Página Ver Foro | 0.2d? | 2017-03-02 09:00 A | 2017-03-02 11:00 A | 307 | Manuel |
| 309 | Diseñar Página Foro | 0.2d? | 2017-03-02 11:00 A | 2017-03-02 13:00 A | 308 | Manuel |
| 310 | **Integración Front-Back usando interfaces creadas (Angular)** | 0.8d? | 2017-03-02 09:00 A | 2017-03-02 19:00 A | 307 |  |
| 311 | Integrar Página Autorización | 2h? | 2017-03-02 09:00 A | 2017-03-02 11:00 A | 259 | Ricardo |
| 312 | Integrar Página Poner Falta de Asistencia | 0.2d? | 2017-03-02 11:00 A | 2017-03-02 13:00 A | 311 | Ricardo |
| 313 | Integrar Página Alumno | 0.2d? | 2017-03-02 15:00 A | 2017-03-02 17:00 A | 312 | Ricardo |
| 314 | Integrar Página Datos Alumno | 0.2d? | 2017-03-02 17:00 A | 2017-03-02 19:00 A | 313 | Ricardo |
| 318 | Editar Video | 1d? | 2017-03-09 09:00 A | 2017-03-10 11:00 | 317 | Jorge |
| 335 | **PM** | 2d? | 2017-03-11 16:00 | 2017-03-15 10:00 |  |  |
| 336 | **Planificación** | 2d? | 2017-03-11 16:00 | 2017-03-15 10:00 |  |  |
| 337 | **Detallar plan iteración** | 2d? | 2017-03-11 16:00 | 2017-03-15 10:00 |  |  |
| 338 | Crear Subtareas y precedencias en Project | 1d? | 2017-03-11 16:00 | 2017-03-13 18:00 | 333 | Nahiara |
| 339 | Asignar recursos a las tareas en Project | 1d? | 2017-03-13 18:00 | 2017-03-15 10:00 | 338 | Nahiara |
| 340 | **SMA** | 2.6d? | 2017-03-11 16:00 | 2017-03-15 18:00 |  |  |
| 341 | **Diseño de interfaces para front-end (Estructura de Pag)** | 2.6d? | 2017-03-11 16:00 | 2017-03-15 18:00 |  |  |
| 342 | **Interfaces Padre** | 0.6d? | 2017-03-15 10:00 | 2017-03-15 18:00 |  |  |
| 344 | Diseñar Página Evolución | 2h? | 2017-03-15 12:00 | 2017-03-15 16:00 | 343 | Nahiara |
| 345 | Diseñar Página Justificante | 0.2d? | 2017-03-15 16:00 | 2017-03-15 18:00 | 344 | Nahiara |
| 346 | **Interfaces Gestor** | 0.4d? | 2017-03-11 16:00 | 2017-03-13 10:00 |  |  |
| 347 | Diseñar Página Añadir Nuevo Usuario | 2h? | 2017-03-11 16:00 | 2017-03-11 18:00 | 328 | Antonio |
| 348 | Diseñar Página Evolución del Sistema | 2h? | 2017-03-11 18:00 | 2017-03-13 10:00 | 347 | Antonio |
| 349 | **Integración Front-Back usando interfaces creadas (Angular)** | 2d? | 2017-03-11 16:00 | 2017-03-15 10:00 |  |  |
| 350 | **Interfaces Alumno** | 1d? | 2017-03-11 16:00 | 2017-03-13 18:00 |  |  |
| 351 | Integrar todas las interfaces de Alumno | 1d? | 2017-03-11 16:00 | 2017-03-13 18:00 | 314 | Ricardo |
| 352 | **Interfaces Profores** | 1d? | 2017-03-13 18:00 | 2017-03-15 10:00 |  |  |
| 353 | Integrar todas las interfaces de Profesores | 1d? | 2017-03-13 18:00 | 2017-03-15 10:00 | 351 | Ricardo |
| 354 | **PD** | 1d? | 2017-03-11 16:00 | 2017-03-13 18:00 |  |  |
| 355 | **Trailer Proyecto** | 1d? | 2017-03-11 16:00 | 2017-03-13 18:00 |  |  |
| 356 | Editar Video | 1d? | 2017-03-11 16:00 | 2017-03-13 18:00 | 318 | Jorge |

Removed: 240 GET BY de todas las entidades; 241 DELETE BY de todas las entidades; 242 Conseguir atributos de una entidad a partir de un get a otra entidad; 243 CRUD's; 261 Diseñar Pagina Principal; 262 Diseñar Pagina Alumno; 263 Diseñar Pagina Padre; 264 Diseñar Pagina Profesor; 265 Diseñar Pagina Admin; 266 Diseñar Pagina Ajustes; 267 Diseñar Página Mensajes Recibidos; 309 Diseñar Página Subir Material; 310 Diseñar Pagina Publicar Anuncio; 312 ELE; 320 Making of del proyecto; 347 NM; 397 SMBI; 398 Validación; 399 Validar el funcionamiento del backend (Pruebas API Rest Full); 400 Pruebas; 401 Hacer pruebas de integración; 402 Hacer pruebas funcionales; 403 Hacer pruebas de regresión; 404 Hacer pruebas de carga y rendimiento

Changed:

| ID | Task | Start | Finish | Duration | Complete | Total float |
| --- | --- | --- | --- | --- | --- | --- |
| 2 | **HITO 0** |  | 2016-10-19 19:00 A |  | 64% → 100% | 13d → none |
| 3 | **PM** | 2016-09-12 09:00 A | 2016-10-19 19:00 A |  | 0% → 100% | 13d → none |
| 4 | Rellenar documentos de proyecto | 2016-09-12 09:00 A | 2016-09-28 19:00 A |  | 0% → 100% | 13d → none |
| 5 | Rellenar hoja de presupuesto | 2016-09-29 09:00 A | 2016-10-05 19:00 A |  | 0% → 100% | 13d → none |
| 6 | Hacer project | 2016-10-06 09:00 A | 2016-10-19 19:00 A |  | 0% → 100% | 13d → none |
| 7 | **SMBI** |  | 2016-10-19 19:00 A |  | 73% → 100% | 13d → none |
| 8 | Diseño integral de la arquitectura técnica |  | 2016-10-19 19:00 A |  | 73% → 100% | 13d → none |
| 9 | Especificación de elementos y tecnologías de seguridad y autenticación |  | 2016-10-19 19:00 A |  | 73% → 100% | 13d → none |
| 10 | Especificación de API Rest y modelo de datos |  | 2016-10-19 19:00 A |  | 73% → 100% | 13d → none |
| 11 | **SMA** |  | 2016-10-19 19:00 A |  | 73% → 100% | 13d → none |
| 12 | Diseño funcional: documentación con la especificación de todas las funcionalidades del sistema |  | 2016-10-19 19:00 A |  | 73% → 100% | 13d → none |
| 13 | Diseño de baja fidelidad de interfaces(mockups): documentación con todas las interfaces diseñadas mediante mockups |  | 2016-10-19 19:00 A |  | 73% → 100% | 13d → none |
| 14 | **NM** |  | 2016-10-19 19:00 A |  | 73% → 100% | 13d → none |
| 15 | Diseño funcional y visualización del proyecto: documentación con la especificación de todas las funcionalidades del sistema |  | 2016-10-19 19:00 A |  | 73% → 100% | 13d → none |
| 16 | Especificación y visualización de elementos y tecnologías a utilizar, por ejemplo mediante la definición de una infografía del proyecto |  | 2016-10-19 19:00 A |  | 73% → 100% | 13d → none |
| 18 | **HITO 1** | 2016-10-20 09:00 A | 2016-12-22 11:00 A | 37d → 37d? | 0% → 100% | 13d → none |
| 19 | **Iteración 1** | 2016-10-20 09:00 A | 2016-10-27 18:00 A |  | 0% → 100% | 10.9d → none |
| 20 | **PM** | 2016-10-20 09:00 A | 2016-10-21 12:00 A |  | 0% → 100% | 14.5d → none |
| 21 | **Planificación** | 2016-10-20 09:00 A | 2016-10-21 12:00 A |  | 0% → 100% | 14.5d → none |
| 22 | Detallar plan iteraciones del mes de Noviembre | 2016-10-20 09:00 A | 2016-10-20 16:00 A |  | 0% → 100% | 14.5d → none |
| 23 | Creación Subtareas y precedencias en Project | 2016-10-20 16:00 A | 2016-10-21 12:00 A |  | 0% → 100% | 14.5d → none |
| 24 | **SMBI** | 2016-10-24 16:00 A | 2016-10-24 19:00 A |  | 0% → 100% | 10.9d → none |
| 25 | Diseñar diagrama preliminar del Modelo de BD | 2016-10-24 16:00 A | 2016-10-24 19:00 A |  | 0% → 100% | 10.9d → none |
| 26 | **PD** | 2016-10-25 09:00 A | 2016-10-27 18:00 A |  | 0% → 100% | 10.9d → none |
| 27 | Diseño logo | 2016-10-25 09:00 A | 2016-10-25 19:00 A |  | 0% → 100% | 10.9d → none |
| 28 | Crear video de logo | 2016-10-26 09:00 A | 2016-10-27 18:00 A |  | 0% → 100% | 10.9d → none |
| 29 | **Otras tareas** | 2016-10-25 09:00 A | 2016-10-25 13:00 A |  | 0% → 100% | 12.8d → none |
| 30 | Corregir diagramas Caso de uso | 2016-10-25 09:00 A | 2016-10-25 13:00 A |  | 0% → 100% | 12.8d → none |
| 31 | **Iteración 2** | 2016-11-03 09:00 A | 2016-11-16 16:30 A |  | 0% → 100% | 1.05d → none |
| 32 | **PM** | 2016-11-03 09:00 A | 2016-11-15 12:30 A |  | 0% → 100% | 2.05d → none |
| 33 | Ordenar tareas por iteraciones | 2016-11-03 09:00 A | 2016-11-03 16:00 A |  | 0% → 100% | 7.7d → none |
| 34 | **Seguimiento** | 2016-11-15 09:00 A | 2016-11-15 12:30 A |  | 0% → 100% | 1.2d → none |
| 35 | Registrar de tiempos y % de realización de tareas en Project | 2016-11-15 09:00 A | 2016-11-15 10:00 A |  | 0% → 100% | 2.2d → none |
| 36 | Comparar la planificación prevista y real en Project hito 1. | 2016-11-15 10:00 A | 2016-11-15 11:00 A |  | 0% → 100% | 2.2d → none |
| 37 | Confeccionar Informes de iteración e informe resumen de Hito 1 | 2016-11-15 09:00 A | 2016-11-15 12:30 A |  | 0% → 100% | 1.2d → none |
| 38 | **SDM** | 2016-11-11 09:00 A | 2016-11-16 16:30 A |  | 0% → 100% | 1.05d → none |
| 39 | Actualizar Lean Canvas | 2016-11-14 09:00 A | 2016-11-14 11:00 A |  | 0% → 100% | 3d → none |
| 40 | Actualizar Presupuesto SDM y ELE | 2016-11-16 12:00 A | 2016-11-16 16:30 A |  | 0% → 100% | 1.05d → none |
| 41 | **Hacer Documento de Especificacion** | 2016-11-11 09:00 A | 2016-11-15 17:30 A |  | 0% → 100% | 1.75d → none |
| 42 | **Definir objetivo SDM** | 2016-11-11 09:00 A | 2016-11-15 17:30 A |  | 0% → 100% | 1.75d → none |
| 43 | Explicar CMS en nuestro proyecto | 2016-11-14 17:00 A | 2016-11-14 19:00 A |  | 0% → 100% | 2d → none |
| 44 | Explicar Difusion y Posicionamiento Web de nuestro proyecto | 2016-11-14 17:00 A | 2016-11-15 10:00 A |  | 0% → 100% | 2.3d → none |
| 45 | Explicar transformación de formatos en el proyecto | 2016-11-15 09:00 A | 2016-11-15 13:00 A |  | 0% → 100% | 2d → none |
| 46 | Definir API's de terceros y propios a usar en el proyecto | 2016-11-11 09:00 A | 2016-11-11 18:00 A |  | 0% → 100% | 3.1d → none |
| 47 | Explicar uso de OAuth2.0(Delegar autorizacion) | 2016-11-15 12:30 A | 2016-11-15 17:30 A |  | 0% → 100% | 1.2d → none |
| 48 | Hacer PowerPoint | 2016-11-16 09:00 A | 2016-11-16 12:00 A |  | 0% → 100% | 1.05d → none |
| 49 | **SMA** | 2016-11-08 09:00 A | 2016-11-09 13:00 A |  | 0% → 100% | 5.2d → none |
| 50 | Hacer nuevos Mockups | 2016-11-08 09:00 A | 2016-11-09 13:00 A |  | 0% → 100% | 5.2d → none |
| 51 | **NM** | 2016-11-07 09:00 A | 2016-11-07 12:30 A |  | 0% → 100% | 6.85d → none |
| 52 | Definir metricas | 2016-11-07 09:00 A | 2016-11-07 12:30 A |  | 0% → 100% | 6.85d → none |
| 53 | Especificar elementos y tecnologías a utilizar | 2016-11-07 09:00 A | 2016-11-07 12:30 A |  | 0% → 100% | 6.85d → none |
| 54 | **Iteración 3** | 2016-11-17 09:00 A | 2016-11-30 19:00 A |  | 0% → 100% | 0d → none |
| 55 | **PM** | 2016-11-18 09:00 A | 2016-11-30 19:00 A |  | 0% → 100% | 0d → none |
| 56 | **Documento de Planificación** | 2016-11-18 09:00 A | 2016-11-28 18:00 A |  | 0% → 100% | 1.7d → none |
| 57 | Hacer aparatado de Propósito | 2016-11-18 09:00 A | 2016-11-18 11:00 A |  | 0% → 100% | 7.4d → none |
| 58 | Hacer aparatado de Análisis de riesgos | 2016-11-18 11:00 A | 2016-11-18 17:00 A |  | 0% → 100% | 7.4d → none |
| 59 | Revisar y añadir Análisis de riesgos | 2016-11-28 09:00 A | 2016-11-28 13:00 A |  | 0% → 100% | 1.7d → none |
| 60 | Hacer aparatado de Estimación de costes | 2016-11-18 09:00 A | 2016-11-18 12:00 A |  | 0% → 100% | 7.7d → none |
| 61 | Hacer aparatado de Agenda del proyecto | 2016-11-18 16:00 A | 2016-11-18 19:00 A |  | 0% → 100% | 7.2d → none |
| 62 | Revisar y modificar Agenda del proyecto | 2016-11-28 15:00 A | 2016-11-28 18:00 A |  | 0% → 100% | 1.7d → none |
| 63 | Hacer aparatado de Mecanismos de seguimiento y control | 2016-11-18 16:00 A | 2016-11-18 18:30 A |  | 0% → 100% | 6.85d → none |
| 64 | **Seguimiento** | 2016-11-29 09:00 A | 2016-11-30 19:00 A |  | 0% → 100% | 0d → none |
| 65 | Registrar de tiempos y % de realización de tareas en Project | 2016-11-29 09:00 A | 2016-11-29 10:00 A |  | 0% → 100% | 1.5d → none |
| 66 | Comparar la planificación prevista y real en Project hito 1. | 2016-11-30 18:00 A | 2016-11-30 19:00 A |  | 0% → 100% | 0d → none |
| 67 | Confeccionar Informes de iteración e informe resumen de Hito 1 | 2016-11-30 16:30 A | 2016-11-30 19:00 A |  | 0% → 100% | 0d → none |
| 68 | **SMBI** | 2016-11-17 09:00 A | 2016-11-30 19:00 A |  | 0% → 100% | 0d → none |
| 69 | **Infraestructura** | 2016-11-17 09:00 A | 2016-11-19 19:00 A |  | 0% → 100% | 0.2d → none |
| 70 | Instalar los elementos de backend y seguridad | 2016-11-17 09:00 A | 2016-11-17 19:00 A |  | 0% → 100% | 0.8d → none |
| 71 | Configurar de los elementos de backend y seguridad | 2016-11-18 17:00 A | 2016-11-19 19:00 A |  | 0% → 100% | 0.2d → none |
| 72 | **Investigación** | 2016-11-21 11:00 A | 2016-11-30 19:00 A |  | 0% → 100% | 0d → none |

| ID | Task | Start | Finish | Duration | Complete | Total float |
| --- | --- | --- | --- | --- | --- | --- |
| 73 | Investigar sobre las tecnologías a usar y lenguaje de programación del backend | 2016-11-21 11:00 A | 2016-11-30 19:00 A |  | 0% → 100% | 0d → none |
| 74 | **SMA** | 2016-11-28 15:00 A | 2016-11-28 19:00 A |  | 0% → 100% | 1.6d → none |
| 75 | **Diagrama de flujo de interfaces** | 2016-11-28 15:00 A | 2016-11-28 19:00 A |  | 0% → 100% | 1.6d → none |
| 76 | Definir interfaces y navegacion entre ellas | 2016-11-28 15:00 A | 2016-11-28 19:00 A |  | 0% → 100% | 1.6d → none |
| 77 | **NM** | 2016-11-21 09:00 A | 2016-11-21 13:00 A |  | 0% → 100% | 5.7d → none |
| 78 | **Definición** | 2016-11-21 09:00 A | 2016-11-21 13:00 A |  | 0% → 100% | 5.7d → none |
| 79 | Definir indicadores principales del proyecto | 2016-11-21 09:00 A | 2016-11-21 13:00 A |  | 0% → 100% | 5.7d → none |
| 80 | **ELE** | 2016-11-21 15:00 A | 2016-11-21 18:00 A |  | 0% → 100% | 5.7d → none |
| 81 | **Tarea 1** | 2016-11-21 15:00 A | 2016-11-21 18:00 A |  | 0% → 100% | 5.7d → none |
| 82 | Realizar MOOC y Lean Canvas | 2016-11-21 15:00 A | 2016-11-21 18:00 A |  | 0% → 100% | 5.7d → none |
| 83 | **Iteracion 4** | 2016-12-01 09:00 → 2016-11-30 19:00 (-1d) | 2016-12-14 11:00 A | 7.4d → 7.4d? | 0% → 100% | 0d → none |
| 84 | **PM** | 2016-12-13 09:00 A | 2016-12-14 11:00 A |  | 0% → 100% | 156.6d → none |
| 85 | **Seguimiento** | 2016-12-13 09:00 A | 2016-12-13 17:00 A |  | 0% → 100% | 156.6d → none |
| 86 | Registrar de tiempos y % de realización de tareas en Project | 2016-12-13 09:00 A | 2016-12-13 11:00 A |  | 0% → 100% | 156.6d → none |
| 87 | Comparar la planificación prevista y real en Project hito 1. | 2016-12-13 11:00 A | 2016-12-13 13:00 A |  | 0% → 100% | 156.6d → none |
| 88 | Confeccionar Informes de iteración e informe resumen de Hito 1 | 2016-12-13 15:00 A | 2016-12-13 17:00 A |  | 0% → 100% | 156.6d → none |
| 89 | **Ejercicio Propuesto** | 2016-12-13 17:00 A | 2016-12-14 11:00 A |  | 0% → 100% | 156.6d → none |
| 90 | Aplicar el modelo EVA en Project | 2016-12-13 17:00 A | 2016-12-14 11:00 A |  | 0% → 100% | 156.6d → none |
| 91 | **SMBI** | 2016-12-06 15:00 A | 2016-12-12 19:00 A |  | 0% → 100% | 157.6d → none |
| 92 | **Investigación** | 2016-12-06 15:00 A | 2016-12-07 19:00 A |  | 0% → 100% | 157.6d → none |
| 93 | Investigar sobre las tecnologías a usar y lenguaje de programación del backend | 2016-12-06 15:00 A | 2016-12-07 19:00 A |  | 0% → 100% | 157.6d → none |
| 94 | **Configuración de los elemenos de backend** | 2016-12-08 09:00 A | 2016-12-09 17:00 A |  | 0% → 100% | 157.6d → none |
| 95 | Diseñar BBDD - Primer diseño | 2016-12-08 09:00 A | 2016-12-08 12:00 A |  | 0% → 100% | 158.7d → none |
| 96 | Diseñar BBDD - Segundo diseño | 2016-12-08 09:00 A | 2016-12-08 12:00 A |  | 0% → 100% | 158.7d → none |
| 97 | Diseñar BBDD - Definitivo | 2016-12-08 09:00 A | 2016-12-08 17:00 A |  | 0% → 100% | 158.4d → none |
| 98 | Gestionar la transaccionalidad de la BD con lenguaje Java | 2016-12-08 09:00 A | 2016-12-09 17:00 A |  | 0% → 100% | 157.6d → none |
| 99 | **Integracion modelos MySQL en JAVA** | 2016-12-09 17:00 A | 2016-12-12 19:00 A |  | 0% → 100% | 157.6d → none |
| 100 | Investigar e Integrar tablas asignadas | 2016-12-09 17:00 A | 2016-12-12 19:00 A |  | 0% → 100% | 157.6d → none |
| 101 | Integrar tablas asignadas | 2016-12-09 17:00 A | 2016-12-12 12:00 A |  | 0% → 100% | 158.1d → none |
| 102 | Integrar tablas asignadas | 2016-12-09 17:00 A | 2016-12-12 12:00 A |  | 0% → 100% | 158.1d → none |
| 103 | Integrar tablas asignadas | 2016-12-09 17:00 A | 2016-12-12 12:00 A |  | 0% → 100% | 158.1d → none |
| 104 | Integrar tablas asignadas | 2016-12-09 17:00 A | 2016-12-12 12:00 A |  | 0% → 100% | 158.1d → none |
| 105 | **SMA** | 2016-12-02 09:00 A | 2016-12-02 13:00 A |  | 0% → 100% | 162.8d → none |
| 106 | **Documentación** | 2016-12-02 09:00 A | 2016-12-02 13:00 A |  | 0% → 100% | 162.8d → none |
| 107 | Explicar el mapa de navegación entre interfaces | 2016-12-02 09:00 A | 2016-12-02 13:00 A |  | 0% → 100% | 162.8d → none |
| 108 | **NM** | 2016-12-02 09:00 A | 2016-12-02 12:00 A |  | 0% → 100% | 162.9d → none |
| 109 | **Contextualización** | 2016-12-02 09:00 A | 2016-12-02 12:00 A |  | 0% → 100% | 162.9d → none |
| 110 | Contextualizar modelo de datos | 2016-12-02 09:00 A | 2016-12-02 12:00 A |  | 0% → 100% | 162.9d → none |
| 111 | **TAG** | 2016-12-01 09:00 → 2016-11-30 19:00 (-1d) | 2016-12-05 12:00 A | 1.9d → 1.9d? | 0% → 100% | 0d → none |
| 112 | **Visualización** | 2016-12-01 09:00 → 2016-11-30 19:00 (-1d) |  |  | 0% → 100% |  |
| 113 | Hacer un visualizador OpenGL 4.X simple, con datos por programa. Shader básico. | 2016-12-05 09:00 A | 2016-12-05 12:00 A |  | 0% → 100% | 163.1d → none |
| 114 | **Iteracion 5** | 2016-12-14 11:00 A | 2016-12-22 11:00 A |  | 0% → 100% | 152.8d → none |
| 115 | **PM** | 2016-12-21 09:00 A | 2016-12-22 11:00 A |  | 0% → 100% | 152.8d → none |
| 116 | **Seguimiento** | 2016-12-21 09:00 A | 2016-12-22 11:00 A |  | 0% → 100% | 152.8d → none |
| 117 | Registrar de tiempos y % de realización de tareas en Project | 2016-12-21 09:00 A | 2016-12-21 13:00 A |  | 0% → 100% | 152.8d → none |
| 118 | Comparar la planificación prevista y real en Project hito 1. | 2016-12-21 15:00 A | 2016-12-21 19:00 A |  | 0% → 100% | 152.8d → none |
| 119 | Confeccionar Informes de iteración e informe resumen de Hito 1 | 2016-12-22 09:00 A | 2016-12-22 11:00 A |  | 0% → 100% | 152.8d → none |
| 120 | **SMBI** | 2016-12-14 11:00 A | 2016-12-21 10:00 A |  | 0% → 100% | 153.7d → none |
| 121 | **Pruebas** | 2016-12-14 11:00 A | 2016-12-14 16:00 A |  | 0% → 100% | 157.3d → none |
| 122 | Hacer pruebas unitarias | 2016-12-14 11:00 A | 2016-12-14 16:00 A |  | 0% → 100% | 157.3d → none |
| 123 | **Desarrollo** | 2016-12-19 09:00 A | 2016-12-21 10:00 A |  | 0% → 100% | 153.7d → none |
| 124 | Implementación API RESTFULL | 2016-12-19 09:00 A | 2016-12-19 17:00 A |  | 0% → 100% | 154.7d → none |
| 125 | Hacer documentacion | 2016-12-21 09:00 A | 2016-12-21 10:00 A |  | 0% → 100% | 153.7d → none |
| 126 | **HITO 2** | 2016-10-03 09:00 A | 2017-01-31 12:00 A |  | 0% → 100% | 0.5d → none |
| 127 | **Iteración 1** | 2016-10-03 09:00 A | 2017-01-09 10:30 A |  | 0% → 100% | 11.25d → none |
| 128 | **PM** | 2016-10-03 09:00 A | 2017-01-09 10:30 A |  | 0% → 100% | 11.25d → none |
| 129 | **Especificación** | 2016-10-03 09:00 A | 2016-10-03 11:00 A |  | 0% → 100% | 67.85d → none |
| 130 | Revisar especificación proyecto. | 2016-10-03 09:00 A | 2016-10-03 11:00 A |  | 0% → 100% | 67.85d → none |
| 131 | **Estimación** | 2016-12-27 09:00 A | 2016-12-27 12:00 A |  | 0% → 100% | 17.65d → none |
| 132 | Reestimar proyecto | 2016-12-27 09:00 A | 2016-12-27 12:00 A |  | 0% → 100% | 17.65d → none |
| 133 | **Planificación** | 2016-12-27 12:00 A | 2016-12-28 10:30 A |  | 0% → 100% | 17.65d → none |
| 134 | **Detallar plan iteraciones del mes de Enero** | 2016-12-27 12:00 A | 2016-12-28 10:30 A |  | 0% → 100% | 17.65d → none |
| 135 | Creación Subtareas y precedencias en Project | 2016-12-27 12:00 A | 2016-12-27 17:30 A |  | 0% → 100% | 17.65d → none |
| 136 | Asignar recursos a las tareas en Project | 2016-12-27 17:30 A | 2016-12-28 10:30 A |  | 0% → 100% | 17.65d → none |
| 137 | **Elaborar la presentación del Hito 1** | 2017-01-09 09:00 A | 2017-01-09 10:30 A |  | 0% → 100% | 11.25d → none |
| 138 | Hacer PowerPoint | 2017-01-09 09:00 A | 2017-01-09 10:30 A |  | 0% → 100% | 11.25d → none |
| 139 | **SMBI** | 2016-12-30 12:00 A | 2017-01-03 11:00 A |  | 0% → 100% | 14.4d → none |
| 140 | **Cambio tecnología** | 2016-12-30 12:00 A | 2017-01-03 11:00 A |  | 0% → 100% | 14.4d → none |
| 141 | Migrar lenguaje de desarrollo a PHP | 2016-12-30 12:00 A | 2016-12-30 19:00 A |  | 0% → 100% | 15.4d → none |
| 142 | Aprender uso nueva tecnología | 2017-01-02 09:00 A | 2017-01-03 11:00 A |  | 0% → 100% | 14.4d → none |

| ID | Task | Start | Finish | Duration | Complete | Total float |
| --- | --- | --- | --- | --- | --- | --- |
| 143 | **NM** | 2016-10-03 09:00 A | 2016-10-03 13:00 A |  | 0% → 100% | 68.6d → none |
| 144 | Modelo para la integración de datos | 2016-10-03 09:00 A | 2016-10-03 13:00 A |  | 0% → 100% | 68.6d → none |
| 145 | **Iteración 2** | 2017-01-09 10:30 A | 2017-01-31 12:00 A |  | 0% → 100% | 0.5d → none |
| 146 | **SDM** | 2017-01-09 10:30 A | 2017-01-16 10:30 A |  | 0% → 100% | 10.15d → none |
| 147 | **Memoria ABP** | 2017-01-09 10:30 A | 2017-01-12 12:30 A |  | 0% → 100% | 11.55d → none |
| 148 | **Apartado 1** | 2017-01-09 10:30 A | 2017-01-09 12:30 A |  | 0% → 100% | 12.5d → none |
| 149 | Describir proyecto | 2017-01-09 10:30 A | 2017-01-09 12:30 A |  | 0% → 100% | 12.5d → none |
| 150 | **Apartado 2** | 2017-01-09 12:30 A | 2017-01-09 16:30 A |  | 0% → 100% | 12.5d → none |
| 151 | Explicar diseño de aplicación | 2017-01-09 12:30 A | 2017-01-09 16:30 A |  | 0% → 100% | 12.5d → none |
| 152 | **Apartado 3** | 2017-01-09 16:30 A | 2017-01-10 09:30 A |  | 0% → 100% | 12.5d → none |
| 153 | Explicar marco tecnológico | 2017-01-09 16:30 A | 2017-01-10 09:30 A |  | 0% → 100% | 12.5d → none |
| 154 | **Descripcion de objetivos SDM en ABP** | 2017-01-10 09:30 A | 2017-01-11 10:00 A |  | 0% → 100% | 12.25d → none |
| 155 | Explicar uso de CMS | 2017-01-10 09:30 A | 2017-01-10 11:30 A |  | 0% → 100% | 12.5d → none |
| 156 | Explicar uso de posicionamiento y difusion | 2017-01-10 09:30 A | 2017-01-10 16:30 A |  | 0% → 100% | 12.6d → none |
| 157 | Usar transformacion de formatos | 2017-01-10 11:30 A | 2017-01-10 17:30 A |  | 0% → 100% | 12.5d → none |
| 158 | Explicar el consumo de API's | 2017-01-10 09:30 A | 2017-01-10 11:30 A |  | 0% → 100% | 12.8d → none |
| 159 | Explicar la autorizacion Oauth 2.0 | 2017-01-11 09:00 A | 2017-01-11 10:00 A |  | 0% → 100% | 12.25d → none |
| 160 | **Apartado 5** | 2017-01-12 09:00 A | 2017-01-12 10:30 A |  | 0% → 100% | 11.55d → none |
| 161 | Explicar objetivos cumplidos | 2017-01-12 09:00 A | 2017-01-12 10:30 A |  | 0% → 100% | 11.55d → none |
| 162 | **Conclusión** | 2017-01-12 10:30 A | 2017-01-12 11:30 A |  | 0% → 100% | 11.55d → none |
| 163 | Escribir conclusion de la memoria | 2017-01-12 10:30 A | 2017-01-12 11:30 A |  | 0% → 100% | 11.55d → none |
| 164 | **Apartado 7** | 2017-01-12 11:30 A | 2017-01-12 12:30 A |  | 0% → 100% | 11.55d → none |
| 165 | Explicar Reparto del trabajo | 2017-01-12 11:30 A | 2017-01-12 12:30 A |  | 0% → 100% | 11.55d → none |
| 166 | **Presentación** | 2017-01-16 09:00 A | 2017-01-16 10:30 A |  | 0% → 100% | 10.15d → none |
| 167 | Hacer powerpoint para presentacion | 2017-01-16 09:00 A | 2017-01-16 10:30 A |  | 0% → 100% | 10.15d → none |
| 168 | **SMA** | 2017-01-16 10:30 A | 2017-01-16 11:30 A |  | 0% → 100% | 10.15d → none |
| 169 | **Documento de SEO** | 2017-01-16 10:30 A | 2017-01-16 11:30 A |  | 0% → 100% | 10.15d → none |
| 170 | Definir aspectos SEO como son palabras clave, estilos de textos, posiciones de texto, como se va a potenciar esto (landing, blog, etc…), URL amigables | 2017-01-16 10:30 A | 2017-01-16 11:30 A |  | 0% → 100% | 10.15d → none |
| 171 | **PM** | 2017-01-28 09:00 A | 2017-01-28 19:00 A |  | 0% → 100% | 1.6d → none |
| 172 | **Seguimiento** | 2017-01-28 09:00 A | 2017-01-28 19:00 A |  | 0% → 100% | 1.6d → none |
| 173 | Registrar de tiempos y % de realización de tareas en Project | 2017-01-28 09:00 A | 2017-01-28 16:00 A |  | 0% → 100% | 1.6d → none |
| 174 | Comparar la planificación prevista y real en Project hito 2 | 2017-01-28 16:00 A | 2017-01-28 19:00 A |  | 0% → 100% | 1.6d → none |
| 175 | Confeccionar Informes de iteración e informe resumen de Hito 2 | 2017-01-28 19:00 A | 2017-01-28 19:00 A |  | 0% → 100% | 1.6d → none |
| 176 | **SMBI** | 2017-01-11 09:00 A | 2017-01-16 17:00 A |  | 0% → 100% | 9.8d → none |
| 177 | Implementar back-end | 2017-01-11 09:00 A | 2017-01-16 17:00 A |  | 0% → 100% | 9.8d → none |
| 178 | **TAG** | 2017-01-30 09:00 A | 2017-01-30 19:00 A |  | 0% → 100% | 0.8d → none |
| 179 | **Gestión de recursos** | 2017-01-30 09:00 A | 2017-01-30 19:00 A |  | 0% → 100% | 0.8d → none |
| 180 | Parser de objetos en multiples formatos, salida en modo texto | 2017-01-30 09:00 A | 2017-01-30 19:00 A |  | 0% → 100% | 0.8d → none |
| 183 | **NM** | 2017-01-19 09:00 A | 2017-01-19 11:30 A |  | 0% → 100% | 7.75d → none |
| 184 | Incorporación de open data, API's, y otras fuentes heterogéneas | 2017-01-19 09:00 A | 2017-01-19 11:30 A |  | 0% → 100% | 7.75d → none |
| 185 | **SMA** | 2017-01-09 10:30 A | 2017-01-09 13:00 A |  | 0% → 100% | 14d → none |
| 186 | **Arquitectura tecnológica** | 2017-01-09 10:30 A | 2017-01-09 13:00 A |  | 0% → 100% | 14d → none |
| 187 | Describir arquitectura tecnológica: documento sobre toma de decisión, versiones, codificación, internacionalización (varias lenguas), instalación sobre servidor de frameworks… | 2017-01-09 10:30 A | 2017-01-09 13:00 A |  | 0% → 100% | 14d → none |
| 188 | **PD** | 2017-01-31 09:00 A | 2017-01-31 12:00 A |  | 0% → 100% | 0.5d → none |
| 189 | Cartel del proyecto | 2017-01-31 09:00 A | 2017-01-31 12:00 A |  | 0% → 100% | 0.5d → none |
| 190 | **HITO 3** |  | 2017-07-20 11:00 → 2017-04-05 19:00 (-106d) | 98.6d? → 40d? | 12% → 41% |  |
| 191 | **Iteracion 1** |  | 2017-02-10 16:00 A |  | 12% → 100% | 1.9d → none |
| 192 | **PM** |  | 2017-02-02 10:00 A |  | 95% → 100% | 6.6d → none |
| 193 | **Planificación** |  | 2017-02-02 10:00 A |  | 95% → 100% | 6.6d → none |
| 194 | **Detallar plan iteraciones del mes de Febrero-Marzo** |  | 2017-02-02 10:00 A |  | 95% → 100% | 6.6d → none |
| 195 | Crear Subtareas y precedencias en Project |  | 2017-02-01 12:00 A |  | 95% → 100% | 0.59d → none |
| 196 | Asignar recursos a las tareas en Project. |  | 2017-02-02 10:00 A |  | 95% → 100% | 6.6d → none |
| 197 | **TAG** | 2017-02-06 09:00 A | 2017-02-07 10:00 A |  | 0% → 100% | 4.5d → none |
| 198 | **Arbol de la escena** | 2017-02-06 09:00 A | 2017-02-07 10:00 A |  | 0% → 100% | 4.5d → none |
| 199 | **Tipos de datos para nodos y entidades (4)** | 2017-02-06 09:00 A | 2017-02-07 10:00 A |  | 0% → 100% | 4.5d → none |
| 200 | Definir tipos de datos para nodos (completo) y entidades (sólo clase padre; clases hijas sin contenido) | 2017-02-06 09:00 A | 2017-02-06 13:00 A |  | 0% → 100% | 4.5d → none |
| 201 | Construir árbol | 2017-02-06 15:00 A | 2017-02-06 17:00 A |  | 0% → 100% | 4.5d → none |
| 202 | Definir recorrido del arbol | 2017-02-06 17:00 A | 2017-02-06 19:00 A |  | 0% → 100% | 4.5d → none |
| 203 | Implementar salida en modo texto | 2017-02-07 09:00 A | 2017-02-07 10:00 A |  | 0% → 100% | 4.5d → none |
| 204 | **SMA** | 2017-02-02 10:00 A | 2017-02-10 16:00 A |  | 0% → 100% | 1.9d → none |
| 205 | **Guía de estilos** | 2017-02-02 10:00 A | 2017-02-02 12:00 A |  | 0% → 100% | 6.6d → none |
| 206 | Hacer documento de guia de estilos | 2017-02-02 10:00 A | 2017-02-02 12:00 A |  | 0% → 100% | 6.6d → none |
| 207 | **Creación de Interfaces** | 2017-02-10 09:00 A | 2017-02-10 16:00 A |  | 0% → 100% | 1.9d → none |
| 208 | Implementar Panel de Administrador | 2017-02-10 09:00 A | 2017-02-10 12:00 A |  | 0% → 100% | 1.9d → none |
| 209 | Implementar Login | 2017-02-10 12:00 A | 2017-02-10 16:00 A |  | 0% → 100% | 1.9d → none |
| 210 | **PD** | 2017-02-07 09:00 A | 2017-02-07 11:00 A |  | 0% → 100% | 4.6d → none |
| 211 | **Trailer del proyecto** | 2017-02-07 09:00 A | 2017-02-07 11:00 A |  | 0% → 100% | 4.6d → none |
| 212 | Escribir guión | 2017-02-07 09:00 A | 2017-02-07 11:00 A |  | 0% → 100% | 4.6d → none |
| 213 | **SMBI** | 2017-02-02 09:00 A | 2017-02-03 11:30 A |  | 0% → 100% | 6.15d → none |
| 214 | **Desarrollo Backend** | 2017-02-02 09:00 A | 2017-02-02 17:30 A |  | 0% → 100% | 6.15d → none |

| ID | Task | Start | Finish | Duration | Complete | Total float | Predecessors | Other |
| --- | --- | --- | --- | --- | --- | --- | --- | --- |
| 215 | Implementar funciones GET | 2017-02-02 09:00 A | 2017-02-02 11:00 A |  | 0% → 100% | 6.15d → none |  |  |
| 216 | Implementar funciones PUT | 2017-02-02 11:00 A | 2017-02-02 15:30 A |  | 0% → 100% | 6.15d → none |  |  |
| 217 | Implementar funciones DELETE | 2017-02-02 15:30 A | 2017-02-02 17:30 A |  | 0% → 100% | 6.15d → none |  |  |
| 218 | **Pruebas funcionamiento** | 2017-02-02 17:30 A | 2017-02-03 11:30 A |  | 0% → 100% | 6.15d → none |  |  |
| 219 | Probar PUT | 2017-02-02 17:30 A | 2017-02-03 09:30 A |  | 0% → 100% | 6.15d → none |  |  |
| 220 | Probar DELETE | 2017-02-03 09:30 A | 2017-02-03 11:30 A |  | 0% → 100% | 6.15d → none |  |  |
| 221 | **NM** | 2017-02-07 10:00 A | 2017-02-07 12:00 A |  | 0% → 100% | 4.5d → none |  |  |
| 222 | **Definición de KPI's e implementación** | 2017-02-07 10:00 A | 2017-02-07 12:00 A |  | 0% → 100% | 4.5d → none |  |  |
| 223 | Definir KPI's | 2017-02-07 10:00 A | 2017-02-07 12:00 A |  | 0% → 100% | 4.5d → none |  |  |
| 224 | **PM** | 2017-02-10 09:00 A | 2017-02-10 12:00 A |  | 0% → 100% | 2.1d → none |  |  |
| 225 | **Seguimiento** | 2017-02-10 09:00 A | 2017-02-10 12:00 A |  | 0% → 100% | 2.1d → none |  |  |
| 226 | Registrar de tiempos y % de realización de tareas en Project | 2017-02-10 09:00 A | 2017-02-10 10:00 A |  | 0% → 100% | 2.1d → none |  |  |
| 227 | Comparar la planificación prevista y real en Project hito 3 | 2017-02-10 10:00 A | 2017-02-10 11:00 A |  | 0% → 100% | 2.1d → none |  |  |
| 228 | Confeccionar Informes de iteración e informe resumen de Hito 3 | 2017-02-10 11:00 A | 2017-02-10 12:00 A |  | 0% → 100% | 2.1d → none |  |  |
| 229 | **Iteración 2** |  | 2017-03-23 10:00 → 2017-02-25 11:00 A (-26d) | 24.4d? → 9.3d? | 34% → 100% | 45.6d → none |  |  |
| 230 | **PM** | 2017-02-13 09:00 A | 2017-02-13 13:00 A |  | 0% → 100% | 69.3d → none |  |  |
| 231 | **Planificación** | 2017-02-13 09:00 A | 2017-02-13 13:00 A |  | 0% → 100% | 69.3d → none |  |  |
| 232 | **Detallar plan iteración** | 2017-02-13 09:00 A | 2017-02-13 13:00 A |  | 0% → 100% | 69.3d → none |  |  |
| 233 | Crear Subtareas y precedencias en Project | 2017-02-13 09:00 A | 2017-02-13 12:00 A |  | 0% → 100% | 69.3d → none |  |  |
| 234 | Asignar recursos a las tareas en Project. | 2017-02-13 12:00 A | 2017-02-13 13:00 A |  | 0% → 100% | 69.3d → none |  |  |
| 235 | **SMBI** | 2017-02-15 09:00 A → 2017-02-13 09:00 A (-2d) | 2017-02-25 17:00 A → 2017-02-16 17:00 A (-9d) | 7.8d? → 3d? |  |  |  |  |
| 236 | Hacer GET BY de todas las entidades | 2017-02-15 09:00 A → 2017-02-13 09:00 A (-2d) | 2017-02-20 17:00 A → 2017-02-14 11:00 A (-6d) | 3d? → 1d? |  |  | none → 220 | constraint start no earlier than 2017-02-15 09:00 → start no earlier than 2017-02-13 09:00; resources Manuel → Manuel; Ricardo |
| 237 | Hacer DELETE BY de todas las entidades | 2017-02-17 15:00 A → 2017-02-14 11:00 A (-3d) | 2017-02-23 11:00 A → 2017-02-15 13:00 A (-8d) | 2d? → 1d? |  |  |  | resources Manuel → Manuel; Ricardo |
| 238 | Conseguir atributos de una entidad a partir de un GET a otra entidad | 2017-02-22 09:00 A → 2017-02-15 15:00 A (-7d) | 2017-02-25 17:00 A → 2017-02-16 17:00 A (-9d) | 3d? → 1d? |  |  |  | resources Manuel → Manuel; Ricardo |
| 239 | **SMA** |  | 2017-03-23 10:00 → 2017-02-22 12:00 A (-29d) | 24.4d? → 7d? | 31% → 100% | 45.6d → none |  |  |
| 240 | Integración Front-Back | 2017-03-22 15:00 → 2017-02-21 17:00 A (-29d) | 2017-03-23 10:00 → 2017-02-22 12:00 A (-29d) | 5h → 5h? | 0% → 100% | 45.6d → none | CRUD's → 238 |  |
| 241 | Definir interfaces | 2017-02-10 16:00 A | 2017-02-10 17:00 → 2017-02-10 16:30 A | 1h? → 0.5h? | 0% → 100% | 69.9d → none |  | resources Nahiara; Ricardo; Antonio → Ricardo |
| 242 | **Diseño de interfaces para front-end (Estructura de Pag)** | 2017-02-14 09:00 A → 2017-02-10 16:00 A (-4d) | 2017-02-24 11:30 → 2017-02-21 11:00 A (-3d) | 7.45d? → 6.1d? | 33% → 100% | 61.45d → none |  |  |
| 243 | Diseñar Pagina Principal |  |  |  |  |  | none → 234 | resources Nahiara; Antonio → Nahiara |
| 244 | Diseñar Página Profesor | 2017-02-15 17:00 A → 2017-02-15 16:00 A | 2017-02-15 19:00 → 2017-02-16 11:00 A (+1d) | 5h? → 0.5d? | 80% → 100% | 0d → none | none → 243 | resources Ricardo → Nahiara |
| 245 | Diseñar Página Padre | 2017-02-15 18:00 A → 2017-02-16 11:00 A (+1d) | 2017-02-16 16:00 → 2017-02-16 18:00 A | 5h? → 0.5d? | 40% → 100% | 0.15d → none |  | resources Ricardo → Nahiara |
| 246 | Diseñar Página Alumno | 2017-02-16 16:00 → 2017-02-16 18:00 A | 2017-02-16 18:30 → 2017-02-17 13:00 A (+1d) | 2.5h? → 0.5d? | 0% → 100% | 0.15d → none |  | resources Ricardo → Nahiara |
| 247 | Diseñar Página Admin | 2017-02-16 12:00 A → 2017-02-17 15:00 A (+1d) | 2017-02-17 15:30 → 2017-02-18 10:00 A (+1d) | 5h? → 0.5d? | 30% → 100% | 0.1d → none |  | resources Ricardo → Nahiara |
| 248 | Diseñar Página Gestor | 2017-02-16 16:00 A → 2017-02-18 10:00 A (+2d) | 2017-02-17 18:00 → 2017-02-18 17:00 A (+1d) | 2.5h? → 0.5d? | 40% → 100% | 1d → none |  |  |
| 249 | Diseñar Página Sobre Nosotros | 2017-02-17 09:00 A → 2017-02-10 16:00 A (-7d) | 2017-02-20 13:00 → 2017-02-10 17:00 A (-10d) | 5h? → 1h? | 40% → 100% | 0.25d → none | 248 → 223 |  |
| 250 | Diseñar Página Contacto | 2017-02-17 11:00 A → 2017-02-18 18:00 A (+1d) | 2017-02-21 10:30 → 2017-02-18 19:00 A (-3d) | 5.5h? → 0.1d? | 45% → 100% | 0.15d → none |  |  |
| 251 | Diseñar Página Mapa | 2017-02-17 12:30 A → 2017-02-20 09:00 A (+3d) | 2017-02-21 17:30 → 2017-02-20 10:00 A (-1d) | 5h? → 0.1d? | 30% → 100% | 0.3d → none |  |  |
| 252 | Diseñar Página Ajustes | 2017-02-17 15:30 A → 2017-02-20 10:00 A (+3d) | 2017-02-22 12:30 → 2017-02-20 11:00 A (-2d) | 5h? → 0.1d? | 60% → 100% | 0.2d → none |  |  |
| 253 | Diseñar Página Mis datos | 2017-02-17 18:30 A → 2017-02-20 11:00 A (+3d) | 2017-02-23 09:30 → 2017-02-20 12:00 A (-3d) | 5h? → 0.1d? | 40% → 100% | 0.35d → none |  | resources Nahaira → Nahiara |
| 254 | Diseñar Página Mensajes Recibidos | 2017-02-20 10:00 A → 2017-02-20 12:00 A | 2017-02-23 16:30 → 2017-02-20 13:00 A (-3d) | 5h? → 0.1d? | 70% → 100% | 0.15d → none |  |  |
| 255 | Diseñar Página Mensajes Enviados | 2017-02-18 15:00 → 2017-02-20 15:00 A (+2d) | 2017-02-18 17:00 → 2017-02-20 16:00 A (+2d) | 0.2d? → 0.1d? | 0% → 100% | 63.85d → none | Diseñar Página Mensajes Recibidos → 254 |  |
| 256 | Diseñar Página Mensajes Eliminados | 2017-02-18 17:00 → 2017-02-20 16:00 A (+2d) | 2017-02-18 19:00 → 2017-02-20 17:00 A (+2d) | 0.2d? → 0.1d? | 0% → 100% | 63.85d → none |  |  |
| 257 | Diseñar Página Ver Mensajes | 2017-02-20 12:00 A → 2017-02-20 17:00 A | 2017-02-24 11:30 → 2017-02-20 18:00 A (-4d) | 5h? → 0.1d? | 30% → 100% | 61.45d → none | 254 → 256 |  |
| 258 | Diseñar Página Mensaje Nuevo | 2017-02-20 09:00 → 2017-02-20 18:00 A | 2017-02-20 11:00 → 2017-02-20 19:00 A | 0.2d? → 0.1d? | 0% → 100% | 63.85d → none | 256 → 257 |  |
| 259 | Diseñar Página Autorizaciones | 2017-02-20 11:00 → 2017-02-21 09:00 A (+1d) | 2017-02-20 13:00 → 2017-02-21 10:00 A (+1d) | 0.2d? → 0.1d? | 0% → 100% | 63.85d → none |  |  |
| 260 | Diseñar Página Anuncios | 2017-02-20 15:00 → 2017-02-21 10:00 A (+1d) | 2017-02-20 17:00 → 2017-02-21 11:00 A (+1d) | 0.2d? → 0.1d? | 0% → 100% | 63.85d → none |  |  |
| 261 | **PD** | 2017-02-10 16:00 A | 2017-02-13 13:00 A |  | 0% → 100% | 69.3d → none |  |  |
| 262 | **Trailer del proyecto** | 2017-02-10 16:00 A | 2017-02-13 13:00 A |  | 0% → 100% | 69.3d → none |  |  |
| 263 | Crear Storyboard | 2017-02-10 16:00 A | 2017-02-10 19:00 A |  | 0% → 100% | 69.3d → none |  |  |
| 264 | Grabar video Parte 1 | 2017-02-13 09:00 A | 2017-02-13 13:00 A |  | 0% → 100% | 69.3d → none |  |  |
| 265 | **NM** | 2017-02-24 09:00 A | 2017-02-24 10:00 A |  | 0% → 100% | 61.6d → none |  |  |
| 266 | **Seguimiento** | 2017-02-24 09:00 A | 2017-02-24 10:00 A |  | 0% → 100% | 61.6d → none |  |  |
| 267 | Confeccionar Informes de iteración e informe resumen de Hito 3 | 2017-02-24 09:00 A | 2017-02-24 10:00 A |  | 0% → 100% | 61.6d → none |  |  |
| 268 | **ELE** | 2017-02-20 15:00 → 2017-02-21 10:00 A (+1d) | 2017-02-20 16:00 → 2017-02-21 11:00 A (+1d) |  | 0% → 100% | 64.4d → none |  |  |
| 269 | **Tarea 2** | 2017-02-20 15:00 → 2017-02-21 10:00 A (+1d) | 2017-02-20 16:00 → 2017-02-21 11:00 A (+1d) |  | 0% → 100% | 64.4d → none |  |  |
| 270 | Hacer guión | 2017-02-20 15:00 → 2017-02-21 10:00 A (+1d) | 2017-02-20 16:00 → 2017-02-21 11:00 A (+1d) |  | 0% → 100% | 64.4d → none |  |  |
| 271 | **TAG** | 2017-02-13 09:00 A | 2017-02-25 17:00 → 2017-02-23 18:00 A (-2d) | 9.4d? → 7.9d? | 0% → 100% | 60.3d → none |  |  |
| 272 | **Visualización(15)** | 2017-02-13 09:00 A | 2017-02-16 10:00 A |  | 0% → 100% | 60.6d → none |  |  |
| 273 | Realizar visualizador OpenGL 4.X con tres shaders avanzados | 2017-02-13 09:00 A | 2017-02-16 10:00 A |  | 0% → 100% | 60.6d → none | 203 → 249 |  |
| 274 | **Optimizaciones del motor (17)** | 2017-02-18 09:00 → 2017-02-16 10:00 A (-2d) | 2017-02-21 19:00 → 2017-02-20 10:00 A (-1d) |  | 0% → 100% | 60.3d → none |  |  |
| 275 | Optimizar motor | 2017-02-18 09:00 → 2017-02-16 10:00 A (-2d) | 2017-02-21 19:00 → 2017-02-20 10:00 A (-1d) |  | 0% → 100% | 60.3d → none |  |  |
| 276 | **Giro automático de los anillos, rotar esferas y zoom (19)** | 2017-02-22 09:00 → 2017-02-20 10:00 A (-2d) | 2017-02-25 17:00 → 2017-02-23 18:00 A (-2d) |  | 0% → 100% | 60.3d → none |  |  |
| 277 | Implementar giro automático de los anillos | 2017-02-22 09:00 → 2017-02-20 10:00 A (-2d) | 2017-02-23 18:00 → 2017-02-21 19:00 A (-2d) |  | 0% → 100% | 60.3d → none |  |  |
| 278 | Implementar rotación de las esferas | 2017-02-23 18:00 → 2017-02-22 09:00 A (-1d) | 2017-02-25 10:00 → 2017-02-23 11:00 A (-2d) |  | 0% → 100% | 60.3d → none |  |  |
| 279 | Implementar zoom | 2017-02-25 10:00 → 2017-02-23 11:00 A (-2d) | 2017-02-25 17:00 → 2017-02-23 18:00 A (-2d) |  | 0% → 100% | 60.3d → none |  |  |
| 280 | **PM** | 2017-02-25 09:00 A | 2017-02-25 15:30 → 2017-02-25 11:00 A | 0.45d? → 0.2d? | 0% → 100% | 60.45d → none |  |  |
| 281 | **Seguimiento** | 2017-02-25 09:00 A | 2017-02-25 15:30 → 2017-02-25 11:00 A | 0.45d? → 0.2d? | 0% → 100% | 60.45d → none |  |  |
| 282 | Registrar de tiempos y % de realización de tareas en Project | 2017-02-25 09:00 A | 2017-02-25 11:00 A |  | 0% → 100% | 60.45d → none |  | constraint start no earlier than 2017-02-25 09:00 → start no earlier than 2017-03-11 09:00 |
| 283 | Comparar la planificación prevista y real en Project hito 3 | 2017-02-25 11:00 → 2017-02-25 09:00 A | 2017-02-25 12:30 → 2017-02-25 10:30 A |  | 0% → 100% | 60.45d → none |  |  |
| 284 | Confeccionar Informes de iteración e informe resumen de Hito 3 | 2017-02-25 12:30 → 2017-02-25 09:00 A | 2017-02-25 15:30 → 2017-02-25 10:00 A |  | 0% → 100% | 60.45d → none |  |  |

| ID | Task | Start | Finish | Duration | Complete | Total float | Predecessors | Other |
| --- | --- | --- | --- | --- | --- | --- | --- | --- |
| 285 | **Iteracion 3** | 2017-03-23 10:00 → 2017-02-25 11:00 A (-26d) | 2017-04-06 17:00 → 2017-03-11 16:00 (-26d) | 8.5d? → 9.1d? | 0% → 47% | 42.1d → 5d |  |  |
| 286 | **PM** | 2017-03-23 10:00 → 2017-02-27 09:00 (-24d) | 2017-03-24 12:00 → 2017-02-27 13:00 (-25d) | 1d? → 0.4d? |  | 49.6d → 13.1d |  |  |
| 287 | **Planificación** | 2017-03-23 10:00 → 2017-02-27 09:00 (-24d) | 2017-03-24 12:00 → 2017-02-27 13:00 (-25d) | 1d? → 0.4d? |  | 49.6d → 13.1d |  |  |
| 288 | **Detallar plan iteración** | 2017-03-23 10:00 → 2017-02-27 09:00 (-24d) | 2017-03-24 12:00 → 2017-02-27 13:00 (-25d) | 1d? → 0.4d? |  | 49.6d → 13.1d |  |  |
| 289 | Crear Subtareas y precedencias en Project | 2017-03-23 10:00 → 2017-02-27 09:00 (-24d) | 2017-03-24 12:00 → 2017-02-27 11:00 (-25d) | 1d? → 2h? |  | 49.6d → 64.5d | none → 284 | resources none → Nahiara |
| 290 | Asignar recursos a las tareas en Project. | 2017-03-23 10:00 → 2017-02-27 11:00 (-24d) | 2017-03-24 12:00 → 2017-02-27 13:00 (-25d) | 1d? → 2h? |  | 49.6d → 64.5d | none → 289 | resources none → Nahiara |
| 291 | **SMBI** | 2017-03-13 09:00 → 2017-02-25 11:00 A (-16d) | 2017-03-22 13:00 → 2017-02-28 17:00 (-22d) | 6d → 2d? | 0% → 38% | 45.6d → 12.1d |  |  |
| 294 | **SMA** | 2017-03-23 10:00 → 2017-02-27 15:00 A (-24d) | 2017-04-06 17:00 → 2017-03-02 19:00 A (-35d) | 8.5d? → 2.8d? | 0% → 100% | 42.1d → none |  |  |
| 295 | **Diseño de interfaces para front-end (Estructura de Pag)** | 2017-03-23 10:00 → 2017-02-27 15:00 A (-24d) | 2017-04-06 17:00 → 2017-03-02 19:00 A (-35d) | 8.5d? → 2.8d? | 0% → 100% | 42.1d → none |  |  |
| 297 | Diseñar Página Tareas Hacer | 2017-03-23 10:00 → 2017-02-27 15:00 A (-24d) | 2017-03-23 13:00 → 2017-02-27 17:00 A (-24d) | 0.3d? → 2h? | 0% → 100% | 50.3d → none | none → 290 | was named Diseñar Página Tareas; resources none → Nahiara |
| 299 | Diseñar Pagina Expediente | 2017-04-03 09:00 → 2017-02-28 09:00 A (-34d) | 2017-04-04 11:00 → 2017-02-28 11:00 A (-35d) | 1d? → 0.2d? | 0% → 100% | 44.1d → none | none → 298 |  |
| 301 | Diseñar Página Materiales | 2017-03-23 10:00 → 2017-02-28 15:00 A (-23d) | 2017-03-23 13:00 → 2017-02-28 17:00 A (-23d) | 0.3d? → 0.2d? | 0% → 100% | 50.3d → none | none → 300 | resources none → Nahiara |
| 303 | Diseñar Página Publicar Anuncio | 2017-04-04 11:00 → 2017-02-28 17:00 A (-35d) | 2017-04-05 13:00 → 2017-02-28 19:00 A (-36d) | 1d? → 0.2d? | 0% → 100% | 43.1d → none | none → 293 | resources Antonio → Manuel |
| 315 | **PD** | 2017-03-23 10:00 → 2017-03-08 09:00 A (-15d) | 2017-03-29 13:00 → 2017-03-10 11:00 (-19d) | 3.5d? → 1.8d? | 0% → 64% | 47.1d → 6.1d |  |  |
| 316 | **Trailer Proyecto** | 2017-03-23 10:00 → 2017-03-08 09:00 A (-15d) | 2017-03-24 19:00 → 2017-03-10 11:00 (-14d) | 1.5d? → 1.8d? | 0% → 64% | 47.1d → 6.1d |  | was named Creditos |
| 317 | Grabar video parte 2 | 2017-03-23 10:00 → 2017-03-08 09:00 A (-15d) | 2017-03-24 19:00 → 2017-03-08 13:00 A (-16d) | 1.5d? → 4h? | 0% → 100% | 47.1d → none |  | was named Crear creditos; constraint start no earlier than 2017-02-22 09:00 → start no earlier than 2017-02-08 09:00; resources Antonio → Jorge |
| 319 | **TAG** | 2017-03-23 10:00 → 2017-02-28 11:00 (-23d) | 2017-03-31 19:00 → 2017-03-03 17:00 (-28d) | 5.5d? → 2.8d? |  | 45.1d → 9.7d |  |  |
| 320 | **Árbol de la escena** | 2017-03-23 10:00 → 2017-02-28 11:00 (-23d) | 2017-03-31 19:00 → 2017-03-03 17:00 (-28d) | 5.5d? → 2.8d? |  | 45.1d → 9.7d |  |  |
| 321 | **Tipos de datos para entidades de tipo transformación (5)** | 2017-03-29 15:00 → 2017-02-28 11:00 (-29d) | 2017-03-31 19:00 → 2017-03-02 17:00 (-29d) |  |  | 45.1d → 9.7d |  |  |
| 322 | Definir tipos de datos para entidades de tipo transformación (traslación, rotación y escalado relativos y absolutos. Otras transformaciones) | 2017-03-29 15:00 → 2017-02-28 11:00 (-29d) | 2017-03-31 19:00 → 2017-03-02 17:00 (-29d) |  |  | 45.1d → 69.9d | none → 299 |  |
| 323 | **Tipos de datos para entidades de tipo cámara y luz (6)** | 2017-03-23 10:00 → 2017-03-02 17:00 (-21d) | 2017-03-23 12:00 → 2017-03-03 11:00 (-20d) | 0.2d? → 0.4d? |  | 50.4d → 9.7d |  |  |
| 324 | Definir tipos de datos para entidades de tipo cámara y luz (cámaras y luces de dos tipos). | 2017-03-23 10:00 → 2017-03-02 17:00 (-21d) | 2017-03-23 12:00 → 2017-03-02 19:00 (-21d) |  |  | 50.4d → 69.9d | none → 322 | resources none → Antonio |
| 325 | Implementar salida en modo texto | 2017-03-23 10:00 → 2017-03-03 09:00 (-20d) | 2017-03-23 12:00 → 2017-03-03 11:00 (-20d) |  |  | 50.4d → 9.7d | none → 324 | resources none → Antonio |
| 326 | **Tipos de datos para entidades de tipo malla (7)** | 2017-03-23 10:00 → 2017-03-03 11:00 (-20d) | 2017-03-24 12:00 → 2017-03-03 17:00 (-21d) | 1d? → 0.4d? |  | 49.6d → 9.7d |  |  |
| 327 | Definir tipos de datos para entidades de tipo malla | 2017-03-23 10:00 → 2017-03-03 11:00 (-20d) | 2017-03-24 12:00 → 2017-03-03 13:00 (-21d) | 1d? → 2h? |  | 49.6d → 69.9d | none → 325 | resources none → Antonio |
| 328 | Implementar salida en modo texto | 2017-03-23 10:00 → 2017-03-03 15:00 (-20d) | 2017-03-24 12:00 → 2017-03-03 17:00 (-21d) | 1d? → 0.2d? |  | 49.6d → 9.7d | none → 327 | resources none → Antonio |
| 329 | **PM** | 2017-03-23 10:00 → 2017-03-11 09:00 (-12d) | 2017-03-24 12:00 → 2017-03-11 16:00 (-13d) | 1d? → 0.5d? |  | 49.6d → 5d |  |  |
| 330 | **Seguimiento** | 2017-03-23 10:00 → 2017-03-11 09:00 (-12d) | 2017-03-24 12:00 → 2017-03-11 16:00 (-13d) | 1d? → 0.5d? |  | 49.6d → 5d |  |  |
| 331 | Registrar de tiempos y % de realización de tareas en Project | 2017-03-23 10:00 → 2017-03-11 09:00 (-12d) | 2017-03-24 12:00 → 2017-03-11 11:00 (-13d) | 1d? → 2h? |  | 49.6d → 65.2d |  | constraint none → start no earlier than 2017-03-11 09:00; resources none → Nahiara |
| 332 | Comparar la planificación prevista y real en Project hito 3 | 2017-03-23 10:00 → 2017-03-11 11:00 (-12d) | 2017-03-24 12:00 → 2017-03-11 13:00 (-13d) | 1d? → 0.2d? |  | 49.6d → 65.2d | none → 331 | resources none → Nahiara |
| 333 | Confeccionar Informes de iteración e informe resumen de Hito 3 | 2017-03-23 10:00 → 2017-03-11 15:00 (-12d) | 2017-03-24 12:00 → 2017-03-11 16:00 (-13d) | 1d? → 1h? |  | 49.6d → 5d | none → 332 | resources none → Nahiara |
| 334 | **Iteracion 4** | 2017-04-06 17:00 → 2017-03-11 16:00 (-26d) | 2017-05-03 13:00 → 2017-03-25 13:00 (-39d) | 15d? → 8.7d? |  | 42.1d → 4.3d |  |  |
| 343 | Diseñar Página Seguimiento | 2017-03-23 10:00 → 2017-03-15 10:00 (-8d) | 2017-03-23 13:00 → 2017-03-15 12:00 (-8d) | 0.3d? → 2h? |  | 50.3d → 70.6d | none → 339 | constraint start no earlier than 2017-03-01 09:00 → none; resources none → Nahiara |
| 357 | **NM** | 2017-03-23 10:00 → 2017-03-13 18:00 (-10d) | 2017-04-03 16:00 → 2017-03-24 16:00 (-10d) | 6d? → 7d? |  | 44.6d → 5d |  |  |
| 358 | **Definición de cuadros de mando e implementación** | 2017-03-28 18:00 → 2017-03-13 18:00 (-15d) | 2017-03-31 12:00 → 2017-03-15 10:00 (-16d) | 2d? → 1d? |  | 45.6d → 5d |  |  |
| 359 | Definir cuadros de mando | 2017-03-28 18:00 → 2017-03-13 18:00 (-15d) | 2017-03-31 12:00 → 2017-03-15 10:00 (-16d) | 2d? → 1d? |  | 45.6d → 65.2d | 361 → 356 |  |
| 360 | **Definición de KPI's implementación** | 2017-03-23 10:00 → 2017-03-15 10:00 (-8d) | 2017-03-28 18:00 → 2017-03-16 12:00 (-12d) | 3d? → 1d? |  | 45.6d → 5d |  |  |
| 361 | Implementar KPI's | 2017-03-23 10:00 → 2017-03-15 10:00 (-8d) | 2017-03-28 18:00 → 2017-03-16 12:00 (-12d) | 3d? → 1d? |  | 45.6d → 65.2d | none → 359 |  |
| 362 | **Despliegue de la infraestructura del proyecto** | 2017-03-23 10:00 → 2017-03-16 12:00 (-7d) | 2017-04-03 16:00 → 2017-03-20 18:00 (-14d) | 6d? → 2d? |  | 44.6d → 5d |  |  |
| 363 | Desplegar infraestructura del proyecto | 2017-03-31 12:00 → 2017-03-16 12:00 (-15d) | 2017-04-03 16:00 → 2017-03-17 16:00 (-17d) |  |  | 44.6d → 65.2d | none → 361 |  |
| 364 | Implementar cuadros de mando | 2017-03-23 10:00 → 2017-03-17 16:00 (-6d) | 2017-03-24 12:00 → 2017-03-20 18:00 (-4d) |  |  | 49.6d → 65.2d | none → 363 | resources none → Jorge |
| 365 | **Definición de KPI's implementación** | 2017-03-23 10:00 → 2017-03-20 18:00 (-3d) | 2017-03-24 12:00 → 2017-03-22 10:00 (-2d) |  |  | 49.6d → 5d |  |  |
| 366 | Implementar KPI's | 2017-03-23 10:00 → 2017-03-20 18:00 (-3d) | 2017-03-24 12:00 → 2017-03-22 10:00 (-2d) |  |  | 49.6d → 65.2d | none → 364 | resources none → Jorge |
| 367 | **Valoración de los cuadros de mando** | 2017-04-06 17:00 → 2017-03-22 10:00 (-15d) | 2017-04-20 17:00 → 2017-03-23 12:00 (-28d) | 8d? → 1d? |  | 42.1d → 5d |  |  |
| 368 | Valorar los cuadros de mando | 2017-04-06 17:00 → 2017-03-22 10:00 (-15d) | 2017-04-20 17:00 → 2017-03-23 12:00 (-28d) | 8d? → 1d? |  | 42.1d → 65.2d | 364 → 366 |  |
| 369 | **Valoración KPI's definidos** | 2017-04-20 17:00 → 2017-03-23 12:00 (-28d) | 2017-05-03 13:00 → 2017-03-24 16:00 (-40d) | 7d? → 1d? |  | 42.1d → 5d |  |  |
| 370 | Valorar KPI's definidos | 2017-04-20 17:00 → 2017-03-23 12:00 (-28d) | 2017-05-03 13:00 → 2017-03-24 16:00 (-40d) | 7d? → 1d? |  | 42.1d → 65.2d |  |  |
| 371 | **TAG** | 2017-04-06 17:00 → 2017-03-13 10:00 (-24d) | 2017-04-07 18:00 → 2017-03-17 11:00 (-21d) | 0.9d? → 3.3d? |  | 56.2d → 9.3d |  |  |
| 372 | **Tipos de datos para entidades de tipo malla (7)** | 2017-04-06 17:00 → 2017-03-13 10:00 (-24d) | 2017-04-07 13:00 → 2017-03-14 10:00 (-24d) | 0.6d? → 0.8d? |  | 56.5d → 9.3d |  |  |
| 373 | Definir tipos de datos para entidades de tipo malla | 2017-04-06 17:00 → 2017-03-13 10:00 (-24d) | 2017-04-07 13:00 → 2017-03-13 18:00 (-25d) |  |  | 56.5d → 69.5d | none → 348 | resources none → Antonio; Manuel |
| 374 | Implementar salida en modo texto | 2017-04-06 17:00 → 2017-03-13 18:00 (-24d) | 2017-04-06 19:00 → 2017-03-14 10:00 (-23d) |  |  | 56.9d → 69.5d | none → 373 | resources none → Antonio; Manuel |
| 375 | **Tipos de datos para entidades de tipo animación (8)** | 2017-04-06 17:00 → 2017-03-14 10:00 (-23d) | 2017-04-07 10:00 → 2017-03-14 17:00 (-24d) | 0.3d? → 0.5d? |  | 56.8d → 9.3d |  |  |
| 376 | Definir tipos de datos para entidades de tipo animación (cuadro a cuadro) | 2017-04-06 17:00 → 2017-03-14 10:00 (-23d) | 2017-04-07 10:00 → 2017-03-14 13:00 (-24d) |  |  | 56.8d → 69.5d | none → 374 | resources none → Antonio; Manuel |
| 377 | Implementar salida en modo texto | 2017-04-06 17:00 → 2017-03-14 15:00 (-23d) | 2017-04-06 19:00 → 2017-03-14 17:00 (-23d) |  |  | 56.9d → 9.3d | none → 376 | resources none → Antonio; Manuel |
| 378 | **Gestor de recursos (9)** | 2017-04-06 17:00 → 2017-03-14 17:00 (-23d) | 2017-04-07 18:00 → 2017-03-17 11:00 (-21d) | 0.9d? → 2d? |  | 56.2d → 9.3d |  |  |
| 379 | Cargar modelos en formato múltiple en las entidades de tipo malla | 2017-04-06 17:00 → 2017-03-14 17:00 (-23d) | 2017-04-07 18:00 → 2017-03-15 18:00 (-23d) |  |  | 56.2d → 69.5d | none → 377 | resources none → Antonio; Manuel |
| 380 | Cargar varios ficheros para animación | 2017-04-06 17:00 → 2017-03-15 18:00 (-22d) | 2017-04-07 18:00 → 2017-03-16 19:00 (-22d) |  |  | 56.2d → 69.5d | none → 379 | resources none → Antonio; Manuel |
| 381 | Implementar salida en modo texto | 2017-04-06 17:00 → 2017-03-17 09:00 (-20d) | 2017-04-06 19:00 → 2017-03-17 11:00 (-20d) |  |  | 56.9d → 9.3d | none → 380 | resources none → Antonio; Manuel |
| 382 | **PM** | 2017-04-06 17:00 → 2017-03-25 09:00 (-12d) | 2017-04-07 19:00 → 2017-03-25 13:00 (-13d) | 1d? → 0.4d? |  | 56.1d → 4.3d |  |  |
| 383 | **Seguimiento** | 2017-04-06 17:00 → 2017-03-25 09:00 (-12d) | 2017-04-07 19:00 → 2017-03-25 13:00 (-13d) | 1d? → 0.4d? |  | 56.1d → 4.3d |  |  |
| 384 | Registrar de tiempos y % de realización de tareas en Project | 2017-04-06 17:00 → 2017-03-25 09:00 (-12d) | 2017-04-07 19:00 → 2017-03-25 11:00 (-13d) | 1d? → 2h? |  | 56.1d → 4.3d |  | constraint none → start no earlier than 2017-03-25 09:00; resources none → Nahiara |
| 385 | Comparar la planificación prevista y real en Project hito 3 | 2017-04-06 17:00 → 2017-03-25 11:00 (-12d) | 2017-04-07 19:00 → 2017-03-25 12:00 (-13d) | 1d? → 1h? |  | 56.1d → 4.3d | none → 384 | resources none → Nahiara |
| 386 | Confeccionar Informes de iteración e informe resumen de Hito 3 | 2017-04-06 17:00 → 2017-03-25 12:00 (-12d) | 2017-04-07 19:00 → 2017-03-25 13:00 (-13d) | 1d? → 1h? |  | 56.1d → 4.3d | none → 385 | resources none → Nahiara |
| 387 | **Iteracion 5** | 2017-05-03 13:00 → 2017-03-25 15:00 (-39d) | 2017-07-20 11:00 → 2017-04-05 19:00 (-106d) | 44.6d? → 6.8d? |  |  |  |  |
| 388 | **PM** | 2017-05-03 13:00 → 2017-04-05 19:00 (-28d) | 2017-05-03 13:00 → 2017-04-05 19:00 (-28d) |  |  | 44.6d → 0d |  |  |
| 389 | **Seguimiento** | 2017-05-03 13:00 → 2017-04-05 19:00 (-28d) | 2017-05-03 13:00 → 2017-04-05 19:00 (-28d) |  |  | 44.6d → 0d |  |  |
| 390 | Registrar de tiempos y % de realización de tareas en Project | 2017-05-03 13:00 → 2017-04-05 19:00 (-28d) | 2017-05-03 13:00 → 2017-04-05 19:00 (-28d) |  |  | 44.6d → 0d |  | constraint start no earlier than 2017-02-13 09:00 → finish no earlier than 2017-04-05 19:00 |
| 391 | Comparar la planificación prevista y real en Project hito 3 | 2017-05-03 13:00 → 2017-04-05 19:00 (-28d) | 2017-05-03 13:00 → 2017-04-05 19:00 (-28d) |  |  | 44.6d → 0d |  | constraint start no earlier than 2017-02-13 09:00 → finish no earlier than 2017-04-05 19:00 |
| 392 | Confeccionar Informes de iteración e informe resumen de Hito 3 | 2017-05-03 13:00 → 2017-04-05 19:00 (-28d) | 2017-05-03 13:00 → 2017-04-05 19:00 (-28d) |  |  | 44.6d → 0d |  | constraint start no earlier than 2017-02-13 09:00 → finish no earlier than 2017-04-05 19:00 |
| 393 | **Presentación** | 2017-05-03 13:00 → 2017-04-05 19:00 (-28d) | 2017-05-03 13:00 → 2017-04-05 19:00 (-28d) |  |  | 44.6d → 0d |  |  |

| ID | Task | Start | Finish | Duration | Total float | Predecessors | Other |
| --- | --- | --- | --- | --- | --- | --- | --- |
| 394 | Elaborar la presentación del Hito 3 | 2017-05-03 13:00 → 2017-04-05 19:00 (-28d) | 2017-05-03 13:00 → 2017-04-05 19:00 (-28d) |  | 44.6d → 0d |  | constraint start no earlier than 2017-02-13 09:00 → finish no earlier than 2017-04-05 19:00 |
| 395 | **SMA** | 2017-05-03 15:00 → 2017-04-04 17:00 (-29d) | 2017-05-04 17:00 → 2017-04-05 19:00 (-29d) |  | 43.6d → 0d |  |  |
| 396 | **Implementación front-end** | 2017-05-03 15:00 → 2017-04-04 17:00 (-29d) | 2017-05-04 17:00 → 2017-04-05 19:00 (-29d) |  | 43.6d → 0d |  |  |
| 397 | Implementar funcionalidades de front-end | 2017-05-03 15:00 → 2017-04-04 17:00 (-29d) | 2017-05-04 17:00 → 2017-04-05 19:00 (-29d) |  | 43.6d → 0d |  | constraint none → finish no earlier than 2017-04-05 19:00 |
| 398 | **Documentación front-end** | 2017-05-03 15:00 → 2017-04-04 17:00 (-29d) | 2017-05-04 17:00 → 2017-04-05 19:00 (-29d) |  | 43.6d → 0d |  |  |
| 399 | Hacer documentación de esctructura de código y particularidades especiales | 2017-05-03 15:00 → 2017-04-04 17:00 (-29d) | 2017-05-04 17:00 → 2017-04-05 19:00 (-29d) |  | 43.6d → 0d |  | constraint none → finish no earlier than 2017-04-05 19:00 |
| 400 | **NM** | 2017-07-19 09:00 → 2017-04-04 17:00 (-106d) | 2017-07-20 11:00 → 2017-04-05 19:00 (-106d) |  |  |  |  |
| 401 | **Incorporación de nuevos elementos según datos** | 2017-07-19 09:00 → 2017-04-04 17:00 (-106d) | 2017-07-20 11:00 → 2017-04-05 19:00 (-106d) |  |  |  |  |
| 402 | Incorporar nuevos elementos según datos | 2017-07-19 09:00 → 2017-04-04 17:00 (-106d) | 2017-07-20 11:00 → 2017-04-05 19:00 (-106d) |  |  |  | constraint start no earlier than 2017-07-19 09:00 → finish no earlier than 2017-04-05 19:00 |
| 403 | **ELE** | 2017-05-03 15:00 → 2017-03-25 15:00 (-39d) | 2017-05-04 17:00 → 2017-03-27 19:00 (-38d) | 1d? → 1.2d? | 43.6d → 5.6d |  |  |
| 404 | **Tarea 2** | 2017-03-23 10:00 → 2017-03-25 15:00 (+2d) | 2017-03-23 12:00 → 2017-03-25 17:00 (+2d) | 0.2d → 0.2d? | 50.2d → 6.6d |  |  |
| 405 | Hacer guión gráfico | 2017-03-23 10:00 → 2017-03-25 15:00 (+2d) | 2017-03-23 12:00 → 2017-03-25 17:00 (+2d) | 2h → 2h? | 50.2d → 6.6d | 270 → none |  |
| 406 | **Tarea 3** | 2017-03-23 12:00 → 2017-03-25 15:00 (+2d) | 2017-03-23 16:00 → 2017-03-25 17:00 (+2d) |  | 50.2d → 5.6d |  |  |
| 407 | Definir tecnologias | 2017-03-23 12:00 → 2017-03-25 15:00 (+2d) | 2017-03-23 16:00 → 2017-03-25 17:00 (+2d) |  | 50.2d → 5.6d | 405 → none |  |
| 408 | **Tarea 4** | 2017-05-03 15:00 → 2017-03-25 17:00 (-39d) | 2017-05-04 17:00 → 2017-03-27 19:00 (-38d) |  | 43.6d → 5.6d |  |  |
| 409 | Crear video | 2017-05-03 15:00 → 2017-03-25 17:00 (-39d) | 2017-05-04 17:00 → 2017-03-27 19:00 (-38d) |  | 43.6d → 65.8d |  |  |
| 410 | **TAG** | 2017-05-03 15:00 → 2017-03-31 18:00 (-33d) | 2017-05-08 16:00 → 2017-04-05 19:00 (-33d) |  | 42.1d → 0d |  |  |
| 411 | **Visualización (10,11)** | 2017-05-03 15:00 → 2017-04-03 15:00 (-30d) | 2017-05-05 19:00 → 2017-04-05 19:00 (-30d) |  | 42.6d → 0d |  |  |
| 412 | Realizar visualizador OpenGL 4.X de las entidades tipo malla. Shader básico. Integración con el motor. Sin materiales, texturas, cámara ni luces | 2017-05-03 15:00 → 2017-04-04 17:00 (-29d) | 2017-05-04 17:00 → 2017-04-05 19:00 (-29d) |  | 43.6d → 0d |  | constraint none → finish no earlier than 2017-04-05 19:00 |
| 413 | Realizar visualizador OpenGL 4.X de las entidades tipo malla. Shader básico. Con cámaras y luces de varios tipos. Visualización con registro de cámaras y luces. | 2017-05-03 15:00 → 2017-04-03 15:00 (-30d) | 2017-05-05 19:00 → 2017-04-05 19:00 (-30d) |  | 42.6d → 0d |  | constraint none → finish no earlier than 2017-04-05 19:00 |
| 414 | **Gestor de recursos (12)** | 2017-05-03 15:00 → 2017-04-03 15:00 (-30d) | 2017-05-05 19:00 → 2017-04-05 19:00 (-30d) |  | 42.6d → 0d |  |  |
| 415 | Cargar materiales y texturas. Salida en modo texto | 2017-05-03 15:00 → 2017-04-03 15:00 (-30d) | 2017-05-05 19:00 → 2017-04-05 19:00 (-30d) |  | 42.6d → 0d |  | constraint none → finish no earlier than 2017-04-05 19:00 |
| 416 | **Visualización (13)** | 2017-05-03 15:00 → 2017-04-03 15:00 (-30d) | 2017-05-05 19:00 → 2017-04-05 19:00 (-30d) |  | 42.6d → 0d |  |  |
| 417 | Realizar visualizador OpenGL 4.X de las entidades tipo malla. Shader básico. Añadiendo materiales y texturas. | 2017-05-03 15:00 → 2017-04-03 15:00 (-30d) | 2017-05-05 19:00 → 2017-04-05 19:00 (-30d) |  | 42.6d → 0d |  | constraint none → finish no earlier than 2017-04-05 19:00 |
| 418 | **Fachada (14)** | 2017-05-03 15:00 → 2017-03-31 18:00 (-33d) | 2017-05-08 16:00 → 2017-04-05 19:00 (-33d) |  | 42.1d → 0d |  |  |
| 419 | Crear fachada entre el motor y la aplicación | 2017-05-03 15:00 → 2017-03-31 18:00 (-33d) | 2017-05-08 16:00 → 2017-04-05 19:00 (-33d) |  | 42.1d → 0d |  | constraint none → finish no earlier than 2017-04-05 19:00 |
| 420 | **HITO 4** | 2017-07-20 11:00 → 2017-04-06 09:00 (-105d) | 2017-09-11 11:00 → 2017-05-26 19:00 (-108d) |  |  |  |  |
| 421 | **PM** | 2017-07-20 11:00 → 2017-04-06 09:00 (-105d) | 2017-09-11 11:00 → 2017-05-26 19:00 (-108d) |  |  |  |  |
| 422 | **Planificación** | 2017-07-20 11:00 → 2017-04-06 09:00 (-105d) | 2017-09-11 11:00 → 2017-05-26 19:00 (-108d) |  |  |  |  |
| 423 | **Detallar plan iteraciones del mes de Abril-Mayo** | 2017-07-20 11:00 → 2017-04-06 09:00 (-105d) | 2017-09-11 11:00 → 2017-05-26 19:00 (-108d) |  |  |  |  |
| 424 | Creación Subtareas y precedencias en Project | 2017-07-20 11:00 → 2017-04-06 09:00 (-105d) | 2017-09-11 11:00 → 2017-05-26 19:00 (-108d) |  |  |  |  |
| 425 | Asignar recursos a las tareas en Project | 2017-07-20 11:00 → 2017-04-06 09:00 (-105d) | 2017-09-11 11:00 → 2017-05-26 19:00 (-108d) |  |  |  |  |
| 426 | **Seguimiento** | 2017-07-20 11:00 → 2017-04-06 09:00 (-105d) | 2017-09-11 11:00 → 2017-05-26 19:00 (-108d) |  |  |  |  |
| 427 | Registrar de tiempos y % de realización de tareas en Project | 2017-07-20 11:00 → 2017-04-06 09:00 (-105d) | 2017-09-11 11:00 → 2017-05-26 19:00 (-108d) |  |  |  |  |
| 428 | Comparar la planificación prevista y real en Project hito 4 | 2017-07-20 11:00 → 2017-04-06 09:00 (-105d) | 2017-09-11 11:00 → 2017-05-26 19:00 (-108d) |  |  |  |  |
| 429 | Confeccionar Informes de iteración e informe resumen de Hito 4 | 2017-07-20 11:00 → 2017-04-06 09:00 (-105d) | 2017-09-11 11:00 → 2017-05-26 19:00 (-108d) |  |  |  |  |
| 430 | **Presentación** | 2017-07-20 11:00 → 2017-04-06 09:00 (-105d) | 2017-09-11 11:00 → 2017-05-26 19:00 (-108d) |  |  |  |  |
| 431 | Elaborar la presentación del Hito 4 | 2017-07-20 11:00 → 2017-04-06 09:00 (-105d) | 2017-09-11 11:00 → 2017-05-26 19:00 (-108d) |  |  |  |  |
| 432 | Exponer la presentación del Hito 4 | 2017-07-20 11:00 → 2017-04-06 09:00 (-105d) | 2017-09-11 11:00 → 2017-05-26 19:00 (-108d) |  |  |  |  |
| 433 | **TAG** | 2017-07-20 11:00 → 2017-04-06 09:00 (-105d) | 2017-09-11 11:00 → 2017-05-26 19:00 (-108d) |  |  |  |  |
| 434 | **IGC** | 2017-07-20 11:00 → 2017-04-06 09:00 (-105d) | 2017-09-11 11:00 → 2017-05-26 19:00 (-108d) |  |  |  |  |
| 435 | **Aplicación** | 2017-07-20 11:00 → 2017-04-06 09:00 (-105d) | 2017-09-11 11:00 → 2017-05-26 19:00 (-108d) |  |  |  |  |
| 436 | Cargador de modelos | 2017-07-20 11:00 → 2017-04-06 09:00 (-105d) | 2017-09-11 11:00 → 2017-05-26 19:00 (-108d) |  |  |  |  |
| 437 | Movimiento del modelo, de las luces y de la cámara | 2017-07-20 11:00 → 2017-04-06 09:00 (-105d) | 2017-09-11 11:00 → 2017-05-26 19:00 (-108d) |  |  |  |  |
| 438 | Cambio de modelo, materiales y texturas | 2017-07-20 11:00 → 2017-04-06 09:00 (-105d) | 2017-09-11 11:00 → 2017-05-26 19:00 (-108d) |  |  |  |  |
| 439 | Animaciones | 2017-07-20 11:00 → 2017-04-06 09:00 (-105d) | 2017-09-11 11:00 → 2017-05-26 19:00 (-108d) |  |  |  |  |
| 440 | Integración con el motor | 2017-07-20 11:00 → 2017-04-06 09:00 (-105d) | 2017-09-11 11:00 → 2017-05-26 19:00 (-108d) |  |  |  |  |
| 441 | Optimizaciones del motor | 2017-07-20 11:00 → 2017-04-06 09:00 (-105d) | 2017-09-11 11:00 → 2017-05-26 19:00 (-108d) |  |  |  |  |
| 442 | Efectos visuales | 2017-07-20 11:00 → 2017-04-06 09:00 (-105d) | 2017-09-11 11:00 → 2017-05-26 19:00 (-108d) |  |  |  |  |
| 443 | **SMA** | 2017-07-20 11:00 → 2017-04-06 09:00 (-105d) | 2017-09-11 11:00 → 2017-05-26 19:00 (-108d) |  |  |  |  |
| 444 | Documento de pruebas donde se documenta las pruebas de las funcionalidades principales (por lo menos las interfaces principales) | 2017-07-20 11:00 → 2017-04-06 09:00 (-105d) | 2017-09-11 11:00 → 2017-05-26 19:00 (-108d) |  |  |  |  |
| 445 | Pruebas de la aplicación demostrando que no hay errores (falta de librerías, archivos que no se descargan, errores javascript) | 2017-07-20 11:00 → 2017-04-06 09:00 (-105d) | 2017-09-11 11:00 → 2017-05-26 19:00 (-108d) |  |  |  |  |
| 446 | Pruebas de seguridad de front end | 2017-07-20 11:00 → 2017-04-06 09:00 (-105d) | 2017-09-11 11:00 → 2017-05-26 19:00 (-108d) |  |  |  |  |
| 447 | Pruebas de rendimiento (velocidad de carga, que todo carga y no hay errores) | 2017-07-20 11:00 → 2017-04-06 09:00 (-105d) | 2017-09-11 11:00 → 2017-05-26 19:00 (-108d) |  |  |  |  |
| 448 | Validar las funcionalidades (comprobar que realmente han sido implementadas), las funcionalidades han quedado recogidas en las interfaces implementadas | 2017-07-20 11:00 → 2017-04-06 09:00 (-105d) | 2017-09-11 11:00 → 2017-05-26 19:00 (-108d) |  |  |  |  |
| 449 | Informe | 2017-07-20 11:00 → 2017-04-06 09:00 (-105d) | 2017-09-11 11:00 → 2017-05-26 19:00 (-108d) |  |  |  |  |
| 450 | **NM** | 2017-07-20 11:00 → 2017-04-06 09:00 (-105d) | 2017-09-11 11:00 → 2017-05-26 19:00 (-108d) |  |  |  |  |
| 451 | Validación del funcionamiento | 2017-07-20 11:00 → 2017-04-06 09:00 (-105d) | 2017-09-11 11:00 → 2017-05-26 19:00 (-108d) |  |  |  |  |
| 452 | Informe | 2017-07-20 11:00 → 2017-04-06 09:00 (-105d) | 2017-09-11 11:00 → 2017-05-26 19:00 (-108d) |  |  |  |  |
| 453 | **ELE** | 2017-07-20 11:00 → 2017-04-06 09:00 (-105d) | 2017-07-21 13:00 → 2017-04-07 11:00 (-105d) |  |  |  |  |
| 454 | **Tarea 5** | 2017-07-20 11:00 → 2017-04-06 09:00 (-105d) | 2017-07-21 13:00 → 2017-04-07 11:00 (-105d) |  |  |  |  |
| 455 | Grabar audio | 2017-07-20 11:00 → 2017-04-06 09:00 (-105d) | 2017-07-21 13:00 → 2017-04-07 11:00 (-105d) |  |  |  |  |
| 456 | **Tarea 6** | 2017-07-20 11:00 → 2017-04-06 09:00 (-105d) | 2017-07-21 13:00 → 2017-04-07 11:00 (-105d) |  |  |  |  |
| 457 | Hacer montaje | 2017-07-20 11:00 → 2017-04-06 09:00 (-105d) | 2017-07-21 13:00 → 2017-04-07 11:00 (-105d) |  |  |  |  |

## Version 11 (saved 2017-03-15)

Note of the change: Projects

Last finish stays 2017-05-26. Complete tasks 172 → 177.

Changed:

| ID | Task | Start | Finish | Duration | Complete | Total float | Other |
| --- | --- | --- | --- | --- | --- | --- | --- |
| 190 | **HITO 3** |  |  |  | 41% → 44% |  |  |
| 229 | **Iteración 2** |  | 2017-02-25 11:00 A → 2017-02-25 11:00 |  | 100% → 97% | none → 0d |  |
| 271 | **TAG** |  | 2017-02-23 18:00 A → 2017-02-23 18:00 |  | 100% → 93% | none → 0d |  |
| 274 | **Optimizaciones del motor (17)** |  | 2017-02-20 10:00 A → 2017-02-20 10:00 |  | 100% → 75% | none → 0d |  |
| 275 | Optimizar motor |  | 2017-02-20 10:00 A → 2017-02-20 10:00 |  | 100% → 75% | none → 0d |  |
| 285 | **Iteracion 3** |  |  |  | 47% → 66% | 5d → 0d |  |
| 287 | **Planificación** |  |  |  | 0% → 100% | 13.1d → 0d |  |
| 288 | **Detallar plan iteración** |  |  |  | 0% → 100% | 13.1d → 0d |  |
| 289 | Crear Subtareas y precedencias en Project | 2017-02-27 09:00 A | 2017-02-27 11:00 A |  | 0% → 100% | 64.5d → none |  |
| 290 | Asignar recursos a las tareas en Project. | 2017-02-27 11:00 A | 2017-02-27 13:00 A |  | 0% → 100% | 64.5d → none |  |
| 319 | **TAG** | 2017-02-28 11:00 A | 2017-03-03 17:00 → 2017-03-06 11:00 (+3d) | 2.8d? → 3.2d? | 0% → 79% | 9.7d → 0d |  |
| 320 | **Árbol de la escena** | 2017-02-28 11:00 A | 2017-03-03 17:00 → 2017-03-06 11:00 (+3d) | 2.8d? → 3.2d? | 0% → 79% | 9.7d → 0d |  |
| 321 | **Tipos de datos para entidades de tipo transformación (5)** | 2017-02-28 11:00 A | 2017-03-02 17:00 A |  | 0% → 100% | 9.7d → none |  |
| 322 | Definir tipos de datos para entidades de tipo transformación (traslación, rotación y escalado relativos y absolutos. Otras transformaciones) | 2017-02-28 11:00 A | 2017-03-02 17:00 A |  | 0% → 100% | 69.9d → none |  |
| 323 | **Tipos de datos para entidades de tipo malla (7)** | 2017-03-03 11:00 A | 2017-03-03 17:00 → 2017-03-06 11:00 (+3d) | 0.4d? → 0.8d? | 0% → 25% | 9.7d → 0d |  |
| 324 | Definir tipos de datos para entidades de tipo malla | 2017-03-03 11:00 A | 2017-03-03 13:00 → 2017-03-06 10:00 (+3d) | 2h? → 7h? | 0% → 25% | 69.9d → 0d |  |
| 325 | Implementar salida en modo texto | 2017-03-03 15:00 → 2017-03-06 10:00 A (+3d) | 2017-03-03 17:00 → 2017-03-06 11:00 (+3d) | 0.2d? → 1h? | 0% → 25% | 9.7d → 0d |  |
| 326 | **PM** | 2017-03-11 09:00 → 2017-03-02 17:00 (-9d) |  | 0.5d? → 5.5d? |  | 5d → 0d |  |
| 327 | **Seguimiento** | 2017-03-11 09:00 → 2017-03-02 17:00 (-9d) |  | 0.5d? → 5.5d? |  | 5d → 0d |  |
| 328 | Registrar de tiempos y % de realización de tareas en Project | 2017-03-11 09:00 A | 2017-03-11 11:00 A |  | 0% → 100% | 65.2d → none |  |
| 329 | Comparar la planificación prevista y real en Project hito 3 | 2017-03-11 11:00 A | 2017-03-11 13:00 A |  | 0% → 100% | 65.2d → none |  |
| 330 | Confeccionar Informes de iteración e informe resumen de Hito 3 | 2017-03-11 15:00 A | 2017-03-11 16:00 A |  | 0% → 100% | 5d → none |  |
| 373 | Definir tipos de datos para entidades de tipo malla | 2017-03-13 10:00 A | 2017-03-13 18:00 → 2017-03-13 19:00 | 6h? → 7h? | 0% → 21% | 69.5d → 0d | resources Antonio; Manuel → Antonio |
| 374 | Implementar salida en modo texto |  | 2017-03-14 10:00 → 2017-03-13 19:00 (-1d) | 2h? → 1h? |  | 69.5d → 0d | resources Antonio; Manuel → Antonio |
| 378 | **Gestor de recursos (9) poner en iteracion 3** |  |  |  |  | 9.3d → 0d | was named Gestor de recursos (9) |
| 379 | Cargar modelos en formato múltiple en las entidades de tipo malla (hecha) |  |  |  |  | 69.5d → 0d | was named Cargar modelos en formato múltiple en las entidades de tipo malla; resources Antonio; Manuel → Antonio |

## Version 12 (saved 2017-03-18)

Note of the change: Merge branch 'master' of https://github.com/ABPMultimediaUA/SandApp

Last finish stays 2017-05-26. Complete tasks 177 → 178.

Added:

| ID | Task | Duration | Start | Finish | Predecessors | Constraint | Resources |
| --- | --- | --- | --- | --- | --- | --- | --- |
| 240 | Escribir informe de seguimiento | 1h? | 2017-02-13 15:00 | 2017-02-13 16:00 | 234 |  | Nahiara |
| 316 | Informe | 1h? | 2017-03-08 09:00 A | 2017-03-08 10:00 A |  | start no earlier than 2017-03-08 09:00 | Nahiara |

Changed:

| ID | Task | Predecessors | Other |
| --- | --- | --- | --- |
| 305 | Diseñar Pagina Subir Materiales |  | was named Diseñar Pagina Subir Material |
| 314 | Integrar Página Panel de Alumno |  | was named Integrar Página Alumno |
| 330 | Registrar de tiempos y % de realización de tareas en Project | none → 316 |  |
